# PLAN_AT_CC_v1_FECHAS

Schedule from MS Project, 2018-05-29 to 2018-09-13.

## Calendars

- Estándar: Mon-Fri 09:00-13:00, 15:00-19:00; Sat 09:00-21:00; Sun off.

## Schedule

| ID | WBS | Task | Duration | Start | Finish | Predecessors | Total slack | Free slack | Constraint | Work |
| --- | --- | --- | --- | --- | --- | --- | --- | --- | --- | --- |
| 1 | 1 | **001-ITSC_TMS Plan de Analisis y Desarrollo** | 100d? | 2018-05-29 | 2018-09-13 |  | 0d |  |  | 672h |
| 2 | 1.1 | Inicio de Actividades | 1d? | 2018-06-01 | 2018-06-01 |  | 0d |  | start no earlier than 2018-06-01 |  |
| 3 | 1.2 | **Modulo Catalogos Maestros** | 43d? | 2018-06-02 | 2018-07-18 |  | 0d |  |  | 279h |
| 4 | 1.2.1 | **AT Analisis de Tecnico** | 21d? | 2018-06-02 | 2018-06-23 |  | 0d |  |  | 148h |
| 5 | 1.2.1.1 | **IAT - Revisión de documentación entregada por Negocio** | 2d | 2018-06-02 | 2018-06-04 |  | 0d |  |  | 19h |
| 6 | 1.2.1.1.1 | AT - Requerimientos de Negocio (Junta de Entendimiento) | 1d | 2018-06-02 | 2018-06-02 | 2 | 0d |  |  | 6h |
| 7 | 1.2.1.1.2 | AT - Casos de Uso (Junta de Entendimiento) | 1d | 2018-06-02 | 2018-06-04 | 6 | 0d |  |  | 13h |
| 8 | 1.2.1.2 | **AT - Elaboracion de propuesta de Arquitectura de Solucion** | 3d | 2018-06-04 | 2018-06-07 |  | 0d |  |  | 26h |
| 9 | 1.2.1.2.1 | AT - Requerimientos tecnicos | 1d | 2018-06-04 | 2018-06-05 | 7 | 93d |  |  | 4h |
| 10 | 1.2.1.2.2 | AT - Analisis tecnico | 1d | 2018-06-04 | 2018-06-05 | 7 | 0d |  |  | 4h |
| 11 | 1.2.1.2.3 | AT - Requerimientos de solucion | 1d | 2018-06-05 | 2018-06-06 | 10 | 92d |  |  | 4h |
| 12 | 1.2.1.2.4 | AT - Escalabilidad | 1d | 2018-06-05 | 2018-06-06 | 10 | 0d |  |  | 4h |
| 13 | 1.2.1.2.5 | AT - Modelado BD | 1d | 2018-06-06 | 2018-06-07 | 12 | 91d |  |  | 4h |
| 14 | 1.2.1.2.6 | AT - Herramientas para solucion | 1d | 2018-06-06 | 2018-06-07 | 12 | 91d |  |  | 3h |
| 15 | 1.2.1.2.7 | AT - Aplicación responsiva para navegadores web | 1d | 2018-06-06 | 2018-06-07 | 12 | 91d |  |  | 3h |
| 16 | 1.2.1.3 | AT - Peer Review y Vo Bo Arquitectura de Solucion | 1d | 2018-06-06 | 2018-06-07 | 12 | 0d |  |  | 1h |
| 17 | 1.2.1.4 | **AT - Elaboración de documentos AT** | 14d | 2018-06-07 | 2018-06-22 |  | 0d |  |  | 90h |
| 18 | 1.2.1.4.1 | **AT - Modulo Catalogos Maestros** | 14d | 2018-06-07 | 2018-06-22 |  | 0d |  |  | 90h |
| 19 | 1.2.1.4.1.1 | **AT - Catalogo Rol** | 2d | 2018-06-07 | 2018-06-09 |  | 0d |  |  | 6h |
| 20 | 1.2.1.4.1.1.1 | AT - Elaboración Bocetos de Archivos | 1d | 2018-06-07 | 2018-06-08 | 16 | 0d |  |  | 2h |
| 21 | 1.2.1.4.1.1.2 | AT - Elaboración Bocetos de Pantallas | 1d | 2018-06-08 | 2018-06-09 | 20 | 0d |  |  | 4h |
| 22 | 1.2.1.4.1.2 | **AT - Catalogo Actores** | 2d | 2018-06-07 | 2018-06-09 |  | 87d |  |  | 6h |
| 23 | 1.2.1.4.1.2.1 | AT - Elaboración Bocetos de Archivos | 1d | 2018-06-07 | 2018-06-08 | 16 | 87d | 0d |  | 2h |
| 24 | 1.2.1.4.1.2.2 | AT - Elaboración Bocetos de Pantallas | 1d | 2018-06-08 | 2018-06-09 | 23 | 87d | 0d |  | 4h |

| ID | WBS | Task | Duration | Start | Finish | Predecessors | Total slack | Free slack | Work |
| --- | --- | --- | --- | --- | --- | --- | --- | --- | --- |
| 25 | 1.2.1.4.1.3 | **AT - Catalogo Actores-Roles** | 2d | 2018-06-09 | 2018-06-11 |  | 87d |  | 6h |
| 26 | 1.2.1.4.1.3.1 | AT - Elaboración Bocetos de Archivos | 1d | 2018-06-09 | 2018-06-09 | 21 | 87d | 0d | 2h |
| 27 | 1.2.1.4.1.3.2 | AT - Elaboración Bocetos de Pantallas | 1d | 2018-06-11 | 2018-06-11 | 26 | 87d |  | 4h |
| 28 | 1.2.1.4.1.4 | **AT - Catalogo Contratos** | 2d | 2018-06-09 | 2018-06-11 |  | 87d |  | 6h |
| 29 | 1.2.1.4.1.4.1 | AT - Elaboración Bocetos de Archivos | 1d | 2018-06-09 | 2018-06-09 | 24 | 87d | 0d | 2h |
| 30 | 1.2.1.4.1.4.2 | AT - Elaboración Bocetos de Pantallas | 1d | 2018-06-11 | 2018-06-11 | 29 | 87d |  | 4h |
| 31 | 1.2.1.4.1.5 | **AT - Catalogo Tipos de Tarifa** | 2d | 2018-06-09 | 2018-06-11 |  | 0d |  | 6h |
| 32 | 1.2.1.4.1.5.1 | AT - Elaboración Bocetos de Archivos | 1d | 2018-06-09 | 2018-06-09 | 21 | 0d |  | 2h |
| 33 | 1.2.1.4.1.5.2 | AT - Elaboración Bocetos de Pantallas | 1d | 2018-06-11 | 2018-06-11 | 32 | 0d |  | 4h |
| 34 | 1.2.1.4.1.6 | **AT - Catalogo Tarifa** | 2d | 2018-06-09 | 2018-06-11 |  | 79d |  | 6h |
| 35 | 1.2.1.4.1.6.1 | AT - Elaboración Bocetos de Archivos | 1d | 2018-06-09 | 2018-06-09 | 21 | 79d | 0d | 2h |
| 36 | 1.2.1.4.1.6.2 | AT - Elaboración Bocetos de Pantallas | 1d | 2018-06-11 | 2018-06-11 | 35 | 79d | 0d | 4h |
| 37 | 1.2.1.4.1.7 | **AT - Catalogo Conceptos de Tarifa** | 2d | 2018-06-12 | 2018-06-13 |  | 0d |  | 6h |
| 38 | 1.2.1.4.1.7.1 | AT - Elaboración Bocetos de Archivos | 1d | 2018-06-12 | 2018-06-12 | 33 | 0d |  | 2h |
| 39 | 1.2.1.4.1.7.2 | AT - Elaboración Bocetos de Pantallas | 1d | 2018-06-13 | 2018-06-13 | 38 | 0d |  | 4h |
| 40 | 1.2.1.4.1.8 | **AT - Catalogo Choferes** | 2d | 2018-06-12 | 2018-06-13 |  | 79d |  | 6h |
| 41 | 1.2.1.4.1.8.1 | AT - Elaboración Bocetos de Archivos | 1d | 2018-06-12 | 2018-06-12 | 36 | 79d | 0d | 2h |
| 42 | 1.2.1.4.1.8.2 | AT - Elaboración Bocetos de Pantallas | 1d | 2018-06-13 | 2018-06-13 | 41 | 79d | 0d | 4h |
| 43 | 1.2.1.4.1.9 | **AT - Catalogo Camiones** | 2d | 2018-06-14 | 2018-06-15 |  | 0d |  | 6h |
| 44 | 1.2.1.4.1.9.1 | AT - Elaboración Bocetos de Archivos | 1d | 2018-06-14 | 2018-06-14 | 39 | 0d |  | 2h |
| 45 | 1.2.1.4.1.9.2 | AT - Elaboración Bocetos de Pantallas | 1d | 2018-06-15 | 2018-06-15 | 44 | 0d |  | 4h |
| 46 | 1.2.1.4.1.10 | **AT - Catalogo Responsables de Incidencias** | 2d | 2018-06-14 | 2018-06-15 |  | 79d |  | 6h |
| 47 | 1.2.1.4.1.10.1 | AT - Elaboración Bocetos de Archivos | 1d | 2018-06-14 | 2018-06-14 | 42 | 79d | 0d | 2h |
| 48 | 1.2.1.4.1.10.2 | AT - Elaboración Bocetos de Pantallas | 1d | 2018-06-15 | 2018-06-15 | 47 | 79d | 0d | 4h |

| ID | WBS | Task | Duration | Start | Finish | Predecessors | Total slack | Free slack | Work |
| --- | --- | --- | --- | --- | --- | --- | --- | --- | --- |
| 49 | 1.2.1.4.1.11 | **AT - Catalogo Tipos de Incidencias** | 2d | 2018-06-16 | 2018-06-18 |  | 0d |  | 6h |
| 50 | 1.2.1.4.1.11.1 | AT - Elaboración Bocetos de Archivos | 1d | 2018-06-16 | 2018-06-16 | 45 | 0d |  | 2h |
| 51 | 1.2.1.4.1.11.2 | AT - Elaboración Bocetos de Pantallas | 1d | 2018-06-16 | 2018-06-18 | 50 | 0d |  | 4h |
| 52 | 1.2.1.4.1.12 | **AT - Catalogo Tipos de Viaje** | 2d | 2018-06-16 | 2018-06-18 |  | 79d |  | 6h |
| 53 | 1.2.1.4.1.12.1 | AT - Elaboración Bocetos de Archivos | 1d | 2018-06-16 | 2018-06-16 | 48 | 79d | 0d | 2h |
| 54 | 1.2.1.4.1.12.2 | AT - Elaboración Bocetos de Pantallas | 1d | 2018-06-16 | 2018-06-18 | 53 | 79d | 0d | 4h |
| 55 | 1.2.1.4.1.13 | **AT - Catalogo Tipos de Carga/Descarga** | 2d | 2018-06-18 | 2018-06-20 |  | 0d |  | 6h |
| 56 | 1.2.1.4.1.13.1 | AT - Elaboración Bocetos de Archivos | 1d | 2018-06-18 | 2018-06-19 | 51 | 0d |  | 2h |
| 57 | 1.2.1.4.1.13.2 | AT - Elaboración Bocetos de Pantallas | 1d | 2018-06-19 | 2018-06-20 | 56 | 0d |  | 4h |
| 58 | 1.2.1.4.1.14 | **AT - Catalogo Clientes de Entrega** | 2d | 2018-06-18 | 2018-06-20 |  | 79d |  | 6h |
| 59 | 1.2.1.4.1.14.1 | AT - Elaboración Bocetos de Archivos | 1d | 2018-06-18 | 2018-06-19 | 54 | 79d | 0d | 2h |
| 60 | 1.2.1.4.1.14.2 | AT - Elaboración Bocetos de Pantallas | 1d | 2018-06-19 | 2018-06-20 | 59 | 79d |  | 4h |
| 61 | 1.2.1.4.1.15 | **AT - Catalogo Clientes Solicidates** | 2d | 2018-06-20 | 2018-06-22 |  | 0d |  | 6h |
| 62 | 1.2.1.4.1.15.1 | AT - Elaboración Bocetos de Archivos | 1d | 2018-06-20 | 2018-06-21 | 57 | 0d |  | 2h |
| 63 | 1.2.1.4.1.15.2 | AT - Elaboración Bocetos de Pantallas | 1d | 2018-06-21 | 2018-06-22 | 62 | 0d |  | 4h |
| 64 | 1.2.1.5 | AT - Revisión con el usuario | 1d? | 2018-06-22 | 2018-06-23 | 63 | 76d |  | 4h |
| 65 | 1.2.1.6 | AT - Ajustes de comentarios del usuario | 1d? | 2018-06-22 | 2018-06-23 | 63 | 75d | 0d | 6h |
| 66 | 1.2.1.7 | AT - Peer Review y Vo Bo | 1d? | 2018-06-23 | 2018-06-23 | 65 | 75d |  | 2h |
| 67 | 1.2.2 | **CC_Desarrollo** | 24d? | 2018-06-22 | 2018-07-18 |  | 0d |  | 131h |
| 68 | 1.2.2.1 | **Diseño y Construcción** | 19d | 2018-06-22 | 2018-07-12 |  | 0d |  | 86h |
| 69 | 1.2.2.1.1 | CC - Revision del documento de Arquitectura de Solucion | 1d | 2018-06-22 | 2018-06-23 | 63 | 0d |  | 3h |
| 70 | 1.2.2.1.2 | **CC - Instalacion y Configuracion** | 3d | 2018-06-23 | 2018-06-26 |  | 0d |  | 23h |
| 71 | 1.2.2.1.2.1 | CC - Instalacion de herramientas de desarrollo | 1d | 2018-06-23 | 2018-06-23 | 69 | 0d |  | 9h |
| 72 | 1.2.2.1.2.2 | CC - Instalacion de herramientas de gestion de Bases de Datos | 1d | 2018-06-25 | 2018-06-25 | 71 | 0d |  | 9h |
| 73 | 1.2.2.1.2.3 | CC - Instalacion de herramienta para soportar aplicaciones web | 1d | 2018-06-26 | 2018-06-26 | 72 | 0d |  | 5h |

| ID | WBS | Task | Duration | Start | Finish | Predecessors | Total slack | Work |
| --- | --- | --- | --- | --- | --- | --- | --- | --- |
| 74 | 1.2.2.1.3 | **CC - Desarrollo** | 15d | 2018-06-27 | 2018-07-12 |  | 0d | 60h |
| 75 | 1.2.2.1.3.1 | **CC - Modulo Catalogos Maestros** | 15d | 2018-06-27 | 2018-07-12 |  | 0d | 60h |
| 76 | 1.2.2.1.3.1.1 | CC - Catalogo Rol | 1d | 2018-06-27 | 2018-06-27 | 73 | 0d | 4h |
| 77 | 1.2.2.1.3.1.2 | CC - Catalogo Actores | 1d | 2018-06-28 | 2018-06-28 | 76 | 0d | 4h |
| 78 | 1.2.2.1.3.1.3 | CC - Catalogo Actores-Roles | 1d | 2018-06-29 | 2018-06-29 | 77 | 0d | 4h |
| 79 | 1.2.2.1.3.1.4 | CC - Catalogo Contratos | 1d | 2018-06-30 | 2018-06-30 | 78 | 0d | 4h |
| 80 | 1.2.2.1.3.1.5 | CC - Catalogo Tipos de Tarifa | 1d | 2018-06-30 | 2018-07-02 | 79 | 0d | 4h |
| 81 | 1.2.2.1.3.1.6 | CC - Catalogo Tarifa | 1d | 2018-07-02 | 2018-07-03 | 80 | 0d | 4h |
| 82 | 1.2.2.1.3.1.7 | CC - Catalogo Conceptos de Tarifa | 1d | 2018-07-03 | 2018-07-04 | 81 | 0d | 4h |
| 83 | 1.2.2.1.3.1.8 | CC - Catalogo Choferes | 1d | 2018-07-04 | 2018-07-05 | 82 | 0d | 4h |
| 84 | 1.2.2.1.3.1.9 | CC - Catalogo Camiones | 1d | 2018-07-05 | 2018-07-06 | 83 | 0d | 4h |
| 85 | 1.2.2.1.3.1.10 | CC - Catalogo Responsables de Incidencias | 1d | 2018-07-06 | 2018-07-07 | 84 | 0d | 4h |
| 86 | 1.2.2.1.3.1.11 | CC - Catalogo Tipos de Incidencias | 1d | 2018-07-07 | 2018-07-07 | 85 | 0d | 4h |
| 87 | 1.2.2.1.3.1.12 | CC - Catalogo Tipos de Viaje | 1d | 2018-07-09 | 2018-07-09 | 86 | 0d | 4h |
| 88 | 1.2.2.1.3.1.13 | CC - Catalogo Tipos de Carga/Descarga | 1d | 2018-07-10 | 2018-07-10 | 87 | 0d | 4h |
| 89 | 1.2.2.1.3.1.14 | CC - Catalogo Clientes de Entrega | 1d | 2018-07-11 | 2018-07-11 | 88 | 0d | 4h |
| 90 | 1.2.2.1.3.1.15 | CC - Catalogo Clientes Solicidates | 1d | 2018-07-12 | 2018-07-12 | 89 | 0d | 4h |
| 91 | 1.2.2.2 | **PU - Pruebas Untarias** | 19d? | 2018-06-28 | 2018-07-18 |  | 14d | 45h |
| 92 | 1.2.2.2.1 | **PU - Modulo Catalogos Maestros** | 15d | 2018-06-28 | 2018-07-13 |  | 14d | 30h |
| 93 | 1.2.2.2.1.1 | PU - Catalogo Rol | 1d | 2018-06-28 | 2018-06-28 | 76 | 71d | 2h |
| 94 | 1.2.2.2.1.2 | PU - Catalogo Actores | 1d | 2018-06-29 | 2018-06-29 | 77 | 70d | 2h |
| 95 | 1.2.2.2.1.3 | PU - Catalogo Actores-Roles | 1d | 2018-06-30 | 2018-06-30 | 78 | 69d | 2h |
| 96 | 1.2.2.2.1.4 | PU - Catalogo Contratos | 1d | 2018-06-30 | 2018-07-02 | 79 | 68d | 2h |
| 97 | 1.2.2.2.1.5 | PU - Catalogo Tipos de Tarifa | 1d | 2018-07-02 | 2018-07-03 | 80 | 67d | 2h |
| 98 | 1.2.2.2.1.6 | PU - Catalogo Tarifa | 1d | 2018-07-03 | 2018-07-04 | 81 | 66d | 2h |
| 99 | 1.2.2.2.1.7 | PU - Catalogo Conceptos de Tarifa | 1d | 2018-07-04 | 2018-07-05 | 82 | 65d | 2h |
| 100 | 1.2.2.2.1.8 | PU - Catalogo Choferes | 1d | 2018-07-05 | 2018-07-06 | 83 | 64d | 2h |
| 101 | 1.2.2.2.1.9 | PU - Catalogo Camiones | 1d | 2018-07-06 | 2018-07-07 | 84 | 63d | 2h |
| 102 | 1.2.2.2.1.10 | PU - Catalogo Responsables de Incidencias | 1d | 2018-07-07 | 2018-07-07 | 85 | 62d | 2h |
| 103 | 1.2.2.2.1.11 | PU - Catalogo Tipos de Incidencias | 1d | 2018-07-09 | 2018-07-09 | 86 | 61d | 2h |
| 104 | 1.2.2.2.1.12 | PU - Catalogo Tipos de Viaje | 1d | 2018-07-10 | 2018-07-10 | 87 | 60d | 2h |
| 105 | 1.2.2.2.1.13 | PU - Catalogo Tipos de Carga/Descarga | 1d | 2018-07-11 | 2018-07-11 | 88 | 59d | 2h |
| 106 | 1.2.2.2.1.14 | PU - Catalogo Clientes de Entrega | 1d | 2018-07-12 | 2018-07-12 | 89 | 58d | 2h |
| 107 | 1.2.2.2.1.15 | PU - Catalogo Clientes Solicidates | 1d | 2018-07-13 | 2018-07-13 | 90 | 0d | 2h |

| ID | WBS | Task | Duration | Start | Finish | Predecessors | Total slack | Work |
| --- | --- | --- | --- | --- | --- | --- | --- | --- |
| 108 | 1.2.2.2.2 | **PI - Modulo Catalogos Maestros** | 4d? | 2018-07-14 | 2018-07-18 |  | 0d | 15h |
| 109 | 1.2.2.2.2.1 | PI - Catalogo Rol | 1d? | 2018-07-14 | 2018-07-14 | 107 | 56d | 1h |
| 110 | 1.2.2.2.2.2 | PI - Catalogo Actores | 1d? | 2018-07-14 | 2018-07-14 | 107 | 56d | 1h |
| 111 | 1.2.2.2.2.3 | PI - Catalogo Actores-Roles | 1d? | 2018-07-14 | 2018-07-14 | 107 | 56d | 1h |
| 112 | 1.2.2.2.2.4 | PI - Catalogo Contratos | 1d? | 2018-07-14 | 2018-07-14 | 107 | 56d | 1h |
| 113 | 1.2.2.2.2.5 | PI - Catalogo Tipos de Tarifa | 1d? | 2018-07-14 | 2018-07-14 | 107 | 0d | 1h |
| 114 | 1.2.2.2.2.6 | PI - Catalogo Tarifa | 1d? | 2018-07-14 | 2018-07-16 | 113 | 55d | 1h |
| 115 | 1.2.2.2.2.7 | PI - Catalogo Conceptos de Tarifa | 1d? | 2018-07-14 | 2018-07-16 | 113 | 55d | 1h |
| 116 | 1.2.2.2.2.8 | PI - Catalogo Choferes | 1d? | 2018-07-14 | 2018-07-16 | 113 | 55d | 1h |
| 117 | 1.2.2.2.2.9 | PI - Catalogo Camiones | 1d? | 2018-07-14 | 2018-07-16 | 113 | 0d | 1h |
| 118 | 1.2.2.2.2.10 | PI - Catalogo Responsables de Incidencias | 1d? | 2018-07-16 | 2018-07-17 | 117 | 54d | 1h |
| 119 | 1.2.2.2.2.11 | PI - Catalogo Tipos de Incidencias | 1d? | 2018-07-16 | 2018-07-17 | 117 | 54d | 1h |
| 120 | 1.2.2.2.2.12 | PI - Catalogo Tipos de Viaje | 1d? | 2018-07-16 | 2018-07-17 | 117 | 54d | 1h |
| 121 | 1.2.2.2.2.13 | PI - Catalogo Tipos de Carga/Descarga | 1d? | 2018-07-16 | 2018-07-17 | 117 | 0d | 1h |
| 122 | 1.2.2.2.2.14 | PI - Catalogo Clientes de Entrega | 1d? | 2018-07-17 | 2018-07-18 | 121 | 53d | 1h |
| 123 | 1.2.2.2.2.15 | PI - Catalogo Clientes Solicidates | 1d? | 2018-07-17 | 2018-07-18 | 121 | 53d | 1h |
| 124 | 1.3 | LB - Liberacion Modulo 1 | 1d | 2018-07-17 | 2018-07-18 | 121 | 0d | 2h |
| 125 | 1.4 | **Modulo Seguridad** | 17d? | 2018-07-18 | 2018-08-04 |  | 0d | 111h |
| 126 | 1.4.1 | **AT Analisis de Tecnico** | 12d? | 2018-07-18 | 2018-07-31 |  | 0d | 75h |
| 127 | 1.4.1.1 | **IAT - Revisión de documentación entregada por Negocio** | 2d | 2018-07-18 | 2018-07-20 |  | 0d | 19h |
| 128 | 1.4.1.1.1 | AT - Requerimientos de Negocio (Junta de Entendimiento) | 1d | 2018-07-18 | 2018-07-19 | 124 | 0d | 6h |
| 129 | 1.4.1.1.2 | AT - Casos de Uso (Junta de Entendimiento) | 1d | 2018-07-19 | 2018-07-20 | 128 | 0d | 13h |
| 130 | 1.4.1.2 | **AT - Actualizacion de propuesta de Arquitectura de Solucion** | 4d | 2018-07-20 | 2018-07-24 |  | 0d | 19h |
| 131 | 1.4.1.2.1 | AT - Requerimientos tecnicos | 1d | 2018-07-20 | 2018-07-21 | 129 | 50d | 3h |
| 132 | 1.4.1.2.2 | AT - Analisis tecnico | 1d | 2018-07-20 | 2018-07-21 | 129 | 0d | 3h |
| 133 | 1.4.1.2.3 | AT - Requerimientos de solucion | 1d | 2018-07-21 | 2018-07-21 | 132 | 49d | 3h |
| 134 | 1.4.1.2.4 | AT - Escalabilidad | 1d | 2018-07-21 | 2018-07-21 | 132 | 0d | 3h |
| 135 | 1.4.1.2.5 | AT - Modelado BD | 1d | 2018-07-23 | 2018-07-23 | 134 | 48d | 3h |
| 136 | 1.4.1.2.6 | AT - Herramientas para solucion | 1d | 2018-07-23 | 2018-07-23 | 134 | 0d | 2h |
| 137 | 1.4.1.2.7 | AT - Aplicación responsiva para navegadores web | 1d | 2018-07-24 | 2018-07-24 | 136 | 47d | 2h |
| 138 | 1.4.1.3 | AT - Peer Review y Vo Bo Arquitectura de Solucion | 1d | 2018-07-24 | 2018-07-24 | 136 | 0d | 1h |

| ID | WBS | Task | Duration | Start | Finish | Predecessors | Total slack | Free slack | Work |
| --- | --- | --- | --- | --- | --- | --- | --- | --- | --- |
| 139 | 1.4.1.4 | **AT - Modulo Seguridad** | 4d | 2018-07-25 | 2018-07-28 |  | 0d |  | 24h |
| 140 | 1.4.1.4.1 | **AT - Roles** | 2d | 2018-07-25 | 2018-07-26 |  | 0d |  | 8h |
| 141 | 1.4.1.4.1.1 | AT - Elaboración Bocetos de Archivos | 1d | 2018-07-25 | 2018-07-25 | 138 | 0d |  | 3h |
| 142 | 1.4.1.4.1.2 | AT - Elaboración Bocetos de Pantallas | 1d | 2018-07-26 | 2018-07-26 | 141 | 0d |  | 5h |
| 143 | 1.4.1.4.2 | **AT - Configuracion** | 2d | 2018-07-25 | 2018-07-26 |  | 45d |  | 8h |
| 144 | 1.4.1.4.2.1 | AT - Elaboración Bocetos de Archivos | 1d | 2018-07-25 | 2018-07-25 | 138 | 45d | 0d | 3h |
| 145 | 1.4.1.4.2.2 | AT - Elaboración Bocetos de Pantallas | 1d | 2018-07-26 | 2018-07-26 | 144 | 45d |  | 5h |
| 146 | 1.4.1.4.3 | **AT - Permisos** | 2d | 2018-07-27 | 2018-07-28 |  | 0d |  | 8h |
| 147 | 1.4.1.4.3.1 | AT - Elaboración Bocetos de Archivos | 1d | 2018-07-27 | 2018-07-27 | 142 | 0d |  | 3h |
| 148 | 1.4.1.4.3.2 | AT - Elaboración Bocetos de Pantallas | 1d | 2018-07-28 | 2018-07-28 | 147 | 0d |  | 5h |
| 149 | 1.4.1.5 | AT - Revisión con el usuario | 1d? | 2018-07-28 | 2018-07-30 | 148 | 42d |  | 4h |
| 150 | 1.4.1.6 | AT - Ajustes de comentarios del usuario | 1d? | 2018-07-28 | 2018-07-30 | 148 | 41d | 0d | 6h |
| 151 | 1.4.1.7 | AT - Peer Review y Vo Bo | 1d? | 2018-07-30 | 2018-07-31 | 150 | 41d |  | 2h |
| 152 | 1.4.2 | **CC - Modulo Seguridad** | 7d? | 2018-07-28 | 2018-08-04 |  | 0d |  | 36h |
| 153 | 1.4.2.1 | **Diseño y Construcción** | 1d | 2018-07-28 | 2018-07-30 |  | 0d |  | 2h |
| 154 | 1.4.2.1.1 | CC - Revision del documento de Arquitectura de Solucion | 1d | 2018-07-28 | 2018-07-30 | 148 | 0d |  | 2h |
| 155 | 1.4.2.2 | CC - Roles | 1d | 2018-07-30 | 2018-07-31 | 154 | 0d |  | 7h |
| 156 | 1.4.2.3 | CC - Configuracion | 1d | 2018-07-31 | 2018-08-01 | 155 | 0d |  | 7h |
| 157 | 1.4.2.4 | CC - Permisos | 1d | 2018-08-01 | 2018-08-02 | 156 | 0d |  | 8h |
| 158 | 1.4.2.5 | **PU - Modulo Seguridad** | 3d | 2018-07-31 | 2018-08-03 |  | 2d |  | 6h |
| 159 | 1.4.2.5.1 | PU - Roles | 1d | 2018-07-31 | 2018-08-01 | 155 | 40d |  | 2h |
| 160 | 1.4.2.5.2 | PU - Configuracion | 1d | 2018-08-01 | 2018-08-02 | 156 | 39d |  | 2h |
| 161 | 1.4.2.5.3 | PU - Permisos | 1d | 2018-08-02 | 2018-08-03 | 157 | 0d |  | 2h |
| 162 | 1.4.2.6 | **PI - Modulo Seguridad** | 2d? | 2018-08-03 | 2018-08-04 |  | 0d |  | 6h |
| 163 | 1.4.2.6.1 | PI - Roles | 1d? | 2018-08-03 | 2018-08-04 | 161 | 37d |  | 2h |
| 164 | 1.4.2.6.2 | PI - Configuracion | 1d? | 2018-08-03 | 2018-08-04 | 161 | 0d |  | 2h |
| 165 | 1.4.2.6.3 | PI - Permisos | 1d? | 2018-08-04 | 2018-08-04 | 164 | 36d |  | 2h |
| 166 | 1.5 | LB - Liberacion Modulo 2 | 1d? | 2018-08-04 | 2018-08-04 | 164 | 0d |  | 2h |

| ID | WBS | Task | Duration | Start | Finish | Predecessors | Total slack | Free slack | Work |
| --- | --- | --- | --- | --- | --- | --- | --- | --- | --- |
| 167 | 1.6 | **Modulo Solicitud** | 21d? | 2018-08-06 | 2018-08-28 |  | 0d |  | 171h |
| 168 | 1.6.1 | **AT Analisis de Tecnico** | 13d? | 2018-08-06 | 2018-08-18 |  | 0d |  | 91h |
| 169 | 1.6.1.1 | **IAT - Revisión de documentación entregada por Negocio** | 2d | 2018-08-06 | 2018-08-07 |  | 0d |  | 19h |
| 170 | 1.6.1.1.1 | AT - Requerimientos de Negocio (Junta de Entendimiento) | 1d | 2018-08-06 | 2018-08-06 | 166 | 0d |  | 6h |
| 171 | 1.6.1.1.2 | AT - Casos de Uso (Junta de Entendimiento) | 1d | 2018-08-07 | 2018-08-07 | 170 | 34d |  | 13h |
| 172 | 1.6.1.2 | **AT - Actualizacion de propuesta de Arquitectura de Solucion** | 4d | 2018-08-07 | 2018-08-10 |  | 0d |  | 19h |
| 173 | 1.6.1.2.1 | AT - Requerimientos tecnicos | 1d | 2018-08-07 | 2018-08-07 | 170 | 34d |  | 3h |
| 174 | 1.6.1.2.2 | AT - Analisis tecnico | 1d | 2018-08-07 | 2018-08-07 | 170 | 0d |  | 3h |
| 175 | 1.6.1.2.3 | AT - Requerimientos de solucion | 1d | 2018-08-08 | 2018-08-08 | 174 | 33d |  | 3h |
| 176 | 1.6.1.2.4 | AT - Escalabilidad | 1d | 2018-08-08 | 2018-08-08 | 174 | 0d |  | 3h |
| 177 | 1.6.1.2.5 | AT - Modelado BD | 1d | 2018-08-09 | 2018-08-09 | 176 | 32d |  | 3h |
| 178 | 1.6.1.2.6 | AT - Herramientas para solucion | 1d | 2018-08-09 | 2018-08-09 | 176 | 0d |  | 2h |
| 179 | 1.6.1.2.7 | AT - Aplicación responsiva para navegadores web | 1d | 2018-08-10 | 2018-08-10 | 178 | 0d |  | 2h |
| 180 | 1.6.1.3 | AT - Peer Review y Vo Bo Arquitectura de Solucion | 1d | 2018-08-11 | 2018-08-11 | 179 | 30d |  | 1h |
| 181 | 1.6.1.4 | **AT - Modulo Solicitudes** | 6d | 2018-08-11 | 2018-08-17 |  | 0d |  | 40h |
| 182 | 1.6.1.4.1 | **AT - Cliente - Solicitud de Transporte** | 2d | 2018-08-11 | 2018-08-13 |  | 27d |  | 8h |
| 183 | 1.6.1.4.1.1 | AT - Elaboración Bocetos de Archivos | 1d | 2018-08-11 | 2018-08-11 | 179 | 27d | 0d | 3h |
| 184 | 1.6.1.4.1.2 | AT - Elaboración Bocetos de Pantallas | 1d | 2018-08-11 | 2018-08-13 | 183 | 27d | 0d | 5h |
| 185 | 1.6.1.4.2 | **AT - Trafico - Valoracion del Viaje** | 2d | 2018-08-11 | 2018-08-13 |  | 0d |  | 8h |
| 186 | 1.6.1.4.2.1 | AT - Elaboración Bocetos de Archivos | 1d | 2018-08-11 | 2018-08-11 | 179 | 0d |  | 3h |
| 187 | 1.6.1.4.2.2 | AT - Elaboración Bocetos de Pantallas | 1d | 2018-08-11 | 2018-08-13 | 186 | 0d |  | 5h |
| 188 | 1.6.1.4.3 | **AT - Distribucion - Asugnacion de Unidad y Carga** | 2d | 2018-08-13 | 2018-08-15 |  | 27d |  | 8h |
| 189 | 1.6.1.4.3.1 | AT - Elaboración Bocetos de Archivos | 1d | 2018-08-13 | 2018-08-14 | 184 | 27d | 0d | 3h |
| 190 | 1.6.1.4.3.2 | AT - Elaboración Bocetos de Pantallas | 1d | 2018-08-14 | 2018-08-15 | 189 | 27d |  | 5h |

| ID | WBS | Task | Duration | Start | Finish | Predecessors | Total slack | Free slack | Work |
| --- | --- | --- | --- | --- | --- | --- | --- | --- | --- |
| 191 | 1.6.1.4.4 | **AT - Operador CL - Operación y Descarga** | 2d | 2018-08-13 | 2018-08-15 |  | 0d |  | 8h |
| 192 | 1.6.1.4.4.1 | AT - Elaboración Bocetos de Archivos | 1d | 2018-08-13 | 2018-08-14 | 187 | 0d |  | 3h |
| 193 | 1.6.1.4.4.2 | AT - Elaboración Bocetos de Pantallas | 1d | 2018-08-14 | 2018-08-15 | 192 | 0d |  | 5h |
| 194 | 1.6.1.4.5 | **AT - Distribucion - Cierre del Viaje y Facturacion** | 2d | 2018-08-15 | 2018-08-17 |  | 0d |  | 8h |
| 195 | 1.6.1.4.5.1 | AT - Elaboración Bocetos de Archivos | 1d | 2018-08-15 | 2018-08-16 | 193 | 0d |  | 3h |
| 196 | 1.6.1.4.5.2 | AT - Elaboración Bocetos de Pantallas | 1d | 2018-08-16 | 2018-08-17 | 195 | 0d |  | 5h |
| 197 | 1.6.1.5 | AT - Revisión con el usuario | 1d? | 2018-08-17 | 2018-08-18 | 196 | 24d |  | 4h |
| 198 | 1.6.1.6 | AT - Ajustes de comentarios del usuario | 1d? | 2018-08-17 | 2018-08-18 | 196 | 23d | 0d | 6h |
| 199 | 1.6.1.7 | AT - Peer Review y Vo Bo | 1d? | 2018-08-18 | 2018-08-18 | 198 | 23d |  | 2h |
| 200 | 1.6.2 | **CC - Modulo Solicitudes** | 10d? | 2018-08-17 | 2018-08-28 |  | 0d |  | 80h |
| 201 | 1.6.2.1 | **Diseño y Construcción** | 1d | 2018-08-17 | 2018-08-18 |  | 0d |  | 2h |
| 202 | 1.6.2.1.1 | CC - Revision del documento de Arquitectura de Solucion | 1d | 2018-08-17 | 2018-08-18 | 196 | 0d |  | 2h |
| 203 | 1.6.2.2 | CC - Cliente - Solicitud de Transporte | 1d | 2018-08-18 | 2018-08-18 | 202 | 0d |  | 7h |
| 204 | 1.6.2.3 | CC - Trafico - Valoracion del Viaje | 1d | 2018-08-20 | 2018-08-20 | 203 | 0d |  | 7h |
| 205 | 1.6.2.4 | CC - Distribucion - Asugnacion de Unidad y Carga | 1d | 2018-08-21 | 2018-08-21 | 204 | 0d |  | 7h |
| 206 | 1.6.2.5 | CC - Operador CL - Operación y Descarga | 1d | 2018-08-22 | 2018-08-22 | 205 | 0d |  | 7h |
| 207 | 1.6.2.6 | CC - Distribucion - Cierre del Viaje y Facturacion | 1d | 2018-08-23 | 2018-08-23 | 206 | 0d |  | 7h |
| 208 | 1.6.2.7 | **CC - Primer Check point operativo** | 2d | 2018-08-24 | 2018-08-25 |  | 15d |  | 9h |
| 209 | 1.6.2.7.1 | CC - Primer Check point operativo | 1d | 2018-08-24 | 2018-08-24 | 207 | 15d | 0d | 2h |
| 210 | 1.6.2.7.2 | CC - Actualizacion de los puntos del primer Ckeckpoint | 1d | 2018-08-25 | 2018-08-25 | 209 | 15d | 0d | 7h |
| 211 | 1.6.2.8 | **CC - Segundo Check point operativo** | 2d | 2018-08-25 | 2018-08-28 |  | 15d |  | 9h |
| 212 | 1.6.2.8.1 | CC - Segundo Check point operativo | 1d | 2018-08-25 | 2018-08-27 | 210 | 15d | 0d | 2h |
| 213 | 1.6.2.8.2 | CC - Actualizacion de los puntos del segundo Check point operativo | 1d | 2018-08-27 | 2018-08-28 | 212 | 15d |  | 7h |
| 214 | 1.6.2.9 | **PU - Modulo Solicitudes** | 5d | 2018-08-20 | 2018-08-24 |  | 4d |  | 15h |
| 215 | 1.6.2.9.1 | PU - Cliente - Solicitud de Transporte | 1d | 2018-08-20 | 2018-08-20 | 203 | 22d |  | 3h |
| 216 | 1.6.2.9.2 | PU - Trafico - Valoracion del Viaje | 1d | 2018-08-21 | 2018-08-21 | 204 | 21d |  | 3h |
| 217 | 1.6.2.9.3 | PU - Distribucion - Asugnacion de Unidad y Carga | 1d | 2018-08-22 | 2018-08-22 | 205 | 20d |  | 3h |
| 218 | 1.6.2.9.4 | PU - Operador CL - Operación y Descarga | 1d | 2018-08-23 | 2018-08-23 | 206 | 19d |  | 3h |
| 219 | 1.6.2.9.5 | PU - Distribucion - Cierre del Viaje y Facturacion | 1d | 2018-08-24 | 2018-08-24 | 207 | 0d |  | 3h |

| ID | WBS | Task | Duration | Start | Finish | Predecessors | Total slack | Free slack | Work |
| --- | --- | --- | --- | --- | --- | --- | --- | --- | --- |
| 220 | 1.6.2.10 | **PI - Modulo Solicitudes** | 3d? | 2018-08-25 | 2018-08-28 |  | 15d |  | 10h |
| 221 | 1.6.2.10.1 | PI - Cliente - Solicitud de Transporte | 1d? | 2018-08-25 | 2018-08-25 | 219 | 17d |  | 2h |
| 222 | 1.6.2.10.2 | PI - Trafico - Valoracion del Viaje | 1d? | 2018-08-25 | 2018-08-25 | 219 | 15d | 0d | 2h |
| 223 | 1.6.2.10.3 | PI - Distribucion - Asugnacion de Unidad y Carga | 1d? | 2018-08-25 | 2018-08-27 | 222 | 16d |  | 2h |
| 224 | 1.6.2.10.4 | PI - Operador CL - Operación y Descarga | 1d? | 2018-08-25 | 2018-08-27 | 222 | 15d | 0d | 2h |
| 225 | 1.6.2.10.5 | PI - Distribucion - Cierre del Viaje y Facturacion | 1d? | 2018-08-27 | 2018-08-28 | 224 | 15d |  | 2h |
| 226 | 1.7 | LB - Liberacion Modulo 2 | 1d? | 2018-08-25 | 2018-08-25 | 219 | 0d |  | 3h |
| 227 | 1.8 | **Modulo Alarmas** | 17d? | 2018-08-25 | 2018-09-13 |  | 0d |  | 102h |
| 228 | 1.8.1 | **AT Analisis de Tecnico** | 12d? | 2018-08-25 | 2018-09-07 |  | 0d |  | 67h |
| 229 | 1.8.1.1 | **IAT - Revisión de documentación entregada por Negocio** | 2d | 2018-08-25 | 2018-08-28 |  | 0d |  | 19h |
| 230 | 1.8.1.1.1 | AT - Requerimientos de Negocio (Junta de Entendimiento) | 1d | 2018-08-25 | 2018-08-27 | 226 | 0d |  | 6h |
| 231 | 1.8.1.1.2 | AT - Casos de Uso (Junta de Entendimiento) | 1d | 2018-08-27 | 2018-08-28 | 230 | 0d |  | 13h |
| 232 | 1.8.1.2 | **AT - Actualizacion de propuesta de Arquitectura de Solucion** | 4d | 2018-08-28 | 2018-09-01 |  | 0d |  | 14h |
| 233 | 1.8.1.2.1 | AT - Requerimientos tecnicos | 1d | 2018-08-28 | 2018-08-29 | 231 | 14d |  | 2h |
| 234 | 1.8.1.2.2 | AT - Analisis tecnico | 1d | 2018-08-28 | 2018-08-29 | 231 | 0d |  | 2h |
| 235 | 1.8.1.2.3 | AT - Requerimientos de solucion | 1d | 2018-08-29 | 2018-08-30 | 234 | 13d |  | 2h |
| 236 | 1.8.1.2.4 | AT - Escalabilidad | 1d | 2018-08-29 | 2018-08-30 | 234 | 0d |  | 2h |
| 237 | 1.8.1.2.5 | AT - Modelado BD | 1d | 2018-08-30 | 2018-08-31 | 236 | 12d |  | 2h |
| 238 | 1.8.1.2.6 | AT - Herramientas para solucion | 1d | 2018-08-30 | 2018-08-31 | 236 | 0d |  | 2h |
| 239 | 1.8.1.2.7 | AT - Aplicación responsiva para navegadores web | 1d | 2018-08-31 | 2018-09-01 | 238 | 11d |  | 2h |
| 240 | 1.8.1.3 | AT - Peer Review y Vo Bo Arquitectura de Solucion | 1d | 2018-08-31 | 2018-09-01 | 238 | 0d |  | 1h |
| 241 | 1.8.1.4 | **AT - Modulo Alarmas/Reportes/Indicadores de gestión** | 6d? | 2018-09-01 | 2018-09-07 |  | 0d |  | 33h |
| 242 | 1.8.1.4.1 | **AT - Alarmas** | 2d | 2018-09-01 | 2018-09-03 |  | 9d |  | 7h |
| 243 | 1.8.1.4.1.1 | AT - Elaboración Bocetos de Archivos | 1d | 2018-09-01 | 2018-09-01 | 240 | 9d | 0d | 3h |
| 244 | 1.8.1.4.1.2 | AT - Elaboración Bocetos de Pantallas | 1d | 2018-09-03 | 2018-09-03 | 243 | 9d |  | 4h |

| ID | WBS | Task | Duration | Start | Finish | Predecessors | Total slack | Free slack | Work |
| --- | --- | --- | --- | --- | --- | --- | --- | --- | --- |
| 245 | 1.8.1.4.2 | **AT - Reportes** | 2d | 2018-09-01 | 2018-09-03 |  | 0d |  | 7h |
| 246 | 1.8.1.4.2.1 | AT - Elaboración Bocetos de Archivos | 1d | 2018-09-01 | 2018-09-01 | 240 | 0d |  | 3h |
| 247 | 1.8.1.4.2.2 | AT - Elaboración Bocetos de Pantallas | 1d | 2018-09-03 | 2018-09-03 | 246 | 0d |  | 4h |
| 248 | 1.8.1.4.3 | **AT - Indicadores de gestión** | 2d | 2018-09-04 | 2018-09-05 |  | 0d |  | 7h |
| 249 | 1.8.1.4.3.1 | AT - Elaboración Bocetos de Archivos | 1d | 2018-09-04 | 2018-09-04 | 247 | 0d |  | 3h |
| 250 | 1.8.1.4.3.2 | AT - Elaboración Bocetos de Pantallas | 1d | 2018-09-05 | 2018-09-05 | 249 | 0d |  | 4h |
| 251 | 1.8.1.4.4 | AT - Revisión con el usuario | 1d? | 2018-09-06 | 2018-09-06 | 250 | 6d |  | 4h |
| 252 | 1.8.1.4.5 | AT - Ajustes de comentarios del usuario | 1d? | 2018-09-06 | 2018-09-06 | 250 | 5d | 0d | 6h |
| 253 | 1.8.1.4.6 | AT - Peer Review y Vo Bo | 1d | 2018-09-07 | 2018-09-07 | 252 | 5d |  | 2h |
| 254 | 1.8.2 | **CC - Modulo Alarmas/Reportes/Indicadores de gestión** | 7d? | 2018-09-06 | 2018-09-13 |  | 0d |  | 35h |
| 255 | 1.8.2.1 | **Diseño y Construcción** | 1d | 2018-09-06 | 2018-09-06 |  | 0d |  | 2h |
| 256 | 1.8.2.1.1 | CC - Revision del documento de Arquitectura de Solucion | 1d | 2018-09-06 | 2018-09-06 | 250 | 0d |  | 2h |
| 257 | 1.8.2.2 | CC - Alarmas | 1d | 2018-09-07 | 2018-09-07 | 256 | 0d |  | 6h |
| 258 | 1.8.2.3 | CC - Reportes | 1d | 2018-09-08 | 2018-09-08 | 257 | 0d |  | 6h |
| 259 | 1.8.2.4 | CC - Indicadores de gestión | 1d | 2018-09-08 | 2018-09-10 | 258 | 0d |  | 6h |
| 260 | 1.8.2.5 | **PU - Modulo Alarmas/Reportes/Indicadores de gestión** | 3d | 2018-09-08 | 2018-09-11 |  | 2d |  | 9h |
| 261 | 1.8.2.5.1 | PU - Alarmas | 1d | 2018-09-08 | 2018-09-08 | 257 | 4d |  | 3h |
| 262 | 1.8.2.5.2 | PU - Reportes | 1d | 2018-09-08 | 2018-09-10 | 258 | 3d |  | 3h |
| 263 | 1.8.2.5.3 | PU - Indicadores de gestión | 1d | 2018-09-10 | 2018-09-11 | 259 | 0d |  | 3h |
| 264 | 1.8.2.6 | **PI - Modulo Alarmas/Reportes/Indicadores de gestión** | 2d? | 2018-09-11 | 2018-09-13 |  | 0d |  | 6h |
| 265 | 1.8.2.6.1 | PI - Alarmas | 1d? | 2018-09-11 | 2018-09-12 | 263 | 1d |  | 2h |
| 266 | 1.8.2.6.2 | PI - Reportes | 1d? | 2018-09-11 | 2018-09-12 | 263 | 0d |  | 2h |
| 267 | 1.8.2.6.3 | PI - Indicadores de gestión | 1d? | 2018-09-12 | 2018-09-13 | 266 | 0d |  | 2h |
| 268 | 1.9 | LB - Liberacion Modulo 3 | 1d | 2018-05-29 | 2018-05-29 |  | 99d |  | 2h |
