# PLAN_AT_CC_v1_FECHAS

Schedule from MS Project, 2018-05-29 to 2018-10-04.

## Calendars

- Estándar: Mon-Fri 09:00-13:00, 15:00-19:00; Sat-Sun off.

## Schedule

| ID | WBS | Task | Duration | Start | Finish | Predecessors | Total slack | Free slack | Work |
| --- | --- | --- | --- | --- | --- | --- | --- | --- | --- |
| 1 | 1 | **001-ITSC_TMS Plan de Analisis y Desarrollo** | 93d? | 2018-05-29 | 2018-10-04 |  | 0d |  | 578h |
| 2 | 1.1 | **Modulo Catalogos Maestros** | 42d | 2018-05-29 | 2018-07-25 |  | 0d |  | 252h |
| 3 | 1.1.1 | **AT Analisis de Tecnico** | 22d | 2018-05-29 | 2018-06-27 |  | 0d |  | 136h |
| 4 | 1.1.1.1 | **IAT - Revisión de documentación entregada por Negocio** | 2d | 2018-05-29 | 2018-05-30 |  | 0d |  | 19h |
| 5 | 1.1.1.1.1 | AT - Requerimientos de Negocio (Junta de Entendimiento) | 1d | 2018-05-29 | 2018-05-29 |  | 0d |  | 6h |
| 6 | 1.1.1.1.2 | AT - Casos de Uso (Junta de Entendimiento) | 1d | 2018-05-30 | 2018-05-30 | 5 | 0d |  | 13h |
| 7 | 1.1.1.2 | **AT - Elaboracion de propuesta de Arquitectura de Solucion** | 4d | 2018-05-31 | 2018-06-05 |  | 0d |  | 26h |
| 8 | 1.1.1.2.1 | AT - Requerimientos tecnicos | 1d | 2018-05-31 | 2018-05-31 | 6 | 15d |  | 4h |
| 9 | 1.1.1.2.2 | AT - Analisis tecnico | 1d | 2018-05-31 | 2018-05-31 | 6 | 0d |  | 4h |
| 10 | 1.1.1.2.3 | AT - Requerimientos de solucion | 1d | 2018-06-01 | 2018-06-01 | 9 | 14d |  | 4h |
| 11 | 1.1.1.2.4 | AT - Escalabilidad | 1d | 2018-06-01 | 2018-06-01 | 9 | 0d |  | 4h |
| 12 | 1.1.1.2.5 | AT - Modelado BD | 1d | 2018-06-04 | 2018-06-04 | 11 | 13d |  | 4h |
| 13 | 1.1.1.2.6 | AT - Herramientas para solucion | 1d | 2018-06-04 | 2018-06-04 | 11 | 0d |  | 3h |
| 14 | 1.1.1.2.7 | AT - Aplicación responsiva para navegadores web | 1d | 2018-06-05 | 2018-06-05 | 13 | 12d |  | 3h |
| 15 | 1.1.1.3 | AT - Peer Review y Vo Bo Arquitectura de Solucion | 1d | 2018-06-05 | 2018-06-05 | 13 | 0d |  | 1h |
| 16 | 1.1.1.4 | **AT - Elaboración de documentos AT** | 16d | 2018-06-06 | 2018-06-27 |  | 0d |  | 90h |
| 17 | 1.1.1.4.1 | **AT - Modulo Catalogos Maestros** | 16d | 2018-06-06 | 2018-06-27 |  | 0d |  | 90h |
| 18 | 1.1.1.4.1.1 | **AT - Catalogo Rol** | 2d | 2018-06-06 | 2018-06-07 |  | 0d |  | 6h |
| 19 | 1.1.1.4.1.1.1 | AT - Elaboración Bocetos de Archivos | 1d | 2018-06-06 | 2018-06-06 | 15 | 0d |  | 3h |
| 20 | 1.1.1.4.1.1.2 | AT - Elaboración Bocetos de Pantallas | 1d | 2018-06-07 | 2018-06-07 | 19 | 0d |  | 3h |
| 21 | 1.1.1.4.1.2 | **AT - Catalogo Actores** | 2d | 2018-06-06 | 2018-06-07 |  | 73d |  | 6h |
| 22 | 1.1.1.4.1.2.1 | AT - Elaboración Bocetos de Archivos | 1d | 2018-06-06 | 2018-06-06 | 15 | 2d | 0d | 3h |
| 23 | 1.1.1.4.1.2.2 | AT - Elaboración Bocetos de Pantallas | 1d | 2018-06-07 | 2018-06-07 | 22 | 2d | 0d | 3h |
| 24 | 1.1.1.4.1.3 | **AT - Catalogo Actores-Roles** | 2d | 2018-06-08 | 2018-06-11 |  | 0d |  | 6h |
| 25 | 1.1.1.4.1.3.1 | AT - Elaboración Bocetos de Archivos | 1d | 2018-06-08 | 2018-06-08 | 20 | 0d |  | 3h |
| 26 | 1.1.1.4.1.3.2 | AT - Elaboración Bocetos de Pantallas | 1d | 2018-06-11 | 2018-06-11 | 25 | 0d |  | 3h |

| ID | WBS | Task | Duration | Start | Finish | Predecessors | Total slack | Free slack | Work |
| --- | --- | --- | --- | --- | --- | --- | --- | --- | --- |
| 27 | 1.1.1.4.1.4 | **AT - Catalogo Contratos** | 2d | 2018-06-08 | 2018-06-11 |  | 73d |  | 6h |
| 28 | 1.1.1.4.1.4.1 | AT - Elaboración Bocetos de Archivos | 1d | 2018-06-08 | 2018-06-08 | 23 | 2d | 0d | 3h |
| 29 | 1.1.1.4.1.4.2 | AT - Elaboración Bocetos de Pantallas | 1d | 2018-06-11 | 2018-06-11 | 28 | 2d | 0d | 3h |
| 30 | 1.1.1.4.1.5 | **AT - Catalogo Tipos de Tarifa** | 2d | 2018-06-12 | 2018-06-13 |  | 0d |  | 6h |
| 31 | 1.1.1.4.1.5.1 | AT - Elaboración Bocetos de Archivos | 1d | 2018-06-12 | 2018-06-12 | 26 | 0d |  | 3h |
| 32 | 1.1.1.4.1.5.2 | AT - Elaboración Bocetos de Pantallas | 1d | 2018-06-13 | 2018-06-13 | 31 | 0d |  | 3h |
| 33 | 1.1.1.4.1.6 | **AT - Catalogo Tarifa** | 2d | 2018-06-12 | 2018-06-13 |  | 73d |  | 6h |
| 34 | 1.1.1.4.1.6.1 | AT - Elaboración Bocetos de Archivos | 1d | 2018-06-12 | 2018-06-12 | 29 | 2d | 0d | 3h |
| 35 | 1.1.1.4.1.6.2 | AT - Elaboración Bocetos de Pantallas | 1d | 2018-06-13 | 2018-06-13 | 34 | 2d | 0d | 3h |
| 36 | 1.1.1.4.1.7 | **AT - Catalogo Conceptos de Tarifa** | 2d | 2018-06-14 | 2018-06-15 |  | 0d |  | 6h |
| 37 | 1.1.1.4.1.7.1 | AT - Elaboración Bocetos de Archivos | 1d | 2018-06-14 | 2018-06-14 | 32 | 0d |  | 3h |
| 38 | 1.1.1.4.1.7.2 | AT - Elaboración Bocetos de Pantallas | 1d | 2018-06-15 | 2018-06-15 | 37 | 0d |  | 3h |
| 39 | 1.1.1.4.1.8 | **AT - Catalogo Choferes** | 2d | 2018-06-14 | 2018-06-15 |  | 73d |  | 6h |
| 40 | 1.1.1.4.1.8.1 | AT - Elaboración Bocetos de Archivos | 1d | 2018-06-14 | 2018-06-14 | 35 | 2d | 0d | 3h |
| 41 | 1.1.1.4.1.8.2 | AT - Elaboración Bocetos de Pantallas | 1d | 2018-06-15 | 2018-06-15 | 40 | 2d | 0d | 3h |
| 42 | 1.1.1.4.1.9 | **AT - Catalogo Camiones** | 2d | 2018-06-18 | 2018-06-19 |  | 0d |  | 6h |
| 43 | 1.1.1.4.1.9.1 | AT - Elaboración Bocetos de Archivos | 1d | 2018-06-18 | 2018-06-18 | 38 | 0d |  | 3h |
| 44 | 1.1.1.4.1.9.2 | AT - Elaboración Bocetos de Pantallas | 1d | 2018-06-19 | 2018-06-19 | 43 | 0d |  | 3h |
| 45 | 1.1.1.4.1.10 | **AT - Catalogo Responsables de Incidencias** | 2d | 2018-06-18 | 2018-06-19 |  | 73d |  | 6h |
| 46 | 1.1.1.4.1.10.1 | AT - Elaboración Bocetos de Archivos | 1d | 2018-06-18 | 2018-06-18 | 41 | 2d | 0d | 3h |
| 47 | 1.1.1.4.1.10.2 | AT - Elaboración Bocetos de Pantallas | 1d | 2018-06-19 | 2018-06-19 | 46 | 2d | 0d | 3h |
| 48 | 1.1.1.4.1.11 | **AT - Catalogo Tipos de Incidencias** | 2d | 2018-06-20 | 2018-06-21 |  | 0d |  | 6h |
| 49 | 1.1.1.4.1.11.1 | AT - Elaboración Bocetos de Archivos | 1d | 2018-06-20 | 2018-06-20 | 44 | 0d |  | 3h |
| 50 | 1.1.1.4.1.11.2 | AT - Elaboración Bocetos de Pantallas | 1d | 2018-06-21 | 2018-06-21 | 49 | 0d |  | 3h |

| ID | WBS | Task | Duration | Start | Finish | Predecessors | Total slack | Free slack | Work |
| --- | --- | --- | --- | --- | --- | --- | --- | --- | --- |
| 51 | 1.1.1.4.1.12 | **AT - Catalogo Tipos de Viaje** | 2d | 2018-06-20 | 2018-06-21 |  | 73d |  | 6h |
| 52 | 1.1.1.4.1.12.1 | AT - Elaboración Bocetos de Archivos | 1d | 2018-06-20 | 2018-06-20 | 47 | 2d | 0d | 3h |
| 53 | 1.1.1.4.1.12.2 | AT - Elaboración Bocetos de Pantallas | 1d | 2018-06-21 | 2018-06-21 | 52 | 2d | 0d | 3h |
| 54 | 1.1.1.4.1.13 | **AT - Catalogo Tipos de Carga/Descarga** | 2d | 2018-06-22 | 2018-06-25 |  | 0d |  | 6h |
| 55 | 1.1.1.4.1.13.1 | AT - Elaboración Bocetos de Archivos | 1d | 2018-06-22 | 2018-06-22 | 50 | 0d |  | 3h |
| 56 | 1.1.1.4.1.13.2 | AT - Elaboración Bocetos de Pantallas | 1d | 2018-06-25 | 2018-06-25 | 55 | 0d |  | 3h |
| 57 | 1.1.1.4.1.14 | **AT - Catalogo Clientes de Entrega** | 2d | 2018-06-22 | 2018-06-25 |  | 73d |  | 6h |
| 58 | 1.1.1.4.1.14.1 | AT - Elaboración Bocetos de Archivos | 1d | 2018-06-22 | 2018-06-22 | 53 | 2d | 0d | 3h |
| 59 | 1.1.1.4.1.14.2 | AT - Elaboración Bocetos de Pantallas | 1d | 2018-06-25 | 2018-06-25 | 58 | 2d |  | 3h |
| 60 | 1.1.1.4.1.15 | **AT - Catalogo Clientes Solicidates** | 2d | 2018-06-26 | 2018-06-27 |  | 0d |  | 6h |
| 61 | 1.1.1.4.1.15.1 | AT - Elaboración Bocetos de Archivos | 1d | 2018-06-26 | 2018-06-26 | 56 | 0d |  | 3h |
| 62 | 1.1.1.4.1.15.2 | AT - Elaboración Bocetos de Pantallas | 1d | 2018-06-27 | 2018-06-27 | 61 | 0d |  | 3h |
| 63 | 1.1.2 | **CC_Desarrollo** | 19d | 2018-06-28 | 2018-07-24 |  | 0d |  | 86h |
| 64 | 1.1.2.1 | **Diseño y Construcción** | 19d | 2018-06-28 | 2018-07-24 |  | 0d |  | 86h |
| 65 | 1.1.2.1.1 | CC - Revision del documento de Arquitectura de Solucion | 1d | 2018-06-28 | 2018-06-28 | 62 | 0d |  | 3h |
| 66 | 1.1.2.1.2 | **CC - Instalacion y Configuracion** | 3d | 2018-06-29 | 2018-07-03 |  | 0d |  | 23h |
| 67 | 1.1.2.1.2.1 | CC - Instalacion de herramientas de desarrollo | 1d | 2018-06-29 | 2018-06-29 | 65 | 0d |  | 9h |
| 68 | 1.1.2.1.2.2 | CC - Instalacion de herramientas de gestion de Bases de Datos | 1d | 2018-07-02 | 2018-07-02 | 67 | 0d |  | 9h |
| 69 | 1.1.2.1.2.3 | CC - Instalacion de herramienta para soportar aplicaciones web | 1d | 2018-07-03 | 2018-07-03 | 68 | 0d |  | 5h |
| 70 | 1.1.2.1.3 | **CC - Desarrollo** | 15d | 2018-07-04 | 2018-07-24 |  | 0d |  | 60h |
| 71 | 1.1.2.1.3.1 | **CC - Modulo Catalogos Maestros** | 15d | 2018-07-04 | 2018-07-24 |  | 0d |  | 60h |
| 72 | 1.1.2.1.3.1.1 | CC - Catalogo Rol | 1d | 2018-07-04 | 2018-07-04 | 69 | 0d |  | 4h |
| 73 | 1.1.2.1.3.1.2 | CC - Catalogo Actores | 1d | 2018-07-05 | 2018-07-05 | 72 | 0d |  | 4h |
| 74 | 1.1.2.1.3.1.3 | CC - Catalogo Actores-Roles | 1d | 2018-07-06 | 2018-07-06 | 73 | 0d |  | 4h |
| 75 | 1.1.2.1.3.1.4 | CC - Catalogo Contratos | 1d | 2018-07-09 | 2018-07-09 | 74 | 0d |  | 4h |
| 76 | 1.1.2.1.3.1.5 | CC - Catalogo Tipos de Tarifa | 1d | 2018-07-10 | 2018-07-10 | 75 | 0d |  | 4h |
| 77 | 1.1.2.1.3.1.6 | CC - Catalogo Tarifa | 1d | 2018-07-11 | 2018-07-11 | 76 | 0d |  | 4h |
| 78 | 1.1.2.1.3.1.7 | CC - Catalogo Conceptos de Tarifa | 1d | 2018-07-12 | 2018-07-12 | 77 | 0d |  | 4h |
| 79 | 1.1.2.1.3.1.8 | CC - Catalogo Choferes | 1d | 2018-07-13 | 2018-07-13 | 78 | 0d |  | 4h |
| 80 | 1.1.2.1.3.1.9 | CC - Catalogo Camiones | 1d | 2018-07-16 | 2018-07-16 | 79 | 0d |  | 4h |
| 81 | 1.1.2.1.3.1.10 | CC - Catalogo Responsables de Incidencias | 1d | 2018-07-17 | 2018-07-17 | 80 | 0d |  | 4h |
| 82 | 1.1.2.1.3.1.11 | CC - Catalogo Tipos de Incidencias | 1d | 2018-07-18 | 2018-07-18 | 81 | 0d |  | 4h |
| 83 | 1.1.2.1.3.1.12 | CC - Catalogo Tipos de Viaje | 1d | 2018-07-19 | 2018-07-19 | 82 | 0d |  | 4h |
| 84 | 1.1.2.1.3.1.13 | CC - Catalogo Tipos de Carga/Descarga | 1d | 2018-07-20 | 2018-07-20 | 83 | 0d |  | 4h |
| 85 | 1.1.2.1.3.1.14 | CC - Catalogo Clientes de Entrega | 1d | 2018-07-23 | 2018-07-23 | 84 | 0d |  | 4h |
| 86 | 1.1.2.1.3.1.15 | CC - Catalogo Clientes Solicidates | 1d | 2018-07-24 | 2018-07-24 | 85 | 0d |  | 4h |

| ID | WBS | Task | Duration | Start | Finish | Predecessors | Total slack | Work |
| --- | --- | --- | --- | --- | --- | --- | --- | --- |
| 87 | 1.1.3 | **PU - Pruebas Untarias** | 15d | 2018-07-05 | 2018-07-25 |  | 14d | 30h |
| 88 | 1.1.3.1 | **PU - Modulo Catalogos Maestros** | 15d | 2018-07-05 | 2018-07-25 |  | 14d | 30h |
| 89 | 1.1.3.1.1 | PU - Catalogo Rol | 1d | 2018-07-05 | 2018-07-05 | 72 | 17d | 2h |
| 90 | 1.1.3.1.2 | PU - Catalogo Actores | 1d | 2018-07-06 | 2018-07-06 | 73 | 16d | 2h |
| 91 | 1.1.3.1.3 | PU - Catalogo Actores-Roles | 1d | 2018-07-09 | 2018-07-09 | 74 | 15d | 2h |
| 92 | 1.1.3.1.4 | PU - Catalogo Contratos | 1d | 2018-07-10 | 2018-07-10 | 75 | 14d | 2h |
| 93 | 1.1.3.1.5 | PU - Catalogo Tipos de Tarifa | 1d | 2018-07-11 | 2018-07-11 | 76 | 13d | 2h |
| 94 | 1.1.3.1.6 | PU - Catalogo Tarifa | 1d | 2018-07-12 | 2018-07-12 | 77 | 12d | 2h |
| 95 | 1.1.3.1.7 | PU - Catalogo Conceptos de Tarifa | 1d | 2018-07-13 | 2018-07-13 | 78 | 11d | 2h |
| 96 | 1.1.3.1.8 | PU - Catalogo Choferes | 1d | 2018-07-16 | 2018-07-16 | 79 | 10d | 2h |
| 97 | 1.1.3.1.9 | PU - Catalogo Camiones | 1d | 2018-07-17 | 2018-07-17 | 80 | 9d | 2h |
| 98 | 1.1.3.1.10 | PU - Catalogo Responsables de Incidencias | 1d | 2018-07-18 | 2018-07-18 | 81 | 8d | 2h |
| 99 | 1.1.3.1.11 | PU - Catalogo Tipos de Incidencias | 1d | 2018-07-19 | 2018-07-19 | 82 | 7d | 2h |
| 100 | 1.1.3.1.12 | PU - Catalogo Tipos de Viaje | 1d | 2018-07-20 | 2018-07-20 | 83 | 6d | 2h |
| 101 | 1.1.3.1.13 | PU - Catalogo Tipos de Carga/Descarga | 1d | 2018-07-23 | 2018-07-23 | 84 | 5d | 2h |
| 102 | 1.1.3.1.14 | PU - Catalogo Clientes de Entrega | 1d | 2018-07-24 | 2018-07-24 | 85 | 4d | 2h |
| 103 | 1.1.3.1.15 | PU - Catalogo Clientes Solicidates | 1d | 2018-07-25 | 2018-07-25 | 86 | 0d | 2h |
| 104 | 1.2 | LB - Liberacion Modulo 1 | 1d | 2018-07-26 | 2018-07-26 | 103 | 0d | 2h |
| 105 | 1.3 | **Modulo Seguridad** | 15d | 2018-07-27 | 2018-08-16 |  | 0d | 87h |
| 106 | 1.3.1 | **AT Analisis de Tecnico** | 6d | 2018-07-27 | 2018-08-03 |  | 0d | 39h |
| 107 | 1.3.1.1 | **IAT - Revisión de documentación entregada por Negocio** | 2d | 2018-07-27 | 2018-07-30 |  | 0d | 19h |
| 108 | 1.3.1.1.1 | AT - Requerimientos de Negocio (Junta de Entendimiento) | 1d | 2018-07-27 | 2018-07-27 | 104 | 0d | 6h |
| 109 | 1.3.1.1.2 | AT - Casos de Uso (Junta de Entendimiento) | 1d | 2018-07-30 | 2018-07-30 | 108 | 0d | 13h |
| 110 | 1.3.1.2 | **AT - Actualizacion de propuesta de Arquitectura de Solucion** | 4d | 2018-07-31 | 2018-08-03 |  | 0d | 19h |
| 111 | 1.3.1.2.1 | AT - Requerimientos tecnicos | 1d | 2018-07-31 | 2018-07-31 | 109 | 3d | 3h |
| 112 | 1.3.1.2.2 | AT - Analisis tecnico | 1d | 2018-07-31 | 2018-07-31 | 109 | 0d | 3h |
| 113 | 1.3.1.2.3 | AT - Requerimientos de solucion | 1d | 2018-08-01 | 2018-08-01 | 112 | 2d | 3h |
| 114 | 1.3.1.2.4 | AT - Escalabilidad | 1d | 2018-08-01 | 2018-08-01 | 112 | 0d | 3h |
| 115 | 1.3.1.2.5 | AT - Modelado BD | 1d | 2018-08-02 | 2018-08-02 | 114 | 1d | 3h |
| 116 | 1.3.1.2.6 | AT - Herramientas para solucion | 1d | 2018-08-02 | 2018-08-02 | 114 | 0d | 2h |
| 117 | 1.3.1.2.7 | AT - Aplicación responsiva para navegadores web | 1d | 2018-08-03 | 2018-08-03 | 116 | 10d | 2h |
| 118 | 1.3.1.3 | AT - Peer Review y Vo Bo Arquitectura de Solucion | 1d | 2018-08-03 | 2018-08-03 | 116 | 0d | 1h |

| ID | WBS | Task | Duration | Start | Finish | Predecessors | Total slack | Free slack | Work |
| --- | --- | --- | --- | --- | --- | --- | --- | --- | --- |
| 119 | 1.3.2 | **AT - Modulo Seguridad** | 4d | 2018-08-06 | 2018-08-09 |  | 0d |  | 18h |
| 120 | 1.3.2.1 | **AT - Roles** | 2d | 2018-08-06 | 2018-08-07 |  | 0d |  | 6h |
| 121 | 1.3.2.1.1 | AT - Elaboración Bocetos de Archivos | 1d | 2018-08-06 | 2018-08-06 | 118 | 0d |  | 3h |
| 122 | 1.3.2.1.2 | AT - Elaboración Bocetos de Pantallas | 1d | 2018-08-07 | 2018-08-07 | 121 | 0d |  | 3h |
| 123 | 1.3.2.2 | **AT - Configuracion** | 2d | 2018-08-06 | 2018-08-07 |  | 42d |  | 6h |
| 124 | 1.3.2.2.1 | AT - Elaboración Bocetos de Archivos | 1d | 2018-08-06 | 2018-08-06 | 118 | 8d | 0d | 3h |
| 125 | 1.3.2.2.2 | AT - Elaboración Bocetos de Pantallas | 1d | 2018-08-07 | 2018-08-07 | 124 | 8d |  | 3h |
| 126 | 1.3.2.3 | **AT - Permisos** | 2d | 2018-08-08 | 2018-08-09 |  | 0d |  | 6h |
| 127 | 1.3.2.3.1 | AT - Elaboración Bocetos de Archivos | 1d | 2018-08-08 | 2018-08-08 | 122 | 0d |  | 3h |
| 128 | 1.3.2.3.2 | AT - Elaboración Bocetos de Pantallas | 1d | 2018-08-09 | 2018-08-09 | 127 | 0d |  | 3h |
| 129 | 1.3.3 | **CC - Modulo Seguridad** | 4d | 2018-08-10 | 2018-08-15 |  | 0d |  | 24h |
| 130 | 1.3.3.1 | **Diseño y Construcción** | 1d | 2018-08-10 | 2018-08-10 |  | 0d |  | 2h |
| 131 | 1.3.3.1.1 | CC - Revision del documento de Arquitectura de Solucion | 1d | 2018-08-10 | 2018-08-10 | 128 | 0d |  | 2h |
| 132 | 1.3.3.2 | CC - Roles | 1d | 2018-08-13 | 2018-08-13 | 131 | 0d |  | 7h |
| 133 | 1.3.3.3 | CC - Configuracion | 1d | 2018-08-14 | 2018-08-14 | 132 | 0d |  | 7h |
| 134 | 1.3.3.4 | CC - Permisos | 1d | 2018-08-15 | 2018-08-15 | 133 | 0d |  | 8h |
| 135 | 1.3.4 | **PU - Modulo Seguridad** | 3d | 2018-08-14 | 2018-08-16 |  | 2d |  | 6h |
| 136 | 1.3.4.1 | PU - Roles | 1d | 2018-08-14 | 2018-08-14 | 132 | 3d |  | 2h |
| 137 | 1.3.4.2 | PU - Configuracion | 1d | 2018-08-15 | 2018-08-15 | 133 | 2d |  | 2h |
| 138 | 1.3.4.3 | PU - Permisos | 1d | 2018-08-16 | 2018-08-16 | 134 | 0d |  | 2h |
| 139 | 1.4 | LB - Liberacion Modulo 2 | 1d? | 2018-08-17 | 2018-08-17 | 138 | 0d |  | 2h |
| 140 | 1.5 | **Modulo Solicitud** | 21d | 2018-08-20 | 2018-09-17 |  | 0d |  | 149h |
| 141 | 1.5.1 | **AT Analisis de Tecnico** | 6d | 2018-08-20 | 2018-08-27 |  | 0d |  | 39h |
| 142 | 1.5.1.1 | **IAT - Revisión de documentación entregada por Negocio** | 2d | 2018-08-20 | 2018-08-21 |  | 0d |  | 19h |
| 143 | 1.5.1.1.1 | AT - Requerimientos de Negocio (Junta de Entendimiento) | 1d | 2018-08-20 | 2018-08-20 | 139 | 0d |  | 6h |
| 144 | 1.5.1.1.2 | AT - Casos de Uso (Junta de Entendimiento) | 1d | 2018-08-21 | 2018-08-21 | 143 | 32d |  | 13h |

| ID | WBS | Task | Duration | Start | Finish | Predecessors | Total slack | Free slack | Work |
| --- | --- | --- | --- | --- | --- | --- | --- | --- | --- |
| 145 | 1.5.1.2 | **AT - Actualizacion de propuesta de Arquitectura de Solucion** | 4d | 2018-08-21 | 2018-08-24 |  | 0d |  | 19h |
| 146 | 1.5.1.2.1 | AT - Requerimientos tecnicos | 1d | 2018-08-21 | 2018-08-21 | 143 | 32d |  | 3h |
| 147 | 1.5.1.2.2 | AT - Analisis tecnico | 1d | 2018-08-21 | 2018-08-21 | 143 | 0d |  | 3h |
| 148 | 1.5.1.2.3 | AT - Requerimientos de solucion | 1d | 2018-08-22 | 2018-08-22 | 147 | 31d |  | 3h |
| 149 | 1.5.1.2.4 | AT - Escalabilidad | 1d | 2018-08-22 | 2018-08-22 | 147 | 0d |  | 3h |
| 150 | 1.5.1.2.5 | AT - Modelado BD | 1d | 2018-08-23 | 2018-08-23 | 149 | 30d |  | 3h |
| 151 | 1.5.1.2.6 | AT - Herramientas para solucion | 1d | 2018-08-23 | 2018-08-23 | 149 | 0d |  | 2h |
| 152 | 1.5.1.2.7 | AT - Aplicación responsiva para navegadores web | 1d | 2018-08-24 | 2018-08-24 | 151 | 0d |  | 2h |
| 153 | 1.5.1.3 | AT - Peer Review y Vo Bo Arquitectura de Solucion | 1d | 2018-08-27 | 2018-08-27 | 152 | 28d |  | 1h |
| 154 | 1.5.2 | **AT - Modulo Solicitudes** | 6d | 2018-08-27 | 2018-09-03 |  | 0d |  | 40h |
| 155 | 1.5.2.1 | **AT - Cliente - Solicitud de Transporte** | 2d | 2018-08-27 | 2018-08-28 |  | 25d |  | 8h |
| 156 | 1.5.2.1.1 | AT - Elaboración Bocetos de Archivos | 1d | 2018-08-27 | 2018-08-27 | 152 | 25d | 0d | 4h |
| 157 | 1.5.2.1.2 | AT - Elaboración Bocetos de Pantallas | 1d | 2018-08-28 | 2018-08-28 | 156 | 25d | 0d | 4h |
| 158 | 1.5.2.2 | **AT - Trafico - Valoracion del Viaje** | 2d | 2018-08-27 | 2018-08-28 |  | 0d |  | 8h |
| 159 | 1.5.2.2.1 | AT - Elaboración Bocetos de Archivos | 1d | 2018-08-27 | 2018-08-27 | 152 | 0d |  | 4h |
| 160 | 1.5.2.2.2 | AT - Elaboración Bocetos de Pantallas | 1d | 2018-08-28 | 2018-08-28 | 159 | 0d |  | 4h |
| 161 | 1.5.2.3 | **AT - Distribucion - Asugnacion de Unidad y Carga** | 2d | 2018-08-29 | 2018-08-30 |  | 25d |  | 8h |
| 162 | 1.5.2.3.1 | AT - Elaboración Bocetos de Archivos | 1d | 2018-08-29 | 2018-08-29 | 157 | 25d | 0d | 4h |
| 163 | 1.5.2.3.2 | AT - Elaboración Bocetos de Pantallas | 1d | 2018-08-30 | 2018-08-30 | 162 | 25d |  | 4h |
| 164 | 1.5.2.4 | **AT - Operador CL - Operación y Descarga** | 2d | 2018-08-29 | 2018-08-30 |  | 0d |  | 8h |
| 165 | 1.5.2.4.1 | AT - Elaboración Bocetos de Archivos | 1d | 2018-08-29 | 2018-08-29 | 160 | 0d |  | 4h |
| 166 | 1.5.2.4.2 | AT - Elaboración Bocetos de Pantallas | 1d | 2018-08-30 | 2018-08-30 | 165 | 0d |  | 4h |
| 167 | 1.5.2.5 | **AT - Distribucion - Cierre del Viaje y Facturacion** | 2d | 2018-08-31 | 2018-09-03 |  | 0d |  | 8h |
| 168 | 1.5.2.5.1 | AT - Elaboración Bocetos de Archivos | 1d | 2018-08-31 | 2018-08-31 | 166 | 0d |  | 4h |
| 169 | 1.5.2.5.2 | AT - Elaboración Bocetos de Pantallas | 1d | 2018-09-03 | 2018-09-03 | 168 | 0d |  | 4h |

| ID | WBS | Task | Duration | Start | Finish | Predecessors | Total slack | Free slack | Work |
| --- | --- | --- | --- | --- | --- | --- | --- | --- | --- |
| 170 | 1.5.3 | **CC - Modulo Solicitudes** | 10d | 2018-09-04 | 2018-09-17 |  | 0d |  | 55h |
| 171 | 1.5.3.1 | **Diseño y Construcción** | 1d | 2018-09-04 | 2018-09-04 |  | 0d |  | 2h |
| 172 | 1.5.3.1.1 | CC - Revision del documento de Arquitectura de Solucion | 1d | 2018-09-04 | 2018-09-04 | 169 | 0d |  | 2h |
| 173 | 1.5.3.2 | CC - Cliente - Solicitud de Transporte | 1d | 2018-09-05 | 2018-09-05 | 172 | 0d |  | 7h |
| 174 | 1.5.3.3 | CC - Trafico - Valoracion del Viaje | 1d | 2018-09-06 | 2018-09-06 | 173 | 0d |  | 7h |
| 175 | 1.5.3.4 | CC - Distribucion - Asugnacion de Unidad y Carga | 1d | 2018-09-07 | 2018-09-07 | 174 | 0d |  | 7h |
| 176 | 1.5.3.5 | CC - Operador CL - Operación y Descarga | 1d | 2018-09-10 | 2018-09-10 | 175 | 0d |  | 7h |
| 177 | 1.5.3.6 | CC - Distribucion - Cierre del Viaje y Facturacion | 1d | 2018-09-11 | 2018-09-11 | 176 | 0d |  | 7h |
| 178 | 1.5.3.7 | **CC - Primer Check point operativo** | 2d | 2018-09-12 | 2018-09-13 |  | 13d |  | 9h |
| 179 | 1.5.3.7.1 | CC - Primer Check point operativo | 1d | 2018-09-12 | 2018-09-12 | 177 | 13d | 0d | 2h |
| 180 | 1.5.3.7.2 | CC - Actualizacion de los puntos del primer Ckeckpoint | 1d | 2018-09-13 | 2018-09-13 | 179 | 13d | 0d | 7h |
| 181 | 1.5.3.8 | **CC - Segundo Check point operativo** | 2d | 2018-09-14 | 2018-09-17 |  | 13d |  | 9h |
| 182 | 1.5.3.8.1 | CC - Segundo Check point operativo | 1d | 2018-09-14 | 2018-09-14 | 180 | 13d | 0d | 2h |
| 183 | 1.5.3.8.2 | CC - Actualizacion de los puntos del segundo Check point operativo | 1d | 2018-09-17 | 2018-09-17 | 182 | 13d |  | 7h |
| 184 | 1.5.4 | **PU - Modulo Solicitudes** | 5d | 2018-09-06 | 2018-09-12 |  | 4d |  | 15h |
| 185 | 1.5.4.1 | PU - Cliente - Solicitud de Transporte | 1d | 2018-09-06 | 2018-09-06 | 173 | 20d |  | 3h |
| 186 | 1.5.4.2 | PU - Trafico - Valoracion del Viaje | 1d | 2018-09-07 | 2018-09-07 | 174 | 19d |  | 3h |
| 187 | 1.5.4.3 | PU - Distribucion - Asugnacion de Unidad y Carga | 1d | 2018-09-10 | 2018-09-10 | 175 | 18d |  | 3h |
| 188 | 1.5.4.4 | PU - Operador CL - Operación y Descarga | 1d | 2018-09-11 | 2018-09-11 | 176 | 17d |  | 3h |
| 189 | 1.5.4.5 | PU - Distribucion - Cierre del Viaje y Facturacion | 1d | 2018-09-12 | 2018-09-12 | 177 | 0d |  | 3h |
| 190 | 1.6 | LB - Liberacion Modulo 2 | 1d? | 2018-09-13 | 2018-09-13 | 189 | 0d |  | 3h |
| 191 | 1.7 | **Modulo Alarmas** | 15d | 2018-09-14 | 2018-10-04 |  | 0d |  | 81h |
| 192 | 1.7.1 | **AT Analisis de Tecnico** | 6d | 2018-09-14 | 2018-09-21 |  | 0d |  | 34h |
| 193 | 1.7.1.1 | **IAT - Revisión de documentación entregada por Negocio** | 2d | 2018-09-14 | 2018-09-17 |  | 0d |  | 19h |
| 194 | 1.7.1.1.1 | AT - Requerimientos de Negocio (Junta de Entendimiento) | 1d | 2018-09-14 | 2018-09-14 | 190 | 0d |  | 6h |
| 195 | 1.7.1.1.2 | AT - Casos de Uso (Junta de Entendimiento) | 1d | 2018-09-17 | 2018-09-17 | 194 | 0d |  | 13h |

| ID | WBS | Task | Duration | Start | Finish | Predecessors | Total slack | Free slack | Work |
| --- | --- | --- | --- | --- | --- | --- | --- | --- | --- |
| 196 | 1.7.1.2 | **AT - Actualizacion de propuesta de Arquitectura de Solucion** | 4d | 2018-09-18 | 2018-09-21 |  | 0d |  | 14h |
| 197 | 1.7.1.2.1 | AT - Requerimientos tecnicos | 1d | 2018-09-18 | 2018-09-18 | 195 | 12d |  | 2h |
| 198 | 1.7.1.2.2 | AT - Analisis tecnico | 1d | 2018-09-18 | 2018-09-18 | 195 | 0d |  | 2h |
| 199 | 1.7.1.2.3 | AT - Requerimientos de solucion | 1d | 2018-09-19 | 2018-09-19 | 198 | 11d |  | 2h |
| 200 | 1.7.1.2.4 | AT - Escalabilidad | 1d | 2018-09-19 | 2018-09-19 | 198 | 0d |  | 2h |
| 201 | 1.7.1.2.5 | AT - Modelado BD | 1d | 2018-09-20 | 2018-09-20 | 200 | 10d |  | 2h |
| 202 | 1.7.1.2.6 | AT - Herramientas para solucion | 1d | 2018-09-20 | 2018-09-20 | 200 | 0d |  | 2h |
| 203 | 1.7.1.2.7 | AT - Aplicación responsiva para navegadores web | 1d | 2018-09-21 | 2018-09-21 | 202 | 9d |  | 2h |
| 204 | 1.7.1.3 | AT - Peer Review y Vo Bo Arquitectura de Solucion | 1d | 2018-09-21 | 2018-09-21 | 202 | 0d |  | 1h |
| 205 | 1.7.2 | **AT - Modulo Alarmas/Reportes/Indicadores de gestión** | 4d | 2018-09-24 | 2018-09-27 |  | 0d |  | 18h |
| 206 | 1.7.2.1 | **AT - Alarmas** | 2d | 2018-09-24 | 2018-09-25 |  | 7d |  | 6h |
| 207 | 1.7.2.1.1 | AT - Elaboración Bocetos de Archivos | 1d | 2018-09-24 | 2018-09-24 | 204 | 7d | 0d | 3h |
| 208 | 1.7.2.1.2 | AT - Elaboración Bocetos de Pantallas | 1d | 2018-09-25 | 2018-09-25 | 207 | 7d |  | 3h |
| 209 | 1.7.2.2 | **AT - Reportes** | 2d | 2018-09-24 | 2018-09-25 |  | 0d |  | 6h |
| 210 | 1.7.2.2.1 | AT - Elaboración Bocetos de Archivos | 1d | 2018-09-24 | 2018-09-24 | 204 | 0d |  | 3h |
| 211 | 1.7.2.2.2 | AT - Elaboración Bocetos de Pantallas | 1d | 2018-09-25 | 2018-09-25 | 210 | 0d |  | 3h |
| 212 | 1.7.2.3 | **AT - Indicadores de gestión** | 2d | 2018-09-26 | 2018-09-27 |  | 0d |  | 6h |
| 213 | 1.7.2.3.1 | AT - Elaboración Bocetos de Archivos | 1d | 2018-09-26 | 2018-09-26 | 211 | 0d |  | 3h |
| 214 | 1.7.2.3.2 | AT - Elaboración Bocetos de Pantallas | 1d | 2018-09-27 | 2018-09-27 | 213 | 0d |  | 3h |
| 215 | 1.7.3 | **CC - Modulo Alarmas/Reportes/Indicadores de gestión** | 4d | 2018-09-28 | 2018-10-03 |  | 0d |  | 20h |
| 216 | 1.7.3.1 | **Diseño y Construcción** | 1d | 2018-09-28 | 2018-09-28 |  | 0d |  | 2h |
| 217 | 1.7.3.1.1 | CC - Revision del documento de Arquitectura de Solucion | 1d | 2018-09-28 | 2018-09-28 | 214 | 0d |  | 2h |
| 218 | 1.7.3.2 | CC - Alarmas | 1d | 2018-10-01 | 2018-10-01 | 217 | 0d |  | 6h |
| 219 | 1.7.3.3 | CC - Reportes | 1d | 2018-10-02 | 2018-10-02 | 218 | 0d |  | 6h |
| 220 | 1.7.3.4 | CC - Indicadores de gestión | 1d | 2018-10-03 | 2018-10-03 | 219 | 0d |  | 6h |

| ID | WBS | Task | Duration | Start | Finish | Predecessors | Total slack | Work |
| --- | --- | --- | --- | --- | --- | --- | --- | --- |
| 221 | 1.7.4 | **PU - Modulo Alarmas/Reportes/Indicadores de gestión** | 3d | 2018-10-02 | 2018-10-04 |  | 0d | 9h |
| 222 | 1.7.4.1 | PU - Alarmas | 1d | 2018-10-02 | 2018-10-02 | 218 | 2d | 3h |
| 223 | 1.7.4.2 | PU - Reportes | 1d | 2018-10-03 | 2018-10-03 | 219 | 1d | 3h |
| 224 | 1.7.4.3 | PU - Indicadores de gestión | 1d | 2018-10-04 | 2018-10-04 | 220 | 0d | 3h |
| 225 | 1.8 | LB - Liberacion Modulo 3 | 1d | 2018-05-29 | 2018-05-29 |  | 92d | 2h |
