# Plan_AN_AT_CC.xls

Schedule from MS Project, 2018-05-24 to 2018-08-22, A marks actual dates.

## Calendars

- Estándar: Mon-Fri 09:00-13:00, 15:00-19:00; Sat-Sun off.

## Resources

| Resource |
| --- |
| Omar Santiago/Fernando Nava |
| ITSC |
| Omar Santiago |
| cliente |
| Fernando Nava |
| Omar Santiago/Fernando Nava/ITSC |
| Omar Santiago/ITSC |

## Schedule

| ID | WBS | Task | Duration | Start | Finish | Predecessors | Complete | Remaining | Total slack | Free slack | Resources | Work | Actual work | Text1 |
| --- | --- | --- | --- | --- | --- | --- | --- | --- | --- | --- | --- | --- | --- | --- |
| 1 | 1 | **001-ITSC_TMS Plan de Analisis y Desarrollo** | 63.11d? | 2018-05-24 A | 2018-08-21 |  |  | 62.94d? | 1d |  |  | 648.5h | 4h |  |
| 2 | 1.1 | **AN_Analisis** | 50.61d? | 2018-05-24 A | 2018-08-02 |  | 1% | 50.32d? | 13.5d |  |  | 329.5h | 4h |  |
| 3 | 1.1.1 | **AN Analisis de Negocio** | 5d | 2018-05-24 | 2018-05-30 |  |  |  | 0d |  |  | 24h |  |  |
| 4 | 1.1.1.1 | AN - Requerimientos de Negocio | 1d | 2018-05-24 | 2018-05-24 |  |  |  | 0d |  | ITSC [25%] | 2h |  |  |
| 5 | 1.1.1.2 | AN - Casos de Uso | 1d | 2018-05-25 | 2018-05-25 | 4 |  |  | 0d |  | ITSC [12.5%] | 1h |  |  |
| 6 | 1.1.1.3 | AT - Revisión interna | 1d | 2018-05-28 | 2018-05-28 | 5 |  |  | 0d |  | ITSC [12.5%] | 1h |  |  |
| 7 | 1.1.1.4 | AT - Ajustes de comentarios del usuario | 1d | 2018-05-29 | 2018-05-29 | 6 |  |  | 0d |  | ITSC [12.5%]; cliente | 9h |  |  |
| 8 | 1.1.1.5 | AT - Peer Review y Vo Bo | 1d | 2018-05-30 | 2018-05-30 | 7 |  |  | 0d |  | ITSC; Omar Santiago | 11h |  |  |
| 9 | 1.1.2 | **AT Analisis de Tecnico** | 50.61d? | 2018-05-24 A | 2018-08-02 |  | 1% | 50.3d? | 13.5d |  |  | 305.5h | 4h |  |
| 10 | 1.1.2.1 | **IAT - Revisión de documentación entregada por Negocio** | 9.44d? | 2018-05-31 | 2018-06-13 |  |  |  | 0d |  |  | 73.5h |  |  |
| 11 | 1.1.2.1.1 | AT - Requerimientos de Negocio | 1d | 2018-05-31 | 2018-05-31 | 8 |  |  | 0d |  | Omar Santiago/Fernando Nava [75%] | 6h |  | 1 Docuemnto de RN |
| 12 | 1.1.2.1.2 | AT - Casos de Uso | 8.44d? | 2018-06-01 | 2018-06-13 | 11 |  |  | 0d |  | Omar Santiago/Fernando Nava | 67.5h |  | 27 Documentos de CU |
| 13 | 1.1.2.2 | **AT - Elaboracion de propuesta de Arquitectura de Solucion** | 1d? | 2018-06-13 | 2018-06-14 | 12 |  |  | 0d |  |  | 45h |  |  |
| 14 | 1.1.2.2.1 | AT - Requerimientos tecnicos | 1d? | 2018-06-13 | 2018-06-14 |  |  |  | 0d |  | Omar Santiago [87.5%] | 7h |  |  |
| 15 | 1.1.2.2.2 | AT - Analisis tecnico | 1d? | 2018-06-13 | 2018-06-14 |  |  |  | 0d |  | Omar Santiago [87.5%] | 7h |  |  |
| 16 | 1.1.2.2.3 | AT - Requerimientos de solucion | 1d? | 2018-06-13 | 2018-06-14 |  |  |  | 0d |  | Omar Santiago [87.5%] | 7h |  |  |
| 17 | 1.1.2.2.4 | AT - Escalabilidad | 1d? | 2018-06-13 | 2018-06-14 |  |  |  | 0d |  | Omar Santiago [87.5%] | 7h |  |  |
| 18 | 1.1.2.2.5 | AT - Modelado BD | 1d? | 2018-06-13 | 2018-06-14 |  |  |  | 0d |  | Omar Santiago [87.5%] | 7h |  |  |
| 19 | 1.1.2.2.6 | AT - Herramientas para solucion | 1d? | 2018-06-13 | 2018-06-14 |  |  |  | 0d |  | Omar Santiago [62.5%] | 5h |  |  |
| 20 | 1.1.2.2.7 | AT - Aplicación responsiva para navegadores web | 1d? | 2018-06-13 | 2018-06-14 |  |  |  | 0d |  | Omar Santiago [62.5%] | 5h |  |  |
| 21 | 1.1.2.3 | AT - Peer Review y Vo Bo Arquitectura de Solucion | 1d | 2018-06-14 | 2018-06-15 | 13 |  |  | 0d |  | Omar Santiago [25%] | 2h |  |  |
| 22 | 1.1.2.4 | **AT - Elaboración de documentos AT** | 47.61d? | 2018-05-24 A | 2018-07-30 |  | 1% | 47.22d? | 16.5d |  |  | 166h | 4h |  |
| 23 | 1.1.2.4.1 | **AT - Modulo Catalogos Maestros** | 30.81d? | 2018-05-24 A | 2018-07-05 |  | 1% | 30.36d? | 33.3d |  |  | 90h | 4h |  |
| 24 | 1.1.2.4.1.1 | **AT - Catalogo Rol** | 2.4d | 2018-06-15 | 2018-06-19 |  |  |  | 43.27d |  |  | 6h |  |  |
| 25 | 1.1.2.4.1.1.1 | AT - Elaboración Bocetos de Archivos | 1.2d | 2018-06-15 | 2018-06-18 | 21 |  |  | 38.77d | 0d | Fernando Nava [31.2%] | 3h |  |  |
| 26 | 1.1.2.4.1.1.2 | AT - Elaboración Bocetos de Pantallas | 1.2d | 2018-06-18 | 2018-06-19 | 25 |  |  | 38.77d | 0d | Fernando Nava [31.2%] | 3h |  |  |

| ID | WBS | Task | Duration | Start | Finish | Predecessors | Total slack | Free slack | Resources | Work |
| --- | --- | --- | --- | --- | --- | --- | --- | --- | --- | --- |
| 27 | 1.1.2.4.1.2 | **AT - Catalogo Actores** | 0.75d? | 2018-06-15 | 2018-06-18 |  | 0d |  |  | 6h |
| 28 | 1.1.2.4.1.2.1 | AT - Elaboración Bocetos de Archivos | 0.38d? | 2018-06-15 | 2018-06-15 | 21 | 0d |  | Fernando Nava | 3h |
| 29 | 1.1.2.4.1.2.2 | AT - Elaboración Bocetos de Pantallas | 0.38d? | 2018-06-15 | 2018-06-18 | 28 | 0d |  | Fernando Nava | 3h |
| 30 | 1.1.2.4.1.3 | **AT - Catalogo Actores-Roles** | 2.4d? | 2018-06-18 | 2018-06-20 |  | 42.52d |  |  | 6h |
| 31 | 1.1.2.4.1.3.1 | AT - Elaboración Bocetos de Archivos | 1.2d? | 2018-06-18 | 2018-06-19 | 29 | 38.02d | 0d | Fernando Nava [31.2%] | 3h |
| 32 | 1.1.2.4.1.3.2 | AT - Elaboración Bocetos de Pantallas | 1.2d? | 2018-06-19 | 2018-06-20 | 31 | 38.02d | 0d | Fernando Nava [31.2%] | 3h |
| 33 | 1.1.2.4.1.4 | **AT - Catalogo Contratos** | 2.4d? | 2018-06-18 | 2018-06-20 |  | 0d |  |  | 6h |
| 34 | 1.1.2.4.1.4.1 | AT - Elaboración Bocetos de Archivos | 1.2d? | 2018-06-18 | 2018-06-19 | 29 | 0d |  | Fernando Nava [31.2%] | 3h |
| 35 | 1.1.2.4.1.4.2 | AT - Elaboración Bocetos de Pantallas | 1.2d? | 2018-06-19 | 2018-06-20 | 34 | 0d |  | Fernando Nava [31.2%] | 3h |
| 36 | 1.1.2.4.1.5 | **AT - Catalogo Tipos de Tarifa** | 2.4d? | 2018-06-20 | 2018-06-22 |  | 40.12d |  |  | 6h |
| 37 | 1.1.2.4.1.5.1 | AT - Elaboración Bocetos de Archivos | 1.2d? | 2018-06-20 | 2018-06-21 | 35 | 35.62d | 0d | Fernando Nava [31.2%] | 3h |
| 38 | 1.1.2.4.1.5.2 | AT - Elaboración Bocetos de Pantallas | 1.2d? | 2018-06-21 | 2018-06-22 | 37 | 35.62d | 0d | Fernando Nava [31.2%] | 3h |
| 39 | 1.1.2.4.1.6 | **AT - Catalogo Tarifa** | 2.4d? | 2018-06-20 | 2018-06-22 |  | 0d |  |  | 6h |
| 40 | 1.1.2.4.1.6.1 | AT - Elaboración Bocetos de Archivos | 1.2d? | 2018-06-20 | 2018-06-21 | 35 | 0d |  | Fernando Nava [31.2%] | 3h |
| 41 | 1.1.2.4.1.6.2 | AT - Elaboración Bocetos de Pantallas | 1.2d? | 2018-06-21 | 2018-06-22 | 40 | 0d |  | Fernando Nava [31.2%] | 3h |
| 42 | 1.1.2.4.1.7 | **AT - Catalogo Conceptos de Tarifa** | 2.4d? | 2018-06-22 | 2018-06-27 |  | 0d |  |  | 6h |
| 43 | 1.1.2.4.1.7.1 | AT - Elaboración Bocetos de Archivos | 1.2d? | 2018-06-22 | 2018-06-26 | 41 | 0d |  | Fernando Nava [31.2%] | 3h |
| 44 | 1.1.2.4.1.7.2 | AT - Elaboración Bocetos de Pantallas | 1.2d? | 2018-06-26 | 2018-06-27 | 43 | 33.23d | 0d | Fernando Nava [31.2%] | 3h |
| 45 | 1.1.2.4.1.8 | **AT - Catalogo Choferes** | 2.4d? | 2018-06-22 | 2018-06-27 |  | 1.2d |  |  | 6h |
| 46 | 1.1.2.4.1.8.1 | AT - Elaboración Bocetos de Archivos | 1.2d? | 2018-06-22 | 2018-06-26 | 41 | 36.42d |  | Fernando Nava [31.2%] | 3h |
| 47 | 1.1.2.4.1.8.2 | AT - Elaboración Bocetos de Pantallas | 1.2d? | 2018-06-26 | 2018-06-27 | 43 | 0d |  | Fernando Nava [31.2%] | 3h |
| 48 | 1.1.2.4.1.9 | **AT - Catalogo Camiones** | 2.4d? | 2018-06-27 | 2018-06-29 |  | 35.33d |  |  | 6h |
| 49 | 1.1.2.4.1.9.1 | AT - Elaboración Bocetos de Archivos | 1.2d? | 2018-06-27 | 2018-06-28 | 47 | 30.82d | 0d | Fernando Nava [31.2%] | 3h |
| 50 | 1.1.2.4.1.9.2 | AT - Elaboración Bocetos de Pantallas | 1.2d? | 2018-06-28 | 2018-06-29 | 49 | 30.82d | 0d | Fernando Nava [31.2%] | 3h |

| ID | WBS | Task | Duration | Start | Finish | Predecessors | Complete | Remaining | Total slack | Free slack | Resources | Work | Actual work |
| --- | --- | --- | --- | --- | --- | --- | --- | --- | --- | --- | --- | --- | --- |
| 51 | 1.1.2.4.1.10 | **AT - Catalogo Responsables de Incidencias** | 26.01d? | 2018-05-24 A | 2018-06-29 |  | 24% | 19.89d? | 0d |  |  | 6h | 4h |
| 52 | 1.1.2.4.1.10.1 | AT - Elaboración Bocetos de Archivos | 1.06d? | 2018-05-24 A | 2018-06-28 | 47 | 24% | 0.81d? | 0d |  | Fernando Nava | 3h | 2h |
| 53 | 1.1.2.4.1.10.2 | AT - Elaboración Bocetos de Pantallas | 1.06d? | 2018-05-24 A | 2018-06-29 | 52 | 24% | 0.81d? | 0d |  | Fernando Nava | 3h | 2h |
| 54 | 1.1.2.4.1.11 | **AT - Catalogo Tipos de Incidencias** | 2.4d? | 2018-06-29 | 2018-07-03 |  |  |  | 33.7d |  |  | 6h |  |
| 55 | 1.1.2.4.1.11.1 | AT - Elaboración Bocetos de Archivos | 1.2d? | 2018-06-29 | 2018-07-02 | 53 |  |  | 29.2d | 0d | Fernando Nava [31.2%] | 3h |  |
| 56 | 1.1.2.4.1.11.2 | AT - Elaboración Bocetos de Pantallas | 1.2d? | 2018-07-02 | 2018-07-03 | 55 |  |  | 29.2d | 0d | Fernando Nava [31.2%] | 3h |  |
| 57 | 1.1.2.4.1.12 | **AT - Catalogo Tipos de Viaje** | 2.4d? | 2018-06-29 | 2018-07-03 |  |  |  | 0d |  |  | 6h |  |
| 58 | 1.1.2.4.1.12.1 | AT - Elaboración Bocetos de Archivos | 1.2d? | 2018-06-29 | 2018-07-02 | 53 |  |  | 0d |  | Fernando Nava [31.2%] | 3h |  |
| 59 | 1.1.2.4.1.12.2 | AT - Elaboración Bocetos de Pantallas | 1.2d? | 2018-07-02 | 2018-07-03 | 58 |  |  | 0d |  | Fernando Nava [31.2%] | 3h |  |
| 60 | 1.1.2.4.1.13 | **AT - Catalogo Tipos de Carga/Descarga** | 2.4d? | 2018-07-03 | 2018-07-05 |  |  |  | 31.3d |  |  | 6h |  |
| 61 | 1.1.2.4.1.13.1 | AT - Elaboración Bocetos de Archivos | 1.2d? | 2018-07-03 | 2018-07-04 | 59 |  |  | 26.8d | 0d | Fernando Nava [31.2%] | 3h |  |
| 62 | 1.1.2.4.1.13.2 | AT - Elaboración Bocetos de Pantallas | 1.2d? | 2018-07-04 | 2018-07-05 | 61 |  |  | 26.8d | 0d | Fernando Nava [31.2%] | 3h |  |
| 63 | 1.1.2.4.1.14 | **AT - Catalogo Clientes de Entrega** | 2.4d? | 2018-07-03 | 2018-07-05 |  |  |  | 31.3d |  |  | 6h |  |
| 64 | 1.1.2.4.1.14.1 | AT - Elaboración Bocetos de Archivos | 1.2d? | 2018-07-03 | 2018-07-04 | 59 |  |  | 26.8d | 0d | Fernando Nava [31.2%] | 3h |  |
| 65 | 1.1.2.4.1.14.2 | AT - Elaboración Bocetos de Pantallas | 1.2d? | 2018-07-04 | 2018-07-05 | 64 |  |  | 26.8d | 0d | Fernando Nava [31.2%] | 3h |  |
| 66 | 1.1.2.4.1.15 | **AT - Catalogo Clientes Solicidates** | 2.4d? | 2018-07-03 | 2018-07-05 |  |  |  | 0d |  |  | 6h |  |
| 67 | 1.1.2.4.1.15.1 | AT - Elaboración Bocetos de Archivos | 1.2d? | 2018-07-03 | 2018-07-04 | 59 |  |  | 0d |  | Fernando Nava [31.2%] | 3h |  |
| 68 | 1.1.2.4.1.15.2 | AT - Elaboración Bocetos de Pantallas | 1.2d? | 2018-07-04 | 2018-07-05 | 67 |  |  | 0d |  | Fernando Nava [31.2%] | 3h |  |
| 69 | 1.1.2.4.2 | **AT - Modulo Seguridad** | 4.8d? | 2018-07-05 | 2018-07-12 |  |  |  | 0d |  |  | 18h |  |
| 70 | 1.1.2.4.2.1 | **AT - Roles** | 2.4d? | 2018-07-05 | 2018-07-10 |  |  |  | 28.15d |  |  | 6h |  |
| 71 | 1.1.2.4.2.1.1 | AT - Elaboración Bocetos de Archivos | 1.2d? | 2018-07-05 | 2018-07-09 | 68 |  |  | 24.4d | 0d | Fernando Nava [31.2%] | 3h |  |
| 72 | 1.1.2.4.2.1.2 | AT - Elaboración Bocetos de Pantallas | 1.2d? | 2018-07-09 | 2018-07-10 | 71 |  |  | 24.4d | 0d | Fernando Nava [31.2%] | 3h |  |
| 73 | 1.1.2.4.2.2 | **AT - Configuracion** | 2.4d? | 2018-07-05 | 2018-07-10 |  |  |  | 0d |  |  | 6h |  |
| 74 | 1.1.2.4.2.2.1 | AT - Elaboración Bocetos de Archivos | 1.2d? | 2018-07-05 | 2018-07-09 | 68 |  |  | 0d |  | Fernando Nava [31.2%] | 3h |  |
| 75 | 1.1.2.4.2.2.2 | AT - Elaboración Bocetos de Pantallas | 1.2d? | 2018-07-09 | 2018-07-10 | 74 |  |  | 0d |  | Fernando Nava [31.2%] | 3h |  |

| ID | WBS | Task | Duration | Start | Finish | Predecessors | Total slack | Free slack | Resources | Work |
| --- | --- | --- | --- | --- | --- | --- | --- | --- | --- | --- |
| 76 | 1.1.2.4.2.3 | **AT - Permisos** | 2.4d? | 2018-07-10 | 2018-07-12 |  | 0d |  |  | 6h |
| 77 | 1.1.2.4.2.3.1 | AT - Elaboración Bocetos de Archivos | 1.2d? | 2018-07-10 | 2018-07-11 | 75 | 0d |  | Fernando Nava [31.2%] | 3h |
| 78 | 1.1.2.4.2.3.2 | AT - Elaboración Bocetos de Pantallas | 1.2d? | 2018-07-11 | 2018-07-12 | 77 | 0d |  | Fernando Nava [31.2%] | 3h |
| 79 | 1.1.2.4.3 | **AT - Modulo Solicitudes** | 8d? | 2018-07-12 | 2018-07-24 |  | 0d |  |  | 40h |
| 80 | 1.1.2.4.3.1 | **AT - Cliente - Solicitud de Transporte** | 2.67d? | 2018-07-12 | 2018-07-17 |  | 23.83d |  |  | 8h |
| 81 | 1.1.2.4.3.1.1 | AT - Elaboración Bocetos de Archivos | 1.33d? | 2018-07-12 | 2018-07-13 | 78 | 19.33d | 0d | Fernando Nava [37.5%] | 4h |
| 82 | 1.1.2.4.3.1.2 | AT - Elaboración Bocetos de Pantallas | 1.33d? | 2018-07-13 | 2018-07-17 | 81 | 19.33d | 0d | Fernando Nava [37.5%] | 4h |
| 83 | 1.1.2.4.3.2 | **AT - Trafico - Valoracion del Viaje** | 2.67d? | 2018-07-12 | 2018-07-17 |  | 0d |  |  | 8h |
| 84 | 1.1.2.4.3.2.1 | AT - Elaboración Bocetos de Archivos | 1.33d? | 2018-07-12 | 2018-07-13 | 78 | 0d |  | Fernando Nava [37.5%] | 4h |
| 85 | 1.1.2.4.3.2.2 | AT - Elaboración Bocetos de Pantallas | 1.33d? | 2018-07-13 | 2018-07-17 | 84 | 0d |  | Fernando Nava [37.5%] | 4h |
| 86 | 1.1.2.4.3.3 | **AT - Distribucion - Asugnacion de Unidad y Carga** | 2.67d? | 2018-07-17 | 2018-07-19 |  | 21.17d |  |  | 8h |
| 87 | 1.1.2.4.3.3.1 | AT - Elaboración Bocetos de Archivos | 1.33d? | 2018-07-17 | 2018-07-18 | 85 | 16.67d | 0d | Fernando Nava [37.5%] | 4h |
| 88 | 1.1.2.4.3.3.2 | AT - Elaboración Bocetos de Pantallas | 1.33d? | 2018-07-18 | 2018-07-19 | 87 | 16.67d | 0d | Fernando Nava [37.5%] | 4h |
| 89 | 1.1.2.4.3.4 | **AT - Operador CL - Operación y Descarga** | 2.67d? | 2018-07-17 | 2018-07-19 |  | 0d |  |  | 8h |
| 90 | 1.1.2.4.3.4.1 | AT - Elaboración Bocetos de Archivos | 1.33d? | 2018-07-17 | 2018-07-18 | 85 | 0d |  | Fernando Nava [37.5%] | 4h |
| 91 | 1.1.2.4.3.4.2 | AT - Elaboración Bocetos de Pantallas | 1.33d? | 2018-07-18 | 2018-07-19 | 90 | 0d |  | Fernando Nava [37.5%] | 4h |
| 92 | 1.1.2.4.3.5 | **AT - Distribucion - Cierre del Viaje y Facturacion** | 2.67d? | 2018-07-19 | 2018-07-24 |  | 0d |  |  | 8h |
| 93 | 1.1.2.4.3.5.1 | AT - Elaboración Bocetos de Archivos | 1.33d? | 2018-07-19 | 2018-07-23 | 91 | 0d |  | Fernando Nava [37.5%] | 4h |
| 94 | 1.1.2.4.3.5.2 | AT - Elaboración Bocetos de Pantallas | 1.33d? | 2018-07-23 | 2018-07-24 | 93 | 0d |  | Fernando Nava [37.5%] | 4h |
| 95 | 1.1.2.4.4 | **AT - Modulo Alarmas/Reportes/Indicadores de gestión** | 4d? | 2018-07-24 | 2018-07-30 |  | 0d |  |  | 18h |
| 96 | 1.1.2.4.4.1 | **AT - Alarmas** | 2d? | 2018-07-24 | 2018-07-26 |  | 16.5d |  |  | 6h |
| 97 | 1.1.2.4.4.1.1 | AT - Elaboración Bocetos de Archivos | 1d? | 2018-07-24 | 2018-07-25 | 94 | 12d | 0d | Fernando Nava [37.5%] | 3h |
| 98 | 1.1.2.4.4.1.2 | AT - Elaboración Bocetos de Pantallas | 1d? | 2018-07-25 | 2018-07-26 | 97 | 12d | 0d | Fernando Nava [37.5%] | 3h |
| 99 | 1.1.2.4.4.2 | **AT - Reportes** | 2d? | 2018-07-24 | 2018-07-26 |  | 0d |  |  | 6h |
| 100 | 1.1.2.4.4.2.1 | AT - Elaboración Bocetos de Archivos | 1d? | 2018-07-24 | 2018-07-25 | 94 | 0d |  | Fernando Nava [37.5%] | 3h |
| 101 | 1.1.2.4.4.2.2 | AT - Elaboración Bocetos de Pantallas | 1d? | 2018-07-25 | 2018-07-26 | 100 | 0d |  | Fernando Nava [37.5%] | 3h |

| ID | WBS | Task | Duration | Start | Finish | Predecessors | Total slack | Free slack | Resources | Work |
| --- | --- | --- | --- | --- | --- | --- | --- | --- | --- | --- |
| 102 | 1.1.2.4.4.3 | **AT - Indicadores de gestión** | 2d? | 2018-07-26 | 2018-07-30 |  | 0d |  |  | 6h |
| 103 | 1.1.2.4.4.3.1 | AT - Elaboración Bocetos de Archivos | 1d? | 2018-07-26 | 2018-07-27 | 101 | 0d |  | Fernando Nava [37.5%] | 3h |
| 104 | 1.1.2.4.4.3.2 | AT - Elaboración Bocetos de Pantallas | 1d? | 2018-07-27 | 2018-07-30 | 103 | 0d |  | Fernando Nava [37.5%] | 3h |
| 105 | 1.1.2.5 | AT - Revisión con el usuario | 1d? | 2018-07-30 | 2018-07-31 | 78, 94, 104 | 12.5d | 0d | Omar Santiago/Fernando Nava/ITSC | 8h |
| 106 | 1.1.2.6 | AT - Ajustes de comentarios del usuario | 1d? | 2018-07-31 | 2018-08-01 | 105 | 12.5d | 0d | Omar Santiago/Fernando Nava [37.5%] | 3h |
| 107 | 1.1.2.7 | AT - Peer Review y Vo Bo | 1d? | 2018-08-01 | 2018-08-02 | 106 | 12.5d | 0d | Omar Santiago/Fernando Nava/ITSC | 8h |
| 108 | 1.2 | Validacion de documentacion, ultimos ajustes | 1d? | 2018-08-02 | 2018-08-03 | 107 | 12.5d |  | Omar Santiago/Fernando Nava [75%] | 6h |
| 109 | 1.3 | **CC_Desarrollo** | 46.67d? | 2018-06-15 | 2018-08-21 |  | 1d |  |  | 313h |
| 110 | 1.3.1 | **Diseño y Construcción** | 45.67d? | 2018-06-15 | 2018-08-20 |  | 2d |  |  | 311h |
| 111 | 1.3.1.1 | CC - Revision del documento de Arquitectura de Solucion | 1d? | 2018-06-15 | 2018-06-18 | 21 | 40.17d | 0d | Omar Santiago [37.5%] | 3h |
| 112 | 1.3.1.2 | **CC - Instalacion y Configuracion** | 4.67d? | 2018-06-18 | 2018-06-25 |  | 42.01d |  |  | 23h |
| 113 | 1.3.1.2.1 | CC - Instalacion de herramientas de desarrollo | 3d? | 2018-06-18 | 2018-06-21 | 111 | 43.67d |  | Omar Santiago [37.5%] | 9h |
| 114 | 1.3.1.2.2 | CC - Instalacion de herramientas de gestion de Bases de Datos | 3d? | 2018-06-18 | 2018-06-21 | 111 | 42.01d | 0d | Omar Santiago [37.5%] | 9h |
| 115 | 1.3.1.2.3 | CC - Instalacion de herramienta para soportar aplicaciones web | 1.67d? | 2018-06-21 | 2018-06-25 | 114 | 42.01d |  | Omar Santiago [37.5%] | 5h |
| 116 | 1.3.1.3 | **CC - Desarrollo** | 31.43d? | 2018-06-18 | 2018-07-31 |  | 15.5d |  |  | 153h |
| 117 | 1.3.1.3.1 | **CC - Modulo Catalogos Maestros** | 14.62d? | 2018-06-18 | 2018-07-06 |  | 32.05d |  |  | 60h |
| 118 | 1.3.1.3.1.1 | CC - Catalogo Rol | 1d? | 2018-06-19 | 2018-06-20 | 26 | 43.27d | 0d | Omar Santiago [50%] | 4h |
| 119 | 1.3.1.3.1.2 | CC - Catalogo Actores | 1d? | 2018-06-18 | 2018-06-19 | 29 | 45.67d | 0d | Omar Santiago [50%] | 4h |
| 120 | 1.3.1.3.1.3 | CC - Catalogo Actores-Roles | 1d? | 2018-06-20 | 2018-06-21 | 32 | 42.52d | 0d | Omar Santiago [50%] | 4h |
| 121 | 1.3.1.3.1.4 | CC - Catalogo Contratos | 1d? | 2018-06-20 | 2018-06-21 | 35 | 42.52d | 0d | Omar Santiago [50%] | 4h |
| 122 | 1.3.1.3.1.5 | CC - Catalogo Tipos de Tarifa | 1d? | 2018-06-22 | 2018-06-25 | 38 | 40.12d | 0d | Omar Santiago [50%] | 4h |
| 123 | 1.3.1.3.1.6 | CC - Catalogo Tarifa | 1d? | 2018-06-22 | 2018-06-25 | 41 | 40.12d | 0d | Omar Santiago [50%] | 4h |
| 124 | 1.3.1.3.1.7 | CC - Catalogo Conceptos de Tarifa | 1d? | 2018-06-27 | 2018-06-28 | 44 | 37.73d | 0d | Omar Santiago [50%] | 4h |
| 125 | 1.3.1.3.1.8 | CC - Catalogo Choferes | 1d? | 2018-06-27 | 2018-06-28 | 47 | 37.73d | 0d | Omar Santiago [50%] | 4h |
| 126 | 1.3.1.3.1.9 | CC - Catalogo Camiones | 1d? | 2018-06-29 | 2018-07-02 | 50 | 35.33d | 0d | Omar Santiago [50%] | 4h |
| 127 | 1.3.1.3.1.10 | CC - Catalogo Responsables de Incidencias | 1d? | 2018-06-29 | 2018-07-02 | 53 | 36.1d | 0d | Omar Santiago [50%] | 4h |
| 128 | 1.3.1.3.1.11 | CC - Catalogo Tipos de Incidencias | 1d? | 2018-07-03 | 2018-07-04 | 56 | 33.7d | 0d | Omar Santiago [50%] | 4h |
| 129 | 1.3.1.3.1.12 | CC - Catalogo Tipos de Viaje | 1d? | 2018-07-03 | 2018-07-04 | 59 | 33.7d | 0d | Omar Santiago [50%] | 4h |
| 130 | 1.3.1.3.1.13 | CC - Catalogo Tipos de Carga/Descarga | 1d? | 2018-07-05 | 2018-07-06 | 62 | 31.3d | 0d | Omar Santiago [50%] | 4h |
| 131 | 1.3.1.3.1.14 | CC - Catalogo Clientes de Entrega | 1d? | 2018-07-05 | 2018-07-06 | 65 | 31.3d | 0d | Omar Santiago [50%] | 4h |
| 132 | 1.3.1.3.1.15 | CC - Catalogo Clientes Solicidates | 1d? | 2018-07-05 | 2018-07-06 | 68 | 31.3d | 0d | Omar Santiago [50%] | 4h |

| ID | WBS | Task | Duration | Start | Finish | Predecessors | Total slack | Free slack | Resources | Work |
| --- | --- | --- | --- | --- | --- | --- | --- | --- | --- | --- |
| 133 | 1.3.1.3.2 | **CC - Modulo Seguridad** | 4.4d? | 2018-07-10 | 2018-07-16 |  | 25.5d |  |  | 22h |
| 134 | 1.3.1.3.2.1 | CC - Roles | 1.75d? | 2018-07-10 | 2018-07-11 | 72 | 28.15d | 0d | Omar Santiago [50%] | 7h |
| 135 | 1.3.1.3.2.2 | CC - Configuracion | 1.75d? | 2018-07-10 | 2018-07-11 | 75 | 28.15d | 0d | Omar Santiago [50%] | 7h |
| 136 | 1.3.1.3.2.3 | CC - Permisos | 2d? | 2018-07-12 | 2018-07-16 | 78 | 25.5d | 0d | Omar Santiago [50%] | 8h |
| 137 | 1.3.1.3.3 | **CC - Modulo Solicitudes** | 9.49d? | 2018-07-17 | 2018-07-30 |  | 16.34d |  |  | 53h |
| 138 | 1.3.1.3.3.1 | CC - Cliente - Solicitud de Transporte | 1d? | 2018-07-17 | 2018-07-18 | 82 | 23.83d | 0d | Omar Santiago [87.5%] | 7h |
| 139 | 1.3.1.3.3.2 | CC - Trafico - Valoracion del Viaje | 1d? | 2018-07-17 | 2018-07-18 | 85 | 23.83d | 0d | Omar Santiago [87.5%] | 7h |
| 140 | 1.3.1.3.3.3 | CC - Distribucion - Asugnacion de Unidad y Carga | 1d? | 2018-07-19 | 2018-07-20 | 88 | 21.17d | 0d | Omar Santiago [87.5%] | 7h |
| 141 | 1.3.1.3.3.4 | CC - Operador CL - Operación y Descarga | 1d? | 2018-07-19 | 2018-07-20 | 91 | 21.17d | 0d | Omar Santiago [87.5%] | 7h |
| 142 | 1.3.1.3.3.5 | CC - Distribucion - Cierre del Viaje y Facturacion | 1d? | 2018-07-24 | 2018-07-25 | 94 | 16.34d | 0d | Omar Santiago [87.5%] | 7h |
| 143 | 1.3.1.3.3.6 | **CC - Primer Check point operativo** | 2d? | 2018-07-25 | 2018-07-27 |  | 16.34d |  |  | 9h |
| 144 | 1.3.1.3.3.6.1 | CC - Primer Check point operativo | 1d? | 2018-07-25 | 2018-07-26 | 142 | 16.34d | 0d | Omar Santiago/ITSC [25%] | 2h |
| 145 | 1.3.1.3.3.6.2 | CC - Actualizacion de los puntos del primer Ckeckpoint | 1d? | 2018-07-26 | 2018-07-27 | 144 | 16.34d | 0d | Omar Santiago/ITSC [87.5%] | 7h |
| 146 | 1.3.1.3.3.7 | **CC - Segundo Check point operativo** | 1.16d? | 2018-07-27 | 2018-07-30 |  | 16.34d |  |  | 9h |
| 147 | 1.3.1.3.3.7.1 | CC - Segundo Check point operativo | 0.29d? | 2018-07-27 | 2018-07-27 | 145 | 16.34d | 0d | Omar Santiago/ITSC [87.5%] | 2h |
| 148 | 1.3.1.3.3.7.2 | CC - Actualizacion de los puntos del segundo Check point operativo | 0.88d? | 2018-07-27 | 2018-07-30 | 147 | 16.34d |  | Omar Santiago/ITSC | 7h |
| 149 | 1.3.1.3.4 | **CC - Modulo Alarmas/Reportes/Indicadores de gestión** | 3d? | 2018-07-26 | 2018-07-31 |  | 2d |  |  | 18h |
| 150 | 1.3.1.3.4.1 | CC - Alarmas | 1d? | 2018-07-26 | 2018-07-27 | 98 | 16.5d | 0d | Omar Santiago [75%] | 6h |
| 151 | 1.3.1.3.4.2 | CC - Reportes | 1d? | 2018-07-26 | 2018-07-27 | 101 | 16.5d | 0d | Omar Santiago [75%] | 6h |
| 152 | 1.3.1.3.4.3 | CC - Indicadores de gestión | 1d? | 2018-07-30 | 2018-07-31 | 104 | 0d |  | Omar Santiago [75%] | 6h |
| 153 | 1.3.1.4 | **PU - Pruebas Untarias** | 31.43d? | 2018-06-19 | 2018-08-01 |  | 14.5d |  |  | 60h |
| 154 | 1.3.1.4.1 | **PU - Modulo Catalogos Maestros** | 14.62d? | 2018-06-19 | 2018-07-09 |  | 31.3d |  |  | 30h |
| 155 | 1.3.1.4.1.1 | PU - Catalogo Rol | 1d? | 2018-06-20 | 2018-06-21 | 118 | 38.77d |  | Omar Santiago/Fernando Nava [25%] | 2h |
| 156 | 1.3.1.4.1.2 | PU - Catalogo Actores | 0.25d? | 2018-06-19 | 2018-06-19 | 119 | 41.17d |  | Omar Santiago/Fernando Nava | 2h |
| 157 | 1.3.1.4.1.3 | PU - Catalogo Actores-Roles | 1d? | 2018-06-21 | 2018-06-22 | 120 | 38.02d |  | Omar Santiago/Fernando Nava [25%] | 2h |
| 158 | 1.3.1.4.1.4 | PU - Catalogo Contratos | 1d? | 2018-06-21 | 2018-06-22 | 121 | 38.02d |  | Omar Santiago/Fernando Nava [25%] | 2h |
| 159 | 1.3.1.4.1.5 | PU - Catalogo Tipos de Tarifa | 1d? | 2018-06-25 | 2018-06-26 | 122 | 35.62d |  | Omar Santiago/Fernando Nava [25%] | 2h |
| 160 | 1.3.1.4.1.6 | PU - Catalogo Tarifa | 1d? | 2018-06-25 | 2018-06-26 | 123 | 35.62d |  | Omar Santiago/Fernando Nava [25%] | 2h |
| 161 | 1.3.1.4.1.7 | PU - Catalogo Conceptos de Tarifa | 1d? | 2018-06-28 | 2018-06-29 | 124 | 33.23d |  | Omar Santiago/Fernando Nava [25%] | 2h |
| 162 | 1.3.1.4.1.8 | PU - Catalogo Choferes | 1d? | 2018-06-28 | 2018-06-29 | 125 | 33.23d |  | Omar Santiago/Fernando Nava [25%] | 2h |
| 163 | 1.3.1.4.1.9 | PU - Catalogo Camiones | 1d? | 2018-07-02 | 2018-07-03 | 126 | 30.82d |  | Omar Santiago/Fernando Nava [25%] | 2h |
| 164 | 1.3.1.4.1.10 | PU - Catalogo Responsables de Incidencias | 1d? | 2018-07-02 | 2018-07-03 | 127 | 31.6d |  | Omar Santiago/Fernando Nava [25%] | 2h |
| 165 | 1.3.1.4.1.11 | PU - Catalogo Tipos de Incidencias | 1d? | 2018-07-04 | 2018-07-05 | 128 | 29.2d |  | Omar Santiago/Fernando Nava [25%] | 2h |
| 166 | 1.3.1.4.1.12 | PU - Catalogo Tipos de Viaje | 1d? | 2018-07-04 | 2018-07-05 | 129 | 29.2d |  | Omar Santiago/Fernando Nava [25%] | 2h |
| 167 | 1.3.1.4.1.13 | PU - Catalogo Tipos de Carga/Descarga | 1d? | 2018-07-06 | 2018-07-09 | 130 | 26.8d |  | Omar Santiago/Fernando Nava [25%] | 2h |
| 168 | 1.3.1.4.1.14 | PU - Catalogo Clientes de Entrega | 1d? | 2018-07-06 | 2018-07-09 | 131 | 26.8d |  | Omar Santiago/Fernando Nava [25%] | 2h |
| 169 | 1.3.1.4.1.15 | PU - Catalogo Clientes Solicidates | 1d? | 2018-07-06 | 2018-07-09 | 132 | 26.8d |  | Omar Santiago/Fernando Nava [25%] | 2h |

| ID | WBS | Task | Duration | Start | Finish | Predecessors | Total slack | Resources | Work |
| --- | --- | --- | --- | --- | --- | --- | --- | --- | --- |
| 170 | 1.3.1.4.2 | **PU - Modulo Seguridad** | 3.65d? | 2018-07-11 | 2018-07-17 |  | 25.5d |  | 6h |
| 171 | 1.3.1.4.2.1 | PU - Roles | 1d? | 2018-07-11 | 2018-07-12 | 134 | 23.65d | Omar Santiago/Fernando Nava [25%] | 2h |
| 172 | 1.3.1.4.2.2 | PU - Configuracion | 1d? | 2018-07-11 | 2018-07-12 | 135 | 23.65d | Omar Santiago/Fernando Nava [25%] | 2h |
| 173 | 1.3.1.4.2.3 | PU - Permisos | 1d? | 2018-07-16 | 2018-07-17 | 136 | 21d | Omar Santiago/Fernando Nava [25%] | 2h |
| 174 | 1.3.1.4.3 | **PU - Modulo Solicitudes** | 6.33d? | 2018-07-18 | 2018-07-26 |  | 18.5d |  | 15h |
| 175 | 1.3.1.4.3.1 | PU - Cliente - Solicitud de Transporte | 1d? | 2018-07-18 | 2018-07-19 | 138 | 19.33d | Omar Santiago/Fernando Nava [37.5%] | 3h |
| 176 | 1.3.1.4.3.2 | PU - Trafico - Valoracion del Viaje | 1d? | 2018-07-18 | 2018-07-19 | 139 | 19.33d | Omar Santiago/Fernando Nava [37.5%] | 3h |
| 177 | 1.3.1.4.3.3 | PU - Distribucion - Asugnacion de Unidad y Carga | 1d? | 2018-07-20 | 2018-07-23 | 140 | 16.67d | Omar Santiago/Fernando Nava [37.5%] | 3h |
| 178 | 1.3.1.4.3.4 | PU - Operador CL - Operación y Descarga | 1d? | 2018-07-20 | 2018-07-23 | 141 | 16.67d | Omar Santiago/Fernando Nava [37.5%] | 3h |
| 179 | 1.3.1.4.3.5 | PU - Distribucion - Cierre del Viaje y Facturacion | 1d? | 2018-07-25 | 2018-07-26 | 142 | 14d | Omar Santiago/Fernando Nava [37.5%] | 3h |
| 180 | 1.3.1.4.4 | **PU - Modulo Alarmas/Reportes/Indicadores de gestión** | 3d? | 2018-07-27 | 2018-08-01 |  | 2d |  | 9h |
| 181 | 1.3.1.4.4.1 | PU - Alarmas | 1d? | 2018-07-27 | 2018-07-30 | 150 | 16.5d | Omar Santiago/Fernando Nava [37.5%] | 3h |
| 182 | 1.3.1.4.4.2 | PU - Reportes | 1d? | 2018-07-27 | 2018-07-30 | 151 | 16.5d | Omar Santiago/Fernando Nava [37.5%] | 3h |
| 183 | 1.3.1.4.4.3 | PU - Indicadores de gestión | 1d? | 2018-07-31 | 2018-08-01 | 152 | 0d | Omar Santiago/Fernando Nava [37.5%] | 3h |
| 184 | 1.3.1.5 | **TD - Termina Desarrollo** | 5.5d? | 2018-08-01 | 2018-08-09 |  | 0d |  | 38h |
| 185 | 1.3.1.5.1 | **TD - Instalacion en Ambiente QA o TEST** | 5.5d? | 2018-08-01 | 2018-08-09 |  | 0d |  | 38h |
| 186 | 1.3.1.5.1.1 | Instalacion y Configuracion de Java 7 u 8 | 1d? | 2018-08-01 | 2018-08-02 | 183 | 0d | Omar Santiago [75%] | 6h |
| 187 | 1.3.1.5.1.2 | Instalacion y Configuracion de Mysql y complementos | 1d? | 2018-08-02 | 2018-08-03 | 186 | 0d | Omar Santiago [75%] | 6h |
| 188 | 1.3.1.5.1.3 | Instalacion y Configuracion de Apacte Tomcat | 1d? | 2018-08-03 | 2018-08-06 | 187 | 0d | Omar Santiago [75%] | 6h |
| 189 | 1.3.1.5.1.4 | Instalacion y Configuracion AppWeb v1 | 2.5d? | 2018-08-06 | 2018-08-09 | 188 | 0d | Omar Santiago | 20h |
| 190 | 1.3.1.6 | **PI - Pruebas Integrales** | 7d? | 2018-08-09 | 2018-08-20 |  | 0d |  | 34h |
| 191 | 1.3.1.6.1 | **PI - Modulo Catalogos Maestros** | 2d? | 2018-08-09 | 2018-08-13 |  | 0d |  | 15h |
| 192 | 1.3.1.6.1.1 | PI - Catalogo Rol | 1d? | 2018-08-09 | 2018-08-10 | 185 | 8d | Omar Santiago/Fernando Nava/ITSC [12.5%] | 1h |
| 193 | 1.3.1.6.1.2 | PI - Catalogo Actores | 1d? | 2018-08-09 | 2018-08-10 | 185 | 8d | Omar Santiago/Fernando Nava/ITSC [12.5%] | 1h |
| 194 | 1.3.1.6.1.3 | PI - Catalogo Actores-Roles | 1d? | 2018-08-09 | 2018-08-10 | 185 | 8d | Omar Santiago/Fernando Nava/ITSC [12.5%] | 1h |
| 195 | 1.3.1.6.1.4 | PI - Catalogo Contratos | 1d? | 2018-08-09 | 2018-08-10 | 185 | 8d | Omar Santiago/Fernando Nava/ITSC [12.5%] | 1h |
| 196 | 1.3.1.6.1.5 | PI - Catalogo Tipos de Tarifa | 1d? | 2018-08-09 | 2018-08-10 | 185 | 8d | Omar Santiago/Fernando Nava/ITSC [12.5%] | 1h |
| 197 | 1.3.1.6.1.6 | PI - Catalogo Tarifa | 1d? | 2018-08-09 | 2018-08-10 | 185 | 8d | Omar Santiago/Fernando Nava/ITSC [12.5%] | 1h |
| 198 | 1.3.1.6.1.7 | PI - Catalogo Conceptos de Tarifa | 1d? | 2018-08-09 | 2018-08-10 | 185 | 8d | Omar Santiago/Fernando Nava/ITSC [12.5%] | 1h |
| 199 | 1.3.1.6.1.8 | PI - Catalogo Choferes | 1d? | 2018-08-09 | 2018-08-10 | 185 | 8d | Omar Santiago/Fernando Nava/ITSC [12.5%] | 1h |
| 200 | 1.3.1.6.1.9 | PI - Catalogo Camiones | 1d? | 2018-08-09 | 2018-08-10 | 185 | 8d | Omar Santiago/Fernando Nava/ITSC [12.5%] | 1h |
| 201 | 1.3.1.6.1.10 | PI - Catalogo Responsables de Incidencias | 1d? | 2018-08-09 | 2018-08-10 | 185 | 0d | Omar Santiago/Fernando Nava/ITSC [12.5%] | 1h |
| 202 | 1.3.1.6.1.11 | PI - Catalogo Tipos de Incidencias | 1d? | 2018-08-10 | 2018-08-13 | 201 | 7d | Omar Santiago/Fernando Nava/ITSC [12.5%] | 1h |
| 203 | 1.3.1.6.1.12 | PI - Catalogo Tipos de Viaje | 1d? | 2018-08-10 | 2018-08-13 | 201 | 7d | Omar Santiago/Fernando Nava/ITSC [12.5%] | 1h |
| 204 | 1.3.1.6.1.13 | PI - Catalogo Tipos de Carga/Descarga | 1d? | 2018-08-10 | 2018-08-13 | 201 | 7d | Omar Santiago/Fernando Nava/ITSC [12.5%] | 1h |
| 205 | 1.3.1.6.1.14 | PI - Catalogo Clientes de Entrega | 1d? | 2018-08-10 | 2018-08-13 | 201 | 7d | Omar Santiago/Fernando Nava/ITSC [12.5%] | 1h |
| 206 | 1.3.1.6.1.15 | PI - Catalogo Clientes Solicidates | 1d? | 2018-08-10 | 2018-08-13 | 201 | 0d | Omar Santiago/Fernando Nava/ITSC [12.5%] | 1h |

| ID | WBS | Task | Duration | Start | Finish | Predecessors | Total slack | Resources | Work |
| --- | --- | --- | --- | --- | --- | --- | --- | --- | --- |
| 207 | 1.3.1.6.2 | **PI - Modulo Seguridad** | 1d? | 2018-08-13 | 2018-08-14 |  | 0d |  | 3h |
| 208 | 1.3.1.6.2.1 | PI - Roles | 1d? | 2018-08-13 | 2018-08-14 | 206 | 6d | Omar Santiago/Fernando Nava/ITSC [12.5%] | 1h |
| 209 | 1.3.1.6.2.2 | PI - Configuracion | 1d? | 2018-08-13 | 2018-08-14 | 206 | 6d | Omar Santiago/Fernando Nava/ITSC [12.5%] | 1h |
| 210 | 1.3.1.6.2.3 | PI - Permisos | 1d? | 2018-08-13 | 2018-08-14 | 206 | 0d | Omar Santiago/Fernando Nava/ITSC [12.5%] | 1h |
| 211 | 1.3.1.6.3 | **PI - Modulo Solicitudes** | 2d? | 2018-08-14 | 2018-08-16 |  | 0d |  | 10h |
| 212 | 1.3.1.6.3.1 | PI - Cliente - Solicitud de Transporte | 1d? | 2018-08-14 | 2018-08-15 | 210 | 5d | Omar Santiago/Fernando Nava/ITSC [25%] | 2h |
| 213 | 1.3.1.6.3.2 | PI - Trafico - Valoracion del Viaje | 1d? | 2018-08-14 | 2018-08-15 | 210 | 5d | Omar Santiago/Fernando Nava/ITSC [25%] | 2h |
| 214 | 1.3.1.6.3.3 | PI - Distribucion - Asugnacion de Unidad y Carga | 1d? | 2018-08-14 | 2018-08-15 | 210 | 0d | Omar Santiago/Fernando Nava/ITSC [25%] | 2h |
| 215 | 1.3.1.6.3.4 | PI - Operador CL - Operación y Descarga | 1d? | 2018-08-15 | 2018-08-16 | 214 | 4d | Omar Santiago/Fernando Nava/ITSC [25%] | 2h |
| 216 | 1.3.1.6.3.5 | PI - Distribucion - Cierre del Viaje y Facturacion | 1d? | 2018-08-15 | 2018-08-16 | 214 | 0d | Omar Santiago/Fernando Nava/ITSC [25%] | 2h |
| 217 | 1.3.1.6.4 | **PI - Modulo Alarmas/Reportes/Indicadores de gestión** | 2d? | 2018-08-16 | 2018-08-20 |  | 0d |  | 6h |
| 218 | 1.3.1.6.4.1 | PI - Alarmas | 1d? | 2018-08-16 | 2018-08-17 | 216 | 3d | Omar Santiago/Fernando Nava/ITSC [25%] | 2h |
| 219 | 1.3.1.6.4.2 | PI - Reportes | 1d? | 2018-08-16 | 2018-08-17 | 216 | 0d | Omar Santiago/Fernando Nava/ITSC [25%] | 2h |
| 220 | 1.3.1.6.4.3 | PI - Indicadores de gestión | 1d? | 2018-08-17 | 2018-08-20 | 219 | 0d | Omar Santiago/Fernando Nava/ITSC [25%] | 2h |
| 221 | 1.3.2 | PI - Cierre Pruebas Integrales | 1d? | 2018-08-20 | 2018-08-21 | 220 | 0d | Omar Santiago/Fernando Nava/ITSC [25%] | 2h |
| 222 | 2 | **LB - Liberacion a Produccion** | 1d? | 2018-08-21 | 2018-08-22 |  | 0d |  | 8h |
| 223 | 2.1 | LB - Liberacion y Cierre | 1d? | 2018-08-21 | 2018-08-22 | 221 | 0d | Omar Santiago/Fernando Nava/ITSC | 8h |
| 224 | 3 | Monitoreo y Control | 1d? | 2018-05-24 | 2018-05-24 |  | 58.61d |  |  |
