# Plan_AN_AT_CC_29052018v2.xls

Schedule from MS Project, 2018-06-04 to 2018-08-10, status date 2018-05-29, 4 hours a day, costs in $, A marks actual dates.

## Calendars

- Copia de Estándar 4hrs: Mon-Fri 09:00-13:00, 15:00-19:00; Sat-Sun off.

## Resources

| Resource | Rate |
| --- | --- |
| Omar Santiago/Fernando Nava |  |
| ITSC |  |
| Omar Santiago | 25 |
| cliente |  |
| Fernando Nava | 25 |
| Omar Santiago/Fernando Nava/ITSC |  |
| Omar Santiago/ITSC |  |

## Schedule

| ID | WBS | Task | Duration | Start | Finish | Predecessors | Complete | Remaining | Baseline start | Baseline finish | Baseline duration | Total slack | Free slack | Constraint | Resources | Work | Actual work | Cost | Actual cost |
| --- | --- | --- | --- | --- | --- | --- | --- | --- | --- | --- | --- | --- | --- | --- | --- | --- | --- | --- | --- |
| 1 | 1 | **001-ITSC_TMS Plan de Analisis y Desarrollo** | 99.25d? | 2018-06-04 A | 2018-08-10 |  | 1% | 97.89d? | 2018-05-24 | 2018-08-21 | 126.22d? | 0d |  |  |  | 817.5h | 9h | 14,272.73 | 200 |
| 2 | 1.1 | **AN_Analisis** | 66.14d? | 2018-06-04 A | 2018-07-19 |  | 2% | 64.83d? | 2018-05-24 | 2018-08-02 | 101.22d? | 33.11d |  |  |  | 459.5h | 9h | 9,147.73 | 200 |
| 3 | 1.1.1 | **AN Analisis de Negocio** | 36.1d? | 2018-06-04 A | 2018-06-28 |  | 7% | 33.44d? | 2018-05-24 | 2018-05-30 | 10d | 63.15d |  |  |  | 152h | 5h | 3,597.73 | 100 |
| 4 | 1.1.1.1 | **AN - Modulo Catalogos Maestros** | 36.1d? | 2018-06-04 A | 2018-06-28 |  | 4% | 34.79d? | 2018-05-24 | 2018-07-05 | 61.62d? | 63.15d |  |  |  | 105h | 4h | 2,625 | 100 |
| 5 | 1.1.1.1.1 | **AN - Catalogo Rol** | 4d | 2018-06-04 | 2018-06-05 |  |  |  | 2018-06-15 | 2018-06-19 | 4.8d | 63.75d |  |  |  | 7h |  | 175 |  |
| 6 | 1.1.1.1.1.1 | AN - Requerimientos de Negocio | 0.5d | 2018-06-04 | 2018-06-04 |  |  |  | 2018-06-15 | 2018-06-18 | 2.4d | 66d | 2.25d |  | Fernando Nava | 2h |  | 50 |  |
| 7 | 1.1.1.1.1.2 | AN - Casos de Uso | 1.25d | 2018-06-05 | 2018-06-05 | 6 |  |  | 2018-06-18 | 2018-06-19 | 2.4d | 63.75d | 0d | finish no earlier than 2018-06-05 | Fernando Nava | 5h |  | 125 |  |
| 8 | 1.1.1.1.2 | **AN - Catalogo Actores** | 1.75d? | 2018-06-06 | 2018-06-06 |  |  |  | 2018-06-15 | 2018-06-18 | 1.5d? | 63.75d |  |  |  | 7h |  | 175 |  |
| 9 | 1.1.1.1.2.1 | AN - Requerimientos de Negocio | 0.5d? | 2018-06-06 | 2018-06-06 | 7 |  |  | 2018-06-15 | 2018-06-15 | 0.75d? | 63.75d | 0d |  | Fernando Nava | 2h |  | 50 |  |
| 10 | 1.1.1.1.2.2 | AN - Casos de Uso | 1.25d? | 2018-06-06 | 2018-06-06 | 9 |  |  | 2018-06-15 | 2018-06-18 | 0.75d? | 63.75d | 0d |  | Fernando Nava | 5h |  | 125 |  |
| 11 | 1.1.1.1.3 | **AN - Catalogo Actores-Roles** | 19.85d? | 2018-06-06 | 2018-06-20 |  |  |  | 2018-06-18 | 2018-06-20 | 4.8d? | 63.15d |  |  |  | 7h |  | 175 |  |
| 12 | 1.1.1.1.3.1 | AN - Requerimientos de Negocio | 0.5d? | 2018-06-06 | 2018-06-07 | 10 |  |  | 2018-06-18 | 2018-06-19 | 2.4d? | 63.75d | 0d |  | Fernando Nava | 2h |  | 50 |  |
| 13 | 1.1.1.1.3.2 | AN - Casos de Uso | 1.25d? | 2018-06-19 | 2018-06-20 | 12 |  |  | 2018-06-19 | 2018-06-20 | 2.4d? | 63.15d | 0d |  | Fernando Nava | 5h |  | 125 |  |
| 14 | 1.1.1.1.4 | **AN - Catalogo Contratos** | 1.75d? | 2018-06-20 | 2018-06-21 |  |  |  | 2018-06-18 | 2018-06-20 | 4.8d? | 63.15d |  |  |  | 7h |  | 175 |  |
| 15 | 1.1.1.1.4.1 | AN - Requerimientos de Negocio | 0.5d? | 2018-06-20 | 2018-06-21 | 13 |  |  | 2018-06-18 | 2018-06-19 | 2.4d? | 63.15d | 0d |  | Fernando Nava | 2h |  | 50 |  |
| 16 | 1.1.1.1.4.2 | AN - Casos de Uso | 1.25d? | 2018-06-21 | 2018-06-21 | 15 |  |  | 2018-06-19 | 2018-06-20 | 2.4d? | 63.15d | 0d |  | Fernando Nava | 5h |  | 125 |  |
| 17 | 1.1.1.1.5 | **AN - Catalogo Tipos de Tarifa** | 1.75d? | 2018-06-21 | 2018-06-22 |  |  |  | 2018-06-20 | 2018-06-22 | 4.8d? | 63.15d |  |  |  | 7h |  | 175 |  |
| 18 | 1.1.1.1.5.1 | AN - Requerimientos de Negocio | 0.5d? | 2018-06-21 | 2018-06-21 | 16 |  |  | 2018-06-20 | 2018-06-21 | 2.4d? | 63.15d | 0d |  | Fernando Nava | 2h |  | 50 |  |
| 19 | 1.1.1.1.5.2 | AN - Casos de Uso | 1.25d? | 2018-06-21 | 2018-06-22 | 18 |  |  | 2018-06-21 | 2018-06-22 | 2.4d? | 63.15d | 0d |  | Fernando Nava | 5h |  | 125 |  |
| 20 | 1.1.1.1.6 | **AN - Catalogo Tarifa** | 1.75d? | 2018-06-22 | 2018-06-25 |  |  |  | 2018-06-20 | 2018-06-22 | 4.8d? | 63.15d |  |  |  | 7h |  | 175 |  |
| 21 | 1.1.1.1.6.1 | AN - Requerimientos de Negocio | 0.5d? | 2018-06-22 | 2018-06-22 | 19 |  |  | 2018-06-20 | 2018-06-21 | 2.4d? | 63.15d | 0d |  | Fernando Nava | 2h |  | 50 |  |
| 22 | 1.1.1.1.6.2 | AN - Casos de Uso | 1.25d? | 2018-06-22 | 2018-06-25 | 21 |  |  | 2018-06-21 | 2018-06-22 | 2.4d? | 63.15d | 0d |  | Fernando Nava | 5h |  | 125 |  |
| 23 | 1.1.1.1.7 | **AN - Catalogo Conceptos de Tarifa** | 1.75d? | 2018-06-25 | 2018-06-26 |  |  |  | 2018-06-22 | 2018-06-27 | 4.8d? | 63.15d |  |  |  | 7h |  | 175 |  |
| 24 | 1.1.1.1.7.1 | AN - Requerimientos de Negocio | 0.5d? | 2018-06-25 | 2018-06-25 | 22 |  |  | 2018-06-22 | 2018-06-26 | 2.4d? | 63.15d | 0d |  | Fernando Nava | 2h |  | 50 |  |
| 25 | 1.1.1.1.7.2 | AN - Casos de Uso | 1.25d? | 2018-06-25 | 2018-06-26 | 24 |  |  | 2018-06-26 | 2018-06-27 | 2.4d? | 63.15d | 0d |  | Fernando Nava | 5h |  | 125 |  |

| ID | WBS | Task | Duration | Start | Finish | Predecessors | Complete | Remaining | Baseline start | Baseline finish | Baseline duration | Total slack | Free slack | Resources | Work | Actual work | Cost | Actual cost |
| --- | --- | --- | --- | --- | --- | --- | --- | --- | --- | --- | --- | --- | --- | --- | --- | --- | --- | --- |
| 26 | 1.1.1.1.8 | **AN - Catalogo Choferes** | 1.75d? | 2018-06-26 | 2018-06-27 |  |  |  | 2018-06-22 | 2018-06-27 | 4.8d? | 63.15d |  |  | 7h |  | 175 |  |
| 27 | 1.1.1.1.8.1 | AN - Requerimientos de Negocio | 0.5d? | 2018-06-26 | 2018-06-26 | 25 |  |  | 2018-06-22 | 2018-06-26 | 2.4d? | 63.15d | 0d | Fernando Nava | 2h |  | 50 |  |
| 28 | 1.1.1.1.8.2 | AN - Casos de Uso | 1.25d? | 2018-06-26 | 2018-06-27 | 27 |  |  | 2018-06-26 | 2018-06-27 | 2.4d? | 63.15d | 0d | Fernando Nava | 5h |  | 125 |  |
| 29 | 1.1.1.1.9 | **AN - Catalogo Camiones** | 1.75d? | 2018-06-27 | 2018-06-28 |  |  |  | 2018-06-27 | 2018-06-29 | 4.8d? | 63.15d |  |  | 7h |  | 175 |  |
| 30 | 1.1.1.1.9.1 | AN - Requerimientos de Negocio | 0.5d? | 2018-06-27 | 2018-06-27 | 28 |  |  | 2018-06-27 | 2018-06-28 | 2.4d? | 63.15d | 0d | Fernando Nava | 2h |  | 50 |  |
| 31 | 1.1.1.1.9.2 | AN - Casos de Uso | 1.25d? | 2018-06-27 | 2018-06-28 | 30 |  |  | 2018-06-28 | 2018-06-29 | 2.4d? | 63.15d |  | Fernando Nava | 5h |  | 125 |  |
| 32 | 1.1.1.1.10 | **AN - Catalogo Responsables de Incidencias** | 2.62d? | 2018-06-04 A | 2018-06-05 |  | 32% | 1.78d? | 2018-05-24 | 2018-06-29 | 52.02d? | 38.8d |  |  | 7h | 4h | 175 | 100 |
| 33 | 1.1.1.1.10.1 | AN - Requerimientos de Negocio | 0.5d? | 2018-06-04 A | 2018-06-04 A | 31 | 100% |  | 2018-05-24 | 2018-06-28 | 2.12d? |  |  | Fernando Nava | 2h | 2h | 50 | 50 |
| 34 | 1.1.1.1.10.2 | AN - Casos de Uso | 2.62d? | 2018-06-04 A | 2018-06-05 | 33 | 19% | 2.12d? | 2018-05-24 | 2018-06-29 | 2.12d? | 38.8d | 0d | Fernando Nava | 5h | 2h | 125 | 50 |
| 35 | 1.1.1.1.11 | **AN - Catalogo Tipos de Incidencias** | 1.75d? | 2018-06-05 | 2018-06-06 |  |  |  | 2018-06-29 | 2018-07-03 | 4.8d? | 38.8d |  |  | 7h |  | 175 |  |
| 36 | 1.1.1.1.11.1 | AN - Requerimientos de Negocio | 0.5d? | 2018-06-05 | 2018-06-05 | 34 |  |  | 2018-06-29 | 2018-07-02 | 2.4d? | 38.8d | 0d | Fernando Nava | 2h |  | 50 |  |
| 37 | 1.1.1.1.11.2 | AN - Casos de Uso | 1.25d? | 2018-06-05 | 2018-06-06 | 36 |  |  | 2018-07-02 | 2018-07-03 | 2.4d? | 38.8d | 0d | Fernando Nava | 5h |  | 125 |  |
| 38 | 1.1.1.1.12 | **AN - Catalogo Tipos de Viaje** | 1.75d? | 2018-06-06 | 2018-06-07 |  |  |  | 2018-06-29 | 2018-07-03 | 4.8d? | 38.8d |  |  | 7h |  | 175 |  |
| 39 | 1.1.1.1.12.1 | AN - Requerimientos de Negocio | 0.5d? | 2018-06-06 | 2018-06-06 | 37 |  |  | 2018-06-29 | 2018-07-02 | 2.4d? | 38.8d | 0d | Fernando Nava | 2h |  | 50 |  |
| 40 | 1.1.1.1.12.2 | AN - Casos de Uso | 1.25d? | 2018-06-06 | 2018-06-07 | 39 |  |  | 2018-07-02 | 2018-07-03 | 2.4d? | 38.8d | 0d | Fernando Nava | 5h |  | 125 |  |
| 41 | 1.1.1.1.13 | **AN - Catalogo Tipos de Carga/Descarga** | 1.75d? | 2018-06-07 | 2018-06-07 |  |  |  | 2018-07-03 | 2018-07-05 | 4.8d? | 38.8d |  |  | 7h |  | 175 |  |
| 42 | 1.1.1.1.13.1 | AN - Requerimientos de Negocio | 0.5d? | 2018-06-07 | 2018-06-07 | 40 |  |  | 2018-07-03 | 2018-07-04 | 2.4d? | 38.8d | 0d | Fernando Nava | 2h |  | 50 |  |
| 43 | 1.1.1.1.13.2 | AN - Casos de Uso | 1.25d? | 2018-06-07 | 2018-06-07 | 42 |  |  | 2018-07-04 | 2018-07-05 | 2.4d? | 38.8d | 0d | Fernando Nava | 5h |  | 125 |  |
| 44 | 1.1.1.1.14 | **AN - Catalogo Clientes de Entrega** | 1.75d? | 2018-06-07 | 2018-06-08 |  |  |  | 2018-07-03 | 2018-07-05 | 4.8d? | 38.8d |  |  | 7h |  | 175 |  |
| 45 | 1.1.1.1.14.1 | AN - Requerimientos de Negocio | 0.5d? | 2018-06-07 | 2018-06-08 | 43 |  |  | 2018-07-03 | 2018-07-04 | 2.4d? | 38.8d | 0d | Fernando Nava | 2h |  | 50 |  |
| 46 | 1.1.1.1.14.2 | AN - Casos de Uso | 1.25d? | 2018-06-08 | 2018-06-08 | 45 |  |  | 2018-07-04 | 2018-07-05 | 2.4d? | 38.8d | 0d | Fernando Nava | 5h |  | 125 |  |
| 47 | 1.1.1.1.15 | **AN - Catalogo Clientes Solicidates** | 1.75d? | 2018-06-08 | 2018-06-11 |  |  |  | 2018-07-03 | 2018-07-05 | 4.8d? | 38.8d |  |  | 7h |  | 175 |  |
| 48 | 1.1.1.1.15.1 | AN - Requerimientos de Negocio | 0.5d? | 2018-06-08 | 2018-06-11 | 46 |  |  | 2018-07-03 | 2018-07-04 | 2.4d? | 38.8d | 0d | Fernando Nava | 2h |  | 50 |  |
| 49 | 1.1.1.1.15.2 | AN - Casos de Uso | 1.25d? | 2018-06-11 | 2018-06-11 | 48 |  |  | 2018-07-04 | 2018-07-05 | 2.4d? | 38.8d | 0d | Fernando Nava | 5h |  | 125 |  |

| ID | WBS | Task | Duration | Start | Finish | Predecessors | Complete | Remaining | Baseline start | Baseline finish | Baseline duration | Total slack | Free slack | Resources | Work | Actual work | Cost | Actual cost | Text1 |
| --- | --- | --- | --- | --- | --- | --- | --- | --- | --- | --- | --- | --- | --- | --- | --- | --- | --- | --- | --- |
| 50 | 1.1.1.2 | **AN - Modulo Seguridad** | 4.5d? | 2018-06-11 | 2018-06-13 |  |  |  | 2018-07-05 | 2018-07-12 | 9.6d? | 38.8d |  |  | 18h |  | 450 |  |  |
| 51 | 1.1.1.2.1 | **AN - Roles** | 1.5d? | 2018-06-11 | 2018-06-12 |  |  |  | 2018-07-05 | 2018-07-10 | 4.8d? | 38.8d |  |  | 6h |  | 150 |  |  |
| 52 | 1.1.1.2.1.1 | AN - Requerimientos de Negocio | 0.75d? | 2018-06-11 | 2018-06-12 | 49 |  |  | 2018-07-05 | 2018-07-09 | 2.4d? | 38.8d | 0d | Fernando Nava | 3h |  | 75 |  |  |
| 53 | 1.1.1.2.1.2 | AN - Casos de Uso | 0.75d? | 2018-06-12 | 2018-06-12 | 52 |  |  | 2018-07-09 | 2018-07-10 | 2.4d? | 38.8d | 0d | Fernando Nava | 3h |  | 75 |  |  |
| 54 | 1.1.1.2.2 | **AN - Configuracion** | 1.5d? | 2018-06-12 | 2018-06-13 |  |  |  | 2018-07-05 | 2018-07-10 | 4.8d? | 38.8d |  |  | 6h |  | 150 |  |  |
| 55 | 1.1.1.2.2.1 | AN - Requerimientos de Negocio | 0.75d? | 2018-06-12 | 2018-06-12 | 53 |  |  | 2018-07-05 | 2018-07-09 | 2.4d? | 38.8d | 0d | Fernando Nava | 3h |  | 75 |  |  |
| 56 | 1.1.1.2.2.2 | AN - Casos de Uso | 0.75d? | 2018-06-12 | 2018-06-13 | 55 |  |  | 2018-07-09 | 2018-07-10 | 2.4d? | 38.8d | 0d | Fernando Nava | 3h |  | 75 |  |  |
| 57 | 1.1.1.2.3 | **AN - Permisos** | 1.5d? | 2018-06-13 | 2018-06-13 |  |  |  | 2018-07-10 | 2018-07-12 | 4.8d? | 38.8d |  |  | 6h |  | 150 |  |  |
| 58 | 1.1.1.2.3.1 | AN - Requerimientos de Negocio | 0.75d? | 2018-06-13 | 2018-06-13 | 56 |  |  | 2018-07-10 | 2018-07-11 | 2.4d? | 38.8d | 0d | Fernando Nava | 3h |  | 75 |  |  |
| 59 | 1.1.1.2.3.2 | AN - Casos de Uso | 0.75d? | 2018-06-13 | 2018-06-13 | 58 |  |  | 2018-07-11 | 2018-07-12 | 2.4d? | 38.8d | 0d | Fernando Nava | 3h |  | 75 |  |  |
| 60 | 1.1.1.3 | **AN - Modulo Alarmas/Reportes/Indicadores de gestión** | 4.5d? | 2018-06-13 | 2018-06-18 |  |  |  | 2018-07-24 | 2018-07-30 | 8d? | 38.8d |  |  | 18h |  | 450 |  |  |
| 61 | 1.1.1.3.1 | **AN - Alarmas** | 1.5d? | 2018-06-13 | 2018-06-14 |  |  |  | 2018-07-24 | 2018-07-26 | 4d? | 38.8d |  |  | 6h |  | 150 |  |  |
| 62 | 1.1.1.3.1.1 | AN - Requerimientos de Negocio | 0.75d? | 2018-06-13 | 2018-06-14 | 59 |  |  | 2018-07-24 | 2018-07-25 | 2d? | 38.8d | 0d | Fernando Nava | 3h |  | 75 |  |  |
| 63 | 1.1.1.3.1.2 | AN - Casos de Uso | 0.75d? | 2018-06-14 | 2018-06-14 | 62 |  |  | 2018-07-25 | 2018-07-26 | 2d? | 38.8d | 0d | Fernando Nava | 3h |  | 75 |  |  |
| 64 | 1.1.1.3.2 | **AN - Reportes** | 1.5d? | 2018-06-14 | 2018-06-15 |  |  |  | 2018-07-24 | 2018-07-26 | 4d? | 38.8d |  |  | 6h |  | 150 |  |  |
| 65 | 1.1.1.3.2.1 | AN - Requerimientos de Negocio | 0.75d? | 2018-06-14 | 2018-06-15 | 63 |  |  | 2018-07-24 | 2018-07-25 | 2d? | 38.8d | 0d | Fernando Nava | 3h |  | 75 |  |  |
| 66 | 1.1.1.3.2.2 | AN - Casos de Uso | 0.75d? | 2018-06-15 | 2018-06-15 | 65 |  |  | 2018-07-25 | 2018-07-26 | 2d? | 38.8d | 0d | Fernando Nava | 3h |  | 75 |  |  |
| 67 | 1.1.1.3.3 | **AN - Indicadores de gestión** | 1.5d? | 2018-06-15 | 2018-06-18 |  |  |  | 2018-07-26 | 2018-07-30 | 4d? | 38.8d |  |  | 6h |  | 150 |  |  |
| 68 | 1.1.1.3.3.1 | AN - Requerimientos de Negocio | 0.75d? | 2018-06-15 | 2018-06-15 | 66 |  |  | 2018-07-26 | 2018-07-27 | 2d? | 38.8d | 0d | Fernando Nava | 3h |  | 75 |  |  |
| 69 | 1.1.1.3.3.2 | AN - Casos de Uso | 0.75d? | 2018-06-15 | 2018-06-18 | 68 |  |  | 2018-07-27 | 2018-07-30 | 2d? | 38.8d |  | Fernando Nava | 3h |  | 75 |  |  |
| 70 | 1.1.1.4 | AT - Revisión interna | 2d | 2018-06-08 A | 2018-06-08 A | 69 | 100% |  | 2018-05-28 | 2018-05-28 | 2d |  |  | ITSC | 1h | 1h |  |  |  |
| 71 | 1.1.1.5 | AT - Ajustes de comentarios del usuario | 1.33d | 2018-06-11 | 2018-06-11 | 70 |  |  | 2018-05-29 | 2018-05-29 | 2d | 33.11d | 0d | ITSC; cliente | 6h |  |  |  |  |
| 72 | 1.1.1.6 | AT - Peer Review y Vo Bo | 0.73d | 2018-06-11 | 2018-06-12 | 71 |  |  | 2018-05-30 | 2018-05-30 | 2d | 33.11d | 0d | ITSC; Omar Santiago | 4h |  | 72.73 |  |  |
| 73 | 1.1.2 | **AT Analisis de Tecnico** | 66.14d? | 2018-06-04 A | 2018-07-19 |  | 1% | 65.73d? | 2018-05-24 | 2018-08-02 | 101.22d? | 33.11d |  |  | 307.5h | 4h | 5,550 | 100 |  |
| 74 | 1.1.2.1 | **IAT - Revisión de documentación entregada por Negocio** | 18.38d? | 2018-06-12 | 2018-06-25 |  |  |  | 2018-05-31 | 2018-06-13 | 18.88d? | 33.11d |  |  | 73.5h |  |  |  |  |
| 75 | 1.1.2.1.1 | AT - Requerimientos de Negocio | 1.5d | 2018-06-12 | 2018-06-12 | 72 |  |  | 2018-05-31 | 2018-05-31 | 2d | 33.11d | 0d | Omar Santiago/Fernando Nava | 6h |  |  |  | 1 Docuemnto de RN |
| 76 | 1.1.2.1.2 | AT - Casos de Uso | 16.88d? | 2018-06-12 | 2018-06-25 | 75 |  |  | 2018-06-01 | 2018-06-13 | 16.88d? | 33.11d | 0d | Omar Santiago/Fernando Nava | 67.5h |  |  |  | 27 Documentos de CU |

| ID | WBS | Task | Duration | Start | Finish | Predecessors | Complete | Remaining | Baseline start | Baseline finish | Baseline duration | Total slack | Free slack | Resources | Work | Actual work | Cost | Actual cost |
| --- | --- | --- | --- | --- | --- | --- | --- | --- | --- | --- | --- | --- | --- | --- | --- | --- | --- | --- |
| 77 | 1.1.2.2 | **AT - Elaboracion de propuesta de Arquitectura de Solucion** | 14d? | 2018-06-25 | 2018-07-04 |  |  |  | 2018-06-13 | 2018-06-14 | 2d? | 33.11d |  |  | 45h |  | 1,125 |  |
| 78 | 1.1.2.2.1 | AT - Requerimientos tecnicos | 2d? | 2018-06-25 | 2018-06-26 | 76 |  |  | 2018-06-13 | 2018-06-14 | 2d? | 33.11d | 0d | Omar Santiago [87.5%] | 7h |  | 175 |  |
| 79 | 1.1.2.2.2 | AT - Analisis tecnico | 2d? | 2018-06-26 | 2018-06-27 | 78 |  |  | 2018-06-13 | 2018-06-14 | 2d? | 33.11d | 0d | Omar Santiago [87.5%] | 7h |  | 175 |  |
| 80 | 1.1.2.2.3 | AT - Requerimientos de solucion | 2d? | 2018-06-27 | 2018-06-28 | 79 |  |  | 2018-06-13 | 2018-06-14 | 2d? | 33.11d | 0d | Omar Santiago [87.5%] | 7h |  | 175 |  |
| 81 | 1.1.2.2.4 | AT - Escalabilidad | 2d? | 2018-06-28 | 2018-06-29 | 80 |  |  | 2018-06-13 | 2018-06-14 | 2d? | 33.11d | 0d | Omar Santiago [87.5%] | 7h |  | 175 |  |
| 82 | 1.1.2.2.5 | AT - Modelado BD | 2d? | 2018-06-29 | 2018-07-02 | 81 |  |  | 2018-06-13 | 2018-06-14 | 2d? | 33.11d | 0d | Omar Santiago [87.5%] | 7h |  | 175 |  |
| 83 | 1.1.2.2.6 | AT - Herramientas para solucion | 2d? | 2018-07-02 | 2018-07-03 | 82 |  |  | 2018-06-13 | 2018-06-14 | 2d? | 33.11d | 0d | Omar Santiago [62.5%] | 5h |  | 125 |  |
| 84 | 1.1.2.2.7 | AT - Aplicación responsiva para navegadores web | 2d? | 2018-07-03 | 2018-07-04 | 83 |  |  | 2018-06-13 | 2018-06-14 | 2d? | 33.11d | 0d | Omar Santiago [62.5%] | 5h |  | 125 |  |
| 85 | 1.1.2.3 | AT - Peer Review y Vo Bo Arquitectura de Solucion | 1d | 2018-07-04 | 2018-07-04 | 84 |  |  | 2018-06-14 | 2018-06-15 | 2d | 33.11d | 0d | Omar Santiago | 4h |  | 100 |  |
| 86 | 1.1.2.4 | **AT - Elaboración de documentos AT** | 66.14d? | 2018-06-04 A | 2018-07-19 |  | 1% | 65.61d? | 2018-05-24 | 2018-07-30 | 95.22d? | 33.11d |  |  | 173h | 4h | 4,325 | 100 |
| 87 | 1.1.2.4.1 | **AT - Modulo Catalogos Maestros** | 66.14d? | 2018-06-04 A | 2018-07-19 |  | 1% | 65.14d? | 2018-05-24 | 2018-07-05 | 61.62d? | 33.11d |  |  | 90h | 4h | 2,250 | 100 |
| 88 | 1.1.2.4.1.1 | **AT - Catalogo Rol** | 4.8d | 2018-07-04 | 2018-07-09 |  |  |  | 2018-06-15 | 2018-06-19 | 4.8d | 49.01d |  |  | 6h |  | 150 |  |
| 89 | 1.1.2.4.1.1.1 | AT - Elaboración Bocetos de Archivos | 1.6d | 2018-07-04 | 2018-07-05 | 85 |  |  | 2018-06-15 | 2018-06-18 | 2.4d | 49.01d | 0d | Fernando Nava [31.2%] | 2h |  | 50 |  |
| 90 | 1.1.2.4.1.1.2 | AT - Elaboración Bocetos de Pantallas | 3.2d | 2018-07-05 | 2018-07-09 | 89 |  |  | 2018-06-18 | 2018-06-19 | 2.4d | 49.01d |  | Fernando Nava [31.2%] | 4h |  | 100 |  |
| 91 | 1.1.2.4.1.2 | **AT - Catalogo Actores** | 1.5d? | 2018-07-04 | 2018-07-05 |  |  |  | 2018-06-15 | 2018-06-18 | 1.5d? | 33.11d |  |  | 6h |  | 150 |  |
| 92 | 1.1.2.4.1.2.1 | AT - Elaboración Bocetos de Archivos | 0.5d? | 2018-07-04 | 2018-07-04 | 85 |  |  | 2018-06-15 | 2018-06-15 | 0.75d? | 33.11d | 0d | Fernando Nava | 2h |  | 50 |  |
| 93 | 1.1.2.4.1.2.2 | AT - Elaboración Bocetos de Pantallas | 1d? | 2018-07-04 | 2018-07-05 | 92 |  |  | 2018-06-15 | 2018-06-18 | 0.75d? | 33.11d | 0d | Fernando Nava | 4h |  | 100 |  |
| 94 | 1.1.2.4.1.3 | **AT - Catalogo Actores-Roles** | 4.8d? | 2018-07-05 | 2018-07-09 |  |  |  | 2018-06-18 | 2018-06-20 | 4.8d? | 47.51d |  |  | 6h |  | 150 |  |
| 95 | 1.1.2.4.1.3.1 | AT - Elaboración Bocetos de Archivos | 1.6d? | 2018-07-05 | 2018-07-06 | 93 |  |  | 2018-06-18 | 2018-06-19 | 2.4d? | 47.51d | 0d | Fernando Nava [31.2%] | 2h |  | 50 |  |
| 96 | 1.1.2.4.1.3.2 | AT - Elaboración Bocetos de Pantallas | 3.2d? | 2018-07-06 | 2018-07-09 | 95 |  |  | 2018-06-19 | 2018-06-20 | 2.4d? | 47.51d |  | Fernando Nava [31.2%] | 4h |  | 100 |  |
| 97 | 1.1.2.4.1.4 | **AT - Catalogo Contratos** | 4.8d? | 2018-07-05 | 2018-07-09 |  |  |  | 2018-06-18 | 2018-06-20 | 4.8d? | 33.11d |  |  | 6h |  | 150 |  |
| 98 | 1.1.2.4.1.4.1 | AT - Elaboración Bocetos de Archivos | 1.6d? | 2018-07-05 | 2018-07-06 | 93 |  |  | 2018-06-18 | 2018-06-19 | 2.4d? | 33.11d | 0d | Fernando Nava [31.2%] | 2h |  | 50 |  |
| 99 | 1.1.2.4.1.4.2 | AT - Elaboración Bocetos de Pantallas | 3.2d? | 2018-07-06 | 2018-07-09 | 98 |  |  | 2018-06-19 | 2018-06-20 | 2.4d? | 33.11d | 0d | Fernando Nava [31.2%] | 4h |  | 100 |  |
| 100 | 1.1.2.4.1.5 | **AT - Catalogo Tipos de Tarifa** | 4.8d? | 2018-07-09 | 2018-07-12 |  |  |  | 2018-06-20 | 2018-06-22 | 4.8d? | 42.71d |  |  | 6h |  | 150 |  |
| 101 | 1.1.2.4.1.5.1 | AT - Elaboración Bocetos de Archivos | 1.6d? | 2018-07-09 | 2018-07-10 | 99 |  |  | 2018-06-20 | 2018-06-21 | 2.4d? | 42.71d | 0d | Fernando Nava [31.2%] | 2h |  | 50 |  |
| 102 | 1.1.2.4.1.5.2 | AT - Elaboración Bocetos de Pantallas | 3.2d? | 2018-07-10 | 2018-07-12 | 101 |  |  | 2018-06-21 | 2018-06-22 | 2.4d? | 42.71d |  | Fernando Nava [31.2%] | 4h |  | 100 |  |

| ID | WBS | Task | Duration | Start | Finish | Predecessors | Complete | Remaining | Baseline start | Baseline finish | Baseline duration | Total slack | Free slack | Resources | Work | Actual work | Cost | Actual cost |
| --- | --- | --- | --- | --- | --- | --- | --- | --- | --- | --- | --- | --- | --- | --- | --- | --- | --- | --- |
| 103 | 1.1.2.4.1.6 | **AT - Catalogo Tarifa** | 4.8d? | 2018-07-09 | 2018-07-12 |  |  |  | 2018-06-20 | 2018-06-22 | 4.8d? | 33.11d |  |  | 6h |  | 150 |  |
| 104 | 1.1.2.4.1.6.1 | AT - Elaboración Bocetos de Archivos | 1.6d? | 2018-07-09 | 2018-07-10 | 99 |  |  | 2018-06-20 | 2018-06-21 | 2.4d? | 33.11d | 0d | Fernando Nava [31.2%] | 2h |  | 50 |  |
| 105 | 1.1.2.4.1.6.2 | AT - Elaboración Bocetos de Pantallas | 3.2d? | 2018-07-10 | 2018-07-12 | 104 |  |  | 2018-06-21 | 2018-06-22 | 2.4d? | 33.11d | 0d | Fernando Nava [31.2%] | 4h |  | 100 |  |
| 106 | 1.1.2.4.1.7 | **AT - Catalogo Conceptos de Tarifa** | 4.8d? | 2018-07-12 | 2018-07-16 |  |  |  | 2018-06-22 | 2018-06-27 | 4.8d? | 33.11d |  |  | 6h |  | 150 |  |
| 107 | 1.1.2.4.1.7.1 | AT - Elaboración Bocetos de Archivos | 1.6d? | 2018-07-12 | 2018-07-13 | 105 |  |  | 2018-06-22 | 2018-06-26 | 2.4d? | 33.11d | 0d | Fernando Nava [31.2%] | 2h |  | 50 |  |
| 108 | 1.1.2.4.1.7.2 | AT - Elaboración Bocetos de Pantallas | 3.2d? | 2018-07-13 | 2018-07-16 | 107 |  |  | 2018-06-26 | 2018-06-27 | 2.4d? | 37.91d |  | Fernando Nava [31.2%] | 4h |  | 100 |  |
| 109 | 1.1.2.4.1.8 | **AT - Catalogo Choferes** | 4.8d? | 2018-07-12 | 2018-07-16 |  |  |  | 2018-06-22 | 2018-06-27 | 4.8d? | 34.71d |  |  | 6h |  | 150 |  |
| 110 | 1.1.2.4.1.8.1 | AT - Elaboración Bocetos de Archivos | 1.6d? | 2018-07-12 | 2018-07-13 | 105 |  |  | 2018-06-22 | 2018-06-26 | 2.4d? | 41.11d |  | Fernando Nava [31.2%] | 2h |  | 50 |  |
| 111 | 1.1.2.4.1.8.2 | AT - Elaboración Bocetos de Pantallas | 3.2d? | 2018-07-13 | 2018-07-16 | 107 |  |  | 2018-06-26 | 2018-06-27 | 2.4d? | 33.11d | 0d | Fernando Nava [31.2%] | 4h |  | 100 |  |
| 112 | 1.1.2.4.1.9 | **AT - Catalogo Camiones** | 4.8d? | 2018-07-16 | 2018-07-19 |  |  |  | 2018-06-27 | 2018-06-29 | 4.8d? | 33.11d |  |  | 6h |  | 150 |  |
| 113 | 1.1.2.4.1.9.1 | AT - Elaboración Bocetos de Archivos | 1.6d? | 2018-07-16 | 2018-07-17 | 111 |  |  | 2018-06-27 | 2018-06-28 | 2.4d? | 33.11d | 0d | Fernando Nava [31.2%] | 2h |  | 50 |  |
| 114 | 1.1.2.4.1.9.2 | AT - Elaboración Bocetos de Pantallas | 3.2d? | 2018-07-17 | 2018-07-19 | 113 |  |  | 2018-06-28 | 2018-06-29 | 2.4d? | 33.11d |  | Fernando Nava [31.2%] | 4h |  | 100 |  |
| 115 | 1.1.2.4.1.10 | **AT - Catalogo Responsables de Incidencias** | 2.38d? | 2018-06-04 A | 2018-06-05 |  | 35% | 1.55d? | 2018-05-24 | 2018-06-29 | 52.02d? | 0d |  |  | 6h | 4h | 150 | 100 |
| 116 | 1.1.2.4.1.10.1 | AT - Elaboración Bocetos de Archivos | 0.5d? | 2018-06-04 A | 2018-06-04 A | 111 | 100% |  | 2018-05-24 | 2018-06-28 | 2.12d? |  |  | Fernando Nava | 2h | 2h | 50 | 50 |
| 117 | 1.1.2.4.1.10.2 | AT - Elaboración Bocetos de Pantallas | 2.38d? | 2018-06-04 A | 2018-06-05 | 116 | 21% | 1.88d? | 2018-05-24 | 2018-06-29 | 2.12d? | 0d |  | Fernando Nava | 4h | 2h | 100 | 50 |
| 118 | 1.1.2.4.1.11 | **AT - Catalogo Tipos de Incidencias** | 4.8d? | 2018-06-05 | 2018-06-07 |  |  |  | 2018-06-29 | 2018-07-03 | 4.8d? | 92.07d |  |  | 6h |  | 150 |  |
| 119 | 1.1.2.4.1.11.1 | AT - Elaboración Bocetos de Archivos | 1.6d? | 2018-06-05 | 2018-06-05 | 117 |  |  | 2018-06-29 | 2018-07-02 | 2.4d? | 92.07d | 0d | Fernando Nava [31.2%] | 2h |  | 50 |  |
| 120 | 1.1.2.4.1.11.2 | AT - Elaboración Bocetos de Pantallas | 3.2d? | 2018-06-05 | 2018-06-07 | 119 |  |  | 2018-07-02 | 2018-07-03 | 2.4d? | 92.07d |  | Fernando Nava [31.2%] | 4h |  | 100 |  |
| 121 | 1.1.2.4.1.12 | **AT - Catalogo Tipos de Viaje** | 4.8d? | 2018-06-05 | 2018-06-07 |  |  |  | 2018-06-29 | 2018-07-03 | 4.8d? | 0d |  |  | 6h |  | 150 |  |
| 122 | 1.1.2.4.1.12.1 | AT - Elaboración Bocetos de Archivos | 1.6d? | 2018-06-05 | 2018-06-05 | 117 |  |  | 2018-06-29 | 2018-07-02 | 2.4d? | 0d |  | Fernando Nava [31.2%] | 2h |  | 50 |  |
| 123 | 1.1.2.4.1.12.2 | AT - Elaboración Bocetos de Pantallas | 3.2d? | 2018-06-05 | 2018-06-07 | 122 |  |  | 2018-07-02 | 2018-07-03 | 2.4d? | 0d |  | Fernando Nava [31.2%] | 4h |  | 100 |  |
| 124 | 1.1.2.4.1.13 | **AT - Catalogo Tipos de Carga/Descarga** | 4.8d? | 2018-06-07 | 2018-06-11 |  |  |  | 2018-07-03 | 2018-07-05 | 4.8d? | 87.27d |  |  | 6h |  | 150 |  |
| 125 | 1.1.2.4.1.13.1 | AT - Elaboración Bocetos de Archivos | 1.6d? | 2018-06-07 | 2018-06-08 | 123 |  |  | 2018-07-03 | 2018-07-04 | 2.4d? | 87.27d | 0d | Fernando Nava [31.2%] | 2h |  | 50 |  |
| 126 | 1.1.2.4.1.13.2 | AT - Elaboración Bocetos de Pantallas | 3.2d? | 2018-06-08 | 2018-06-11 | 125 |  |  | 2018-07-04 | 2018-07-05 | 2.4d? | 87.27d |  | Fernando Nava [31.2%] | 4h |  | 100 |  |

| ID | WBS | Task | Duration | Start | Finish | Predecessors | Baseline start | Baseline finish | Baseline duration | Total slack | Free slack | Resources | Work | Cost |
| --- | --- | --- | --- | --- | --- | --- | --- | --- | --- | --- | --- | --- | --- | --- |
| 127 | 1.1.2.4.1.14 | **AT - Catalogo Clientes de Entrega** | 4.8d? | 2018-06-07 | 2018-06-11 |  | 2018-07-03 | 2018-07-05 | 4.8d? | 87.27d |  |  | 6h | 150 |
| 128 | 1.1.2.4.1.14.1 | AT - Elaboración Bocetos de Archivos | 1.6d? | 2018-06-07 | 2018-06-08 | 123 | 2018-07-03 | 2018-07-04 | 2.4d? | 87.27d | 0d | Fernando Nava [31.2%] | 2h | 50 |
| 129 | 1.1.2.4.1.14.2 | AT - Elaboración Bocetos de Pantallas | 3.2d? | 2018-06-08 | 2018-06-11 | 128 | 2018-07-04 | 2018-07-05 | 2.4d? | 87.27d |  | Fernando Nava [31.2%] | 4h | 100 |
| 130 | 1.1.2.4.1.15 | **AT - Catalogo Clientes Solicidates** | 4.8d? | 2018-06-07 | 2018-06-11 |  | 2018-07-03 | 2018-07-05 | 4.8d? | 0d |  |  | 6h | 150 |
| 131 | 1.1.2.4.1.15.1 | AT - Elaboración Bocetos de Archivos | 1.6d? | 2018-06-07 | 2018-06-08 | 123 | 2018-07-03 | 2018-07-04 | 2.4d? | 0d |  | Fernando Nava [31.2%] | 2h | 50 |
| 132 | 1.1.2.4.1.15.2 | AT - Elaboración Bocetos de Pantallas | 3.2d? | 2018-06-08 | 2018-06-11 | 131 | 2018-07-04 | 2018-07-05 | 2.4d? | 0d |  | Fernando Nava [31.2%] | 4h | 100 |
| 133 | 1.1.2.4.2 | **AT - Modulo Seguridad** | 11.2d? | 2018-06-11 | 2018-06-19 |  | 2018-07-05 | 2018-07-12 | 9.6d? | 0d |  |  | 22h | 550 |
| 134 | 1.1.2.4.2.1 | **AT - Roles** | 6.4d? | 2018-06-11 | 2018-06-15 |  | 2018-07-05 | 2018-07-10 | 4.8d? | 80.87d |  |  | 8h | 200 |
| 135 | 1.1.2.4.2.1.1 | AT - Elaboración Bocetos de Archivos | 2.4d? | 2018-06-11 | 2018-06-13 | 132 | 2018-07-05 | 2018-07-09 | 2.4d? | 80.87d | 0d | Fernando Nava [31.2%] | 3h | 75 |
| 136 | 1.1.2.4.2.1.2 | AT - Elaboración Bocetos de Pantallas | 4d? | 2018-06-13 | 2018-06-15 | 135 | 2018-07-09 | 2018-07-10 | 2.4d? | 80.87d |  | Fernando Nava [31.2%] | 5h | 125 |
| 137 | 1.1.2.4.2.2 | **AT - Configuracion** | 6.4d? | 2018-06-11 | 2018-06-15 |  | 2018-07-05 | 2018-07-10 | 4.8d? | 0d |  |  | 8h | 200 |
| 138 | 1.1.2.4.2.2.1 | AT - Elaboración Bocetos de Archivos | 2.4d? | 2018-06-11 | 2018-06-13 | 132 | 2018-07-05 | 2018-07-09 | 2.4d? | 0d |  | Fernando Nava [31.2%] | 3h | 75 |
| 139 | 1.1.2.4.2.2.2 | AT - Elaboración Bocetos de Pantallas | 4d? | 2018-06-13 | 2018-06-15 | 138 | 2018-07-09 | 2018-07-10 | 2.4d? | 0d |  | Fernando Nava [31.2%] | 5h | 125 |
| 140 | 1.1.2.4.2.3 | **AT - Permisos** | 4.8d? | 2018-06-15 | 2018-06-19 |  | 2018-07-10 | 2018-07-12 | 4.8d? | 0d |  |  | 6h | 150 |
| 141 | 1.1.2.4.2.3.1 | AT - Elaboración Bocetos de Archivos | 2.4d? | 2018-06-15 | 2018-06-18 | 139 | 2018-07-10 | 2018-07-11 | 2.4d? | 0d |  | Fernando Nava [31.2%] | 3h | 75 |
| 142 | 1.1.2.4.2.3.2 | AT - Elaboración Bocetos de Pantallas | 2.4d? | 2018-06-18 | 2018-06-19 | 141 | 2018-07-11 | 2018-07-12 | 2.4d? | 0d |  | Fernando Nava [31.2%] | 3h | 75 |
| 143 | 1.1.2.4.3 | **AT - Modulo Solicitudes** | 26.67d? | 2018-06-19 | 2018-07-06 |  | 2018-07-12 | 2018-07-24 | 16d? | 0d |  |  | 40h | 1,000 |
| 144 | 1.1.2.4.3.1 | **AT - Cliente - Solicitud de Transporte** | 5.33d? | 2018-06-19 | 2018-06-22 |  | 2018-07-12 | 2018-07-17 | 5.33d? | 0d |  |  | 8h | 200 |
| 145 | 1.1.2.4.3.1.1 | AT - Elaboración Bocetos de Archivos | 2d? | 2018-06-19 | 2018-06-20 | 142 | 2018-07-12 | 2018-07-13 | 2.67d? | 0d |  | Fernando Nava [37.5%] | 3h | 75 |
| 146 | 1.1.2.4.3.1.2 | AT - Elaboración Bocetos de Pantallas | 3.33d? | 2018-06-20 | 2018-06-22 | 145 | 2018-07-13 | 2018-07-17 | 2.67d? | 0d |  | Fernando Nava [37.5%] | 5h | 125 |
| 147 | 1.1.2.4.3.2 | **AT - Trafico - Valoracion del Viaje** | 5.33d? | 2018-06-22 | 2018-06-26 |  | 2018-07-12 | 2018-07-17 | 5.33d? | 0d |  |  | 8h | 200 |
| 148 | 1.1.2.4.3.2.1 | AT - Elaboración Bocetos de Archivos | 2d? | 2018-06-22 | 2018-06-25 | 146 | 2018-07-12 | 2018-07-13 | 2.67d? | 0d |  | Fernando Nava [37.5%] | 3h | 75 |
| 149 | 1.1.2.4.3.2.2 | AT - Elaboración Bocetos de Pantallas | 3.33d? | 2018-06-25 | 2018-06-26 | 148 | 2018-07-13 | 2018-07-17 | 2.67d? | 0d |  | Fernando Nava [37.5%] | 5h | 125 |
| 150 | 1.1.2.4.3.3 | **AT - Distribucion - Asugnacion de Unidad y Carga** | 5.33d? | 2018-06-26 | 2018-06-29 |  | 2018-07-17 | 2018-07-19 | 5.33d? | 0d |  |  | 8h | 200 |
| 151 | 1.1.2.4.3.3.1 | AT - Elaboración Bocetos de Archivos | 2d? | 2018-06-26 | 2018-06-27 | 149 | 2018-07-17 | 2018-07-18 | 2.67d? | 0d |  | Fernando Nava [37.5%] | 3h | 75 |
| 152 | 1.1.2.4.3.3.2 | AT - Elaboración Bocetos de Pantallas | 3.33d? | 2018-06-27 | 2018-06-29 | 151 | 2018-07-18 | 2018-07-19 | 2.67d? | 0d |  | Fernando Nava [37.5%] | 5h | 125 |

| ID | WBS | Task | Duration | Start | Finish | Predecessors | Baseline start | Baseline finish | Baseline duration | Total slack | Free slack | Resources | Work | Cost |
| --- | --- | --- | --- | --- | --- | --- | --- | --- | --- | --- | --- | --- | --- | --- |
| 153 | 1.1.2.4.3.4 | **AT - Operador CL - Operación y Descarga** | 5.33d? | 2018-06-29 | 2018-07-04 |  | 2018-07-17 | 2018-07-19 | 5.33d? | 0d |  |  | 8h | 200 |
| 154 | 1.1.2.4.3.4.1 | AT - Elaboración Bocetos de Archivos | 2d? | 2018-06-29 | 2018-07-02 | 152 | 2018-07-17 | 2018-07-18 | 2.67d? | 0d |  | Fernando Nava [37.5%] | 3h | 75 |
| 155 | 1.1.2.4.3.4.2 | AT - Elaboración Bocetos de Pantallas | 3.33d? | 2018-07-02 | 2018-07-04 | 154 | 2018-07-18 | 2018-07-19 | 2.67d? | 0d |  | Fernando Nava [37.5%] | 5h | 125 |
| 156 | 1.1.2.4.3.5 | **AT - Distribucion - Cierre del Viaje y Facturacion** | 5.33d? | 2018-07-04 | 2018-07-06 |  | 2018-07-19 | 2018-07-24 | 5.33d? | 0d |  |  | 8h | 200 |
| 157 | 1.1.2.4.3.5.1 | AT - Elaboración Bocetos de Archivos | 2d? | 2018-07-04 | 2018-07-05 | 155 | 2018-07-19 | 2018-07-23 | 2.67d? | 0d |  | Fernando Nava [37.5%] | 3h | 75 |
| 158 | 1.1.2.4.3.5.2 | AT - Elaboración Bocetos de Pantallas | 3.33d? | 2018-07-05 | 2018-07-06 | 157 | 2018-07-23 | 2018-07-24 | 2.67d? | 0d |  | Fernando Nava [37.5%] | 5h | 125 |
| 159 | 1.1.2.4.4 | **AT - Modulo Alarmas/Reportes/Indicadores de gestión** | 9.33d? | 2018-07-06 | 2018-07-13 |  | 2018-07-24 | 2018-07-30 | 8d? | 0d |  |  | 21h | 525 |
| 160 | 1.1.2.4.4.1 | **AT - Alarmas** | 4.67d? | 2018-07-06 | 2018-07-11 |  | 2018-07-24 | 2018-07-26 | 4d? | 44.74d |  |  | 7h | 175 |
| 161 | 1.1.2.4.4.1.1 | AT - Elaboración Bocetos de Archivos | 2.67d? | 2018-07-06 | 2018-07-10 | 158 | 2018-07-24 | 2018-07-25 | 2d? | 44.74d | 0d | Fernando Nava [37.5%] | 4h | 100 |
| 162 | 1.1.2.4.4.1.2 | AT - Elaboración Bocetos de Pantallas | 2d? | 2018-07-10 | 2018-07-11 | 161 | 2018-07-25 | 2018-07-26 | 2d? | 44.74d |  | Fernando Nava [37.5%] | 3h | 75 |
| 163 | 1.1.2.4.4.2 | **AT - Reportes** | 4.67d? | 2018-07-06 | 2018-07-11 |  | 2018-07-24 | 2018-07-26 | 4d? | 0d |  |  | 7h | 175 |
| 164 | 1.1.2.4.4.2.1 | AT - Elaboración Bocetos de Archivos | 2.67d? | 2018-07-06 | 2018-07-10 | 158 | 2018-07-24 | 2018-07-25 | 2d? | 0d |  | Fernando Nava [37.5%] | 4h | 100 |
| 165 | 1.1.2.4.4.2.2 | AT - Elaboración Bocetos de Pantallas | 2d? | 2018-07-10 | 2018-07-11 | 164 | 2018-07-25 | 2018-07-26 | 2d? | 0d |  | Fernando Nava [37.5%] | 3h | 75 |
| 166 | 1.1.2.4.4.3 | **AT - Indicadores de gestión** | 4.67d? | 2018-07-11 | 2018-07-13 |  | 2018-07-26 | 2018-07-30 | 4d? | 0d |  |  | 7h | 175 |
| 167 | 1.1.2.4.4.3.1 | AT - Elaboración Bocetos de Archivos | 2.67d? | 2018-07-11 | 2018-07-12 | 165 | 2018-07-26 | 2018-07-27 | 2d? | 0d |  | Fernando Nava [37.5%] | 4h | 100 |
| 168 | 1.1.2.4.4.3.2 | AT - Elaboración Bocetos de Pantallas | 2d? | 2018-07-12 | 2018-07-13 | 167 | 2018-07-27 | 2018-07-30 | 2d? | 0d |  | Fernando Nava [37.5%] | 3h | 75 |
| 169 | 1.1.2.5 | AT - Revisión con el usuario | 1d? | 2018-07-13 | 2018-07-16 | 142, 158, 168, 59, 69 | 2018-07-30 | 2018-07-31 | 2d? | 0d |  | Omar Santiago/Fernando Nava/ITSC | 4h |  |
| 170 | 1.1.2.6 | AT - Ajustes de comentarios del usuario | 1.5d? | 2018-07-16 | 2018-07-16 | 169 | 2018-07-31 | 2018-08-01 | 2d? | 0d |  | Omar Santiago/Fernando Nava | 6h |  |
| 171 | 1.1.2.7 | AT - Peer Review y Vo Bo | 0.5d? | 2018-07-16 | 2018-07-17 | 170 | 2018-08-01 | 2018-08-02 | 2d? | 0d |  | Omar Santiago/Fernando Nava/ITSC | 2h |  |
| 172 | 1.2 | Validacion de documentacion, ultimos ajustes | 1.5d? | 2018-07-17 | 2018-07-17 | 171 | 2018-08-02 | 2018-08-03 | 2d? | 0d |  | Omar Santiago/Fernando Nava | 6h |  |
| 173 | 1.3 | **CC_Desarrollo** | 92.07d? | 2018-06-07 | 2018-08-10 |  | 2018-06-15 | 2018-08-21 | 93.35d? | 0d |  |  | 352h | 5,125 |
| 174 | 1.3.1 | **Diseño y Construcción** | 92.07d? | 2018-06-07 | 2018-08-10 |  | 2018-06-15 | 2018-08-20 | 91.35d? | 0d |  |  | 350h | 5,125 |
| 175 | 1.3.1.1 | CC - Revision del documento de Arquitectura de Solucion | 0.75d? | 2018-07-04 | 2018-07-05 | 85 | 2018-06-15 | 2018-06-18 | 2d? | 47.31d | 0d | Omar Santiago | 3h | 75 |
| 176 | 1.3.1.2 | **CC - Instalacion y Configuracion** | 5.75d? | 2018-07-05 | 2018-07-09 |  | 2018-06-18 | 2018-06-25 | 9.33d? | 47.31d |  |  | 23h | 575 |
| 177 | 1.3.1.2.1 | CC - Instalacion de herramientas de desarrollo | 2.25d? | 2018-07-05 | 2018-07-06 | 175 | 2018-06-18 | 2018-06-21 | 6d? | 47.31d | 0d | Omar Santiago | 9h | 225 |
| 178 | 1.3.1.2.2 | CC - Instalacion de herramientas de gestion de Bases de Datos | 2.25d? | 2018-07-06 | 2018-07-09 | 177 | 2018-06-18 | 2018-06-21 | 6d? | 47.31d | 0d | Omar Santiago | 9h | 225 |
| 179 | 1.3.1.2.3 | CC - Instalacion de herramienta para soportar aplicaciones web | 1.25d? | 2018-07-09 | 2018-07-09 | 178 | 2018-06-21 | 2018-06-25 | 3.33d? | 47.31d |  | Omar Santiago | 5h | 125 |

| ID | WBS | Task | Duration | Start | Finish | Predecessors | Baseline start | Baseline finish | Baseline duration | Total slack | Resources | Work | Cost |
| --- | --- | --- | --- | --- | --- | --- | --- | --- | --- | --- | --- | --- | --- |
| 180 | 1.3.1.3 | **CC - Desarrollo** | 92.07d? | 2018-06-07 | 2018-08-10 |  | 2018-06-18 | 2018-07-31 | 62.85d? | 0d |  | 159h | 3,525 |
| 181 | 1.3.1.3.1 | **CC - Modulo Catalogos Maestros** | 15d? | 2018-07-17 | 2018-07-27 |  | 2018-06-18 | 2018-07-06 | 29.25d? | 0d |  | 60h | 1,500 |
| 182 | 1.3.1.3.1.1 | CC - Catalogo Rol | 1d? | 2018-07-17 | 2018-07-18 | 172 | 2018-06-19 | 2018-06-20 | 2d? | 0d | Omar Santiago | 4h | 100 |
| 183 | 1.3.1.3.1.2 | CC - Catalogo Actores | 1d? | 2018-07-18 | 2018-07-18 | 182 | 2018-06-18 | 2018-06-19 | 2d? | 0d | Omar Santiago | 4h | 100 |
| 184 | 1.3.1.3.1.3 | CC - Catalogo Actores-Roles | 1d? | 2018-07-18 | 2018-07-19 | 183 | 2018-06-20 | 2018-06-21 | 2d? | 0d | Omar Santiago | 4h | 100 |
| 185 | 1.3.1.3.1.4 | CC - Catalogo Contratos | 1d? | 2018-07-19 | 2018-07-19 | 184 | 2018-06-20 | 2018-06-21 | 2d? | 0d | Omar Santiago | 4h | 100 |
| 186 | 1.3.1.3.1.5 | CC - Catalogo Tipos de Tarifa | 1d? | 2018-07-19 | 2018-07-20 | 185 | 2018-06-22 | 2018-06-25 | 2d? | 0d | Omar Santiago | 4h | 100 |
| 187 | 1.3.1.3.1.6 | CC - Catalogo Tarifa | 1d? | 2018-07-20 | 2018-07-20 | 186 | 2018-06-22 | 2018-06-25 | 2d? | 0d | Omar Santiago | 4h | 100 |
| 188 | 1.3.1.3.1.7 | CC - Catalogo Conceptos de Tarifa | 1d? | 2018-07-20 | 2018-07-23 | 187 | 2018-06-27 | 2018-06-28 | 2d? | 0d | Omar Santiago | 4h | 100 |
| 189 | 1.3.1.3.1.8 | CC - Catalogo Choferes | 1d? | 2018-07-23 | 2018-07-23 | 188 | 2018-06-27 | 2018-06-28 | 2d? | 0d | Omar Santiago | 4h | 100 |
| 190 | 1.3.1.3.1.9 | CC - Catalogo Camiones | 1d? | 2018-07-23 | 2018-07-24 | 189 | 2018-06-29 | 2018-07-02 | 2d? | 0d | Omar Santiago | 4h | 100 |
| 191 | 1.3.1.3.1.10 | CC - Catalogo Responsables de Incidencias | 1d? | 2018-07-24 | 2018-07-24 | 190 | 2018-06-29 | 2018-07-02 | 2d? | 0d | Omar Santiago | 4h | 100 |
| 192 | 1.3.1.3.1.11 | CC - Catalogo Tipos de Incidencias | 1d? | 2018-07-24 | 2018-07-25 | 191 | 2018-07-03 | 2018-07-04 | 2d? | 0d | Omar Santiago | 4h | 100 |
| 193 | 1.3.1.3.1.12 | CC - Catalogo Tipos de Viaje | 1d? | 2018-07-25 | 2018-07-25 | 192 | 2018-07-03 | 2018-07-04 | 2d? | 0d | Omar Santiago | 4h | 100 |
| 194 | 1.3.1.3.1.13 | CC - Catalogo Tipos de Carga/Descarga | 1d? | 2018-07-25 | 2018-07-26 | 193 | 2018-07-05 | 2018-07-06 | 2d? | 0d | Omar Santiago | 4h | 100 |
| 195 | 1.3.1.3.1.14 | CC - Catalogo Clientes de Entrega | 1d? | 2018-07-26 | 2018-07-26 | 194 | 2018-07-05 | 2018-07-06 | 2d? | 0d | Omar Santiago | 4h | 100 |
| 196 | 1.3.1.3.1.15 | CC - Catalogo Clientes Solicidates | 1d? | 2018-07-26 | 2018-07-27 | 195 | 2018-07-05 | 2018-07-06 | 2d? | 0d | Omar Santiago | 4h | 100 |
| 197 | 1.3.1.3.2 | **CC - Modulo Seguridad** | 5.5d? | 2018-07-27 | 2018-08-01 |  | 2018-07-10 | 2018-07-16 | 8.8d? | 0d |  | 22h | 550 |
| 198 | 1.3.1.3.2.1 | CC - Roles | 1.75d? | 2018-07-27 | 2018-07-30 | 196 | 2018-07-10 | 2018-07-11 | 3.5d? | 0d | Omar Santiago | 7h | 175 |
| 199 | 1.3.1.3.2.2 | CC - Configuracion | 1.75d? | 2018-07-30 | 2018-07-31 | 198 | 2018-07-10 | 2018-07-11 | 3.5d? | 0d | Omar Santiago | 7h | 175 |
| 200 | 1.3.1.3.2.3 | CC - Permisos | 2d? | 2018-07-31 | 2018-08-01 | 199 | 2018-07-12 | 2018-07-16 | 4d? | 0d | Omar Santiago | 8h | 200 |
| 201 | 1.3.1.3.3 | **CC - Modulo Solicitudes** | 15.07d? | 2018-08-01 | 2018-08-10 |  | 2018-07-17 | 2018-07-30 | 18.99d? | 0d |  | 53h | 875 |
| 202 | 1.3.1.3.3.1 | CC - Cliente - Solicitud de Transporte | 1.75d? | 2018-08-01 | 2018-08-01 | 200 | 2018-07-17 | 2018-07-18 | 2d? | 0d | Omar Santiago | 7h | 175 |
| 203 | 1.3.1.3.3.2 | CC - Trafico - Valoracion del Viaje | 1.75d? | 2018-08-01 | 2018-08-02 | 202 | 2018-07-17 | 2018-07-18 | 2d? | 0d | Omar Santiago | 7h | 175 |
| 204 | 1.3.1.3.3.3 | CC - Distribucion - Asugnacion de Unidad y Carga | 1.75d? | 2018-08-02 | 2018-08-03 | 203 | 2018-07-19 | 2018-07-20 | 2d? | 0d | Omar Santiago | 7h | 175 |
| 205 | 1.3.1.3.3.4 | CC - Operador CL - Operación y Descarga | 1.75d? | 2018-08-03 | 2018-08-06 | 204 | 2018-07-19 | 2018-07-20 | 2d? | 0d | Omar Santiago | 7h | 175 |
| 206 | 1.3.1.3.3.5 | CC - Distribucion - Cierre del Viaje y Facturacion | 1.75d? | 2018-08-06 | 2018-08-07 | 205 | 2018-07-24 | 2018-07-25 | 2d? | 0d | Omar Santiago | 7h | 175 |

| ID | WBS | Task | Duration | Start | Finish | Predecessors | Baseline start | Baseline finish | Baseline duration | Total slack | Free slack | Resources | Work | Cost |
| --- | --- | --- | --- | --- | --- | --- | --- | --- | --- | --- | --- | --- | --- | --- |
| 207 | 1.3.1.3.3.6 | **CC - Primer Check point operativo** | 4d? | 2018-08-07 | 2018-08-09 |  | 2018-07-25 | 2018-07-27 | 4d? | 0d |  |  | 9h |  |
| 208 | 1.3.1.3.3.6.1 | CC - Primer Check point operativo | 2d? | 2018-08-07 | 2018-08-08 | 206 | 2018-07-25 | 2018-07-26 | 2d? | 0d |  | Omar Santiago/ITSC [25%] | 2h |  |
| 209 | 1.3.1.3.3.6.2 | CC - Actualizacion de los puntos del primer Ckeckpoint | 2d? | 2018-08-08 | 2018-08-09 | 208 | 2018-07-26 | 2018-07-27 | 2d? | 0d |  | Omar Santiago/ITSC [87.5%] | 7h |  |
| 210 | 1.3.1.3.3.7 | **CC - Segundo Check point operativo** | 2.32d? | 2018-08-09 | 2018-08-10 |  | 2018-07-27 | 2018-07-30 | 2.32d? | 0d |  |  | 9h |  |
| 211 | 1.3.1.3.3.7.1 | CC - Segundo Check point operativo | 0.57d? | 2018-08-09 | 2018-08-09 | 209 | 2018-07-27 | 2018-07-27 | 0.57d? | 0d |  | Omar Santiago/ITSC [87.5%] | 2h |  |
| 212 | 1.3.1.3.3.7.2 | CC - Actualizacion de los puntos del segundo Check point operativo | 1.75d? | 2018-08-09 | 2018-08-10 | 211 | 2018-07-27 | 2018-07-30 | 1.75d? | 0d |  | Omar Santiago/ITSC | 7h |  |
| 213 | 1.3.1.3.4 | **CC - Modulo Alarmas/Reportes/Indicadores de gestión** | 6d? | 2018-06-07 | 2018-06-12 |  | 2018-07-26 | 2018-07-31 | 6d? | 66.32d |  |  | 24h | 600 |
| 214 | 1.3.1.3.4.1 | CC - Alarmas | 2d? | 2018-06-07 | 2018-06-08 | 121 | 2018-07-26 | 2018-07-27 | 2d? | 66.32d | 0d | Omar Santiago | 8h | 200 |
| 215 | 1.3.1.3.4.2 | CC - Reportes | 2d? | 2018-06-08 | 2018-06-11 | 214 | 2018-07-26 | 2018-07-27 | 2d? | 66.32d | 0d | Omar Santiago | 8h | 200 |
| 216 | 1.3.1.3.4.3 | CC - Indicadores de gestión | 2d? | 2018-06-11 | 2018-06-12 | 215 | 2018-07-30 | 2018-07-31 | 2d? | 66.32d | 0d | Omar Santiago | 8h | 200 |
| 217 | 1.3.1.4 | **PU - Pruebas Untarias** | 84.5d? | 2018-06-08 | 2018-08-07 |  | 2018-06-19 | 2018-08-01 | 62.85d? | 5.57d |  |  | 75h |  |
| 218 | 1.3.1.4.1 | **PU - Modulo Catalogos Maestros** | 14.5d? | 2018-07-18 | 2018-07-27 |  | 2018-06-19 | 2018-07-09 | 29.25d? | 20.07d |  |  | 30h |  |
| 219 | 1.3.1.4.1.1 | PU - Catalogo Rol | 0.5d? | 2018-07-18 | 2018-07-18 | 182 | 2018-06-20 | 2018-06-21 | 2d? | 34.07d |  | Omar Santiago/Fernando Nava | 2h |  |
| 220 | 1.3.1.4.1.2 | PU - Catalogo Actores | 0.5d? | 2018-07-18 | 2018-07-19 | 183 | 2018-06-19 | 2018-06-19 | 0.5d? | 33.07d |  | Omar Santiago/Fernando Nava | 2h |  |
| 221 | 1.3.1.4.1.3 | PU - Catalogo Actores-Roles | 0.5d? | 2018-07-19 | 2018-07-19 | 184 | 2018-06-21 | 2018-06-22 | 2d? | 32.07d |  | Omar Santiago/Fernando Nava | 2h |  |
| 222 | 1.3.1.4.1.4 | PU - Catalogo Contratos | 0.5d? | 2018-07-19 | 2018-07-20 | 185 | 2018-06-21 | 2018-06-22 | 2d? | 31.07d |  | Omar Santiago/Fernando Nava | 2h |  |
| 223 | 1.3.1.4.1.5 | PU - Catalogo Tipos de Tarifa | 0.5d? | 2018-07-20 | 2018-07-20 | 186 | 2018-06-25 | 2018-06-26 | 2d? | 30.07d |  | Omar Santiago/Fernando Nava | 2h |  |
| 224 | 1.3.1.4.1.6 | PU - Catalogo Tarifa | 0.5d? | 2018-07-20 | 2018-07-23 | 187 | 2018-06-25 | 2018-06-26 | 2d? | 29.07d |  | Omar Santiago/Fernando Nava | 2h |  |
| 225 | 1.3.1.4.1.7 | PU - Catalogo Conceptos de Tarifa | 0.5d? | 2018-07-23 | 2018-07-23 | 188 | 2018-06-28 | 2018-06-29 | 2d? | 28.07d |  | Omar Santiago/Fernando Nava | 2h |  |
| 226 | 1.3.1.4.1.8 | PU - Catalogo Choferes | 0.5d? | 2018-07-23 | 2018-07-24 | 189 | 2018-06-28 | 2018-06-29 | 2d? | 27.07d |  | Omar Santiago/Fernando Nava | 2h |  |
| 227 | 1.3.1.4.1.9 | PU - Catalogo Camiones | 0.5d? | 2018-07-24 | 2018-07-24 | 190 | 2018-07-02 | 2018-07-03 | 2d? | 26.07d |  | Omar Santiago/Fernando Nava | 2h |  |
| 228 | 1.3.1.4.1.10 | PU - Catalogo Responsables de Incidencias | 0.5d? | 2018-07-24 | 2018-07-25 | 191 | 2018-07-02 | 2018-07-03 | 2d? | 25.07d |  | Omar Santiago/Fernando Nava | 2h |  |
| 229 | 1.3.1.4.1.11 | PU - Catalogo Tipos de Incidencias | 0.5d? | 2018-07-25 | 2018-07-25 | 192 | 2018-07-04 | 2018-07-05 | 2d? | 24.07d |  | Omar Santiago/Fernando Nava | 2h |  |
| 230 | 1.3.1.4.1.12 | PU - Catalogo Tipos de Viaje | 0.5d? | 2018-07-25 | 2018-07-26 | 193 | 2018-07-04 | 2018-07-05 | 2d? | 23.07d |  | Omar Santiago/Fernando Nava | 2h |  |
| 231 | 1.3.1.4.1.13 | PU - Catalogo Tipos de Carga/Descarga | 0.5d? | 2018-07-26 | 2018-07-26 | 194 | 2018-07-06 | 2018-07-09 | 2d? | 22.07d |  | Omar Santiago/Fernando Nava | 2h |  |
| 232 | 1.3.1.4.1.14 | PU - Catalogo Clientes de Entrega | 0.5d? | 2018-07-26 | 2018-07-27 | 195 | 2018-07-06 | 2018-07-09 | 2d? | 21.07d |  | Omar Santiago/Fernando Nava | 2h |  |
| 233 | 1.3.1.4.1.15 | PU - Catalogo Clientes Solicidates | 0.5d? | 2018-07-27 | 2018-07-27 | 196 | 2018-07-06 | 2018-07-09 | 2d? | 20.07d |  | Omar Santiago/Fernando Nava | 2h |  |

| ID | WBS | Task | Duration | Start | Finish | Predecessors | Baseline start | Baseline finish | Baseline duration | Total slack | Free slack | Resources | Work | Cost |
| --- | --- | --- | --- | --- | --- | --- | --- | --- | --- | --- | --- | --- | --- | --- |
| 234 | 1.3.1.4.2 | **PU - Modulo Seguridad** | 4.25d? | 2018-07-30 | 2018-08-01 |  | 2018-07-11 | 2018-07-17 | 7.3d? | 14.57d |  |  | 6h |  |
| 235 | 1.3.1.4.2.1 | PU - Roles | 0.5d? | 2018-07-30 | 2018-07-30 | 198 | 2018-07-11 | 2018-07-12 | 2d? | 18.32d |  | Omar Santiago/Fernando Nava | 2h |  |
| 236 | 1.3.1.4.2.2 | PU - Configuracion | 0.5d? | 2018-07-31 | 2018-07-31 | 199 | 2018-07-11 | 2018-07-12 | 2d? | 16.57d |  | Omar Santiago/Fernando Nava | 2h |  |
| 237 | 1.3.1.4.2.3 | PU - Permisos | 0.5d? | 2018-08-01 | 2018-08-01 | 200 | 2018-07-16 | 2018-07-17 | 2d? | 14.57d |  | Omar Santiago/Fernando Nava | 2h |  |
| 238 | 1.3.1.4.3 | **PU - Modulo Solicitudes** | 7.75d? | 2018-08-01 | 2018-08-07 |  | 2018-07-18 | 2018-07-26 | 12.67d? | 5.57d |  |  | 15h |  |
| 239 | 1.3.1.4.3.1 | PU - Cliente - Solicitud de Transporte | 0.75d? | 2018-08-01 | 2018-08-02 | 202 | 2018-07-18 | 2018-07-19 | 2d? | 12.57d |  | Omar Santiago/Fernando Nava | 3h |  |
| 240 | 1.3.1.4.3.2 | PU - Trafico - Valoracion del Viaje | 0.75d? | 2018-08-02 | 2018-08-03 | 203 | 2018-07-18 | 2018-07-19 | 2d? | 10.82d |  | Omar Santiago/Fernando Nava | 3h |  |
| 241 | 1.3.1.4.3.3 | PU - Distribucion - Asugnacion de Unidad y Carga | 0.75d? | 2018-08-03 | 2018-08-06 | 204 | 2018-07-20 | 2018-07-23 | 2d? | 9.07d |  | Omar Santiago/Fernando Nava | 3h |  |
| 242 | 1.3.1.4.3.4 | PU - Operador CL - Operación y Descarga | 0.75d? | 2018-08-06 | 2018-08-06 | 205 | 2018-07-20 | 2018-07-23 | 2d? | 7.32d |  | Omar Santiago/Fernando Nava | 3h |  |
| 243 | 1.3.1.4.3.5 | PU - Distribucion - Cierre del Viaje y Facturacion | 0.75d? | 2018-08-07 | 2018-08-07 | 206 | 2018-07-25 | 2018-07-26 | 2d? | 5.57d |  | Omar Santiago/Fernando Nava | 3h |  |
| 244 | 1.3.1.4.4 | **PU - Modulo Alarmas/Reportes/Indicadores de gestión** | 6d? | 2018-06-08 | 2018-06-13 |  | 2018-07-27 | 2018-08-01 | 6d? | 70.32d |  |  | 24h |  |
| 245 | 1.3.1.4.4.1 | PU - Alarmas | 2d? | 2018-06-08 | 2018-06-11 | 214 | 2018-07-27 | 2018-07-30 | 2d? | 88.07d |  | Omar Santiago/Fernando Nava | 8h |  |
| 246 | 1.3.1.4.4.2 | PU - Reportes | 2d? | 2018-06-11 | 2018-06-12 | 215 | 2018-07-27 | 2018-07-30 | 2d? | 86.07d |  | Omar Santiago/Fernando Nava | 8h |  |
| 247 | 1.3.1.4.4.3 | PU - Indicadores de gestión | 2d? | 2018-06-12 | 2018-06-13 | 216 | 2018-07-31 | 2018-08-01 | 2d? | 66.32d | 0d | Omar Santiago/Fernando Nava | 8h |  |
| 248 | 1.3.1.5 | **TD - Termina Desarrollo** | 9.5d? | 2018-06-13 | 2018-06-20 |  | 2018-08-01 | 2018-08-09 | 11d? | 66.32d |  |  | 38h | 950 |
| 249 | 1.3.1.5.1 | **TD - Configuracion en Ambiente QA o TEST** | 9.5d? | 2018-06-13 | 2018-06-20 |  | 2018-08-01 | 2018-08-09 | 11d? | 66.32d | 0d |  | 38h | 950 |
| 250 | 1.3.1.5.1.1 | Configuracion de Java 7 u 8 | 1.5d? | 2018-06-13 | 2018-06-14 | 247 | 2018-08-01 | 2018-08-02 | 2d? | 66.32d | 0d | Omar Santiago | 6h | 150 |
| 251 | 1.3.1.5.1.2 | Configuracion de Mysql y complementos | 1.5d? | 2018-06-14 | 2018-06-15 | 250 | 2018-08-02 | 2018-08-03 | 2d? | 66.32d | 0d | Omar Santiago | 6h | 150 |
| 252 | 1.3.1.5.1.3 | Configuracion de Apache Tomcat | 1.5d? | 2018-06-15 | 2018-06-15 | 251 | 2018-08-03 | 2018-08-06 | 2d? | 66.32d | 0d | Omar Santiago | 6h | 150 |
| 253 | 1.3.1.5.1.4 | Configuracion AppWeb v1 | 5d? | 2018-06-15 | 2018-06-20 | 252 | 2018-08-06 | 2018-08-09 | 5d? | 66.32d |  | Omar Santiago | 20h | 500 |
| 254 | 1.3.1.6 | **PI - Pruebas Integrales** | 5.75d? | 2018-06-20 | 2018-06-25 |  | 2018-08-09 | 2018-08-20 | 14d? | 66.32d |  |  | 52h |  |
| 255 | 1.3.1.6.1 | **PI - Modulo Catalogos Maestros** | 0.5d? | 2018-06-20 | 2018-06-20 |  | 2018-08-09 | 2018-08-13 | 4d? | 66.32d |  |  | 15h |  |
| 256 | 1.3.1.6.1.1 | PI - Catalogo Rol | 0.25d? | 2018-06-20 | 2018-06-20 | 249 | 2018-08-09 | 2018-08-10 | 2d? | 74.32d |  | Omar Santiago/Fernando Nava/ITSC | 1h |  |
| 257 | 1.3.1.6.1.2 | PI - Catalogo Actores | 0.25d? | 2018-06-20 | 2018-06-20 | 249 | 2018-08-09 | 2018-08-10 | 2d? | 74.32d |  | Omar Santiago/Fernando Nava/ITSC | 1h |  |
| 258 | 1.3.1.6.1.3 | PI - Catalogo Actores-Roles | 0.25d? | 2018-06-20 | 2018-06-20 | 249 | 2018-08-09 | 2018-08-10 | 2d? | 74.32d |  | Omar Santiago/Fernando Nava/ITSC | 1h |  |
| 259 | 1.3.1.6.1.4 | PI - Catalogo Contratos | 0.25d? | 2018-06-20 | 2018-06-20 | 249 | 2018-08-09 | 2018-08-10 | 2d? | 74.32d |  | Omar Santiago/Fernando Nava/ITSC | 1h |  |
| 260 | 1.3.1.6.1.5 | PI - Catalogo Tipos de Tarifa | 0.25d? | 2018-06-20 | 2018-06-20 | 249 | 2018-08-09 | 2018-08-10 | 2d? | 74.32d |  | Omar Santiago/Fernando Nava/ITSC | 1h |  |
| 261 | 1.3.1.6.1.6 | PI - Catalogo Tarifa | 0.25d? | 2018-06-20 | 2018-06-20 | 249 | 2018-08-09 | 2018-08-10 | 2d? | 74.32d |  | Omar Santiago/Fernando Nava/ITSC | 1h |  |
| 262 | 1.3.1.6.1.7 | PI - Catalogo Conceptos de Tarifa | 0.25d? | 2018-06-20 | 2018-06-20 | 249 | 2018-08-09 | 2018-08-10 | 2d? | 74.32d |  | Omar Santiago/Fernando Nava/ITSC | 1h |  |
| 263 | 1.3.1.6.1.8 | PI - Catalogo Choferes | 0.25d? | 2018-06-20 | 2018-06-20 | 249 | 2018-08-09 | 2018-08-10 | 2d? | 74.32d |  | Omar Santiago/Fernando Nava/ITSC | 1h |  |
| 264 | 1.3.1.6.1.9 | PI - Catalogo Camiones | 0.25d? | 2018-06-20 | 2018-06-20 | 249 | 2018-08-09 | 2018-08-10 | 2d? | 74.32d |  | Omar Santiago/Fernando Nava/ITSC | 1h |  |
| 265 | 1.3.1.6.1.10 | PI - Catalogo Responsables de Incidencias | 0.25d? | 2018-06-20 | 2018-06-20 | 249 | 2018-08-09 | 2018-08-10 | 2d? | 66.32d | 0d | Omar Santiago/Fernando Nava/ITSC | 1h |  |
| 266 | 1.3.1.6.1.11 | PI - Catalogo Tipos de Incidencias | 0.25d? | 2018-06-20 | 2018-06-20 | 265 | 2018-08-10 | 2018-08-13 | 2d? | 74.07d |  | Omar Santiago/Fernando Nava/ITSC | 1h |  |
| 267 | 1.3.1.6.1.12 | PI - Catalogo Tipos de Viaje | 0.25d? | 2018-06-20 | 2018-06-20 | 265 | 2018-08-10 | 2018-08-13 | 2d? | 74.07d |  | Omar Santiago/Fernando Nava/ITSC | 1h |  |
| 268 | 1.3.1.6.1.13 | PI - Catalogo Tipos de Carga/Descarga | 0.25d? | 2018-06-20 | 2018-06-20 | 265 | 2018-08-10 | 2018-08-13 | 2d? | 74.07d |  | Omar Santiago/Fernando Nava/ITSC | 1h |  |
| 269 | 1.3.1.6.1.14 | PI - Catalogo Clientes de Entrega | 0.25d? | 2018-06-20 | 2018-06-20 | 265 | 2018-08-10 | 2018-08-13 | 2d? | 74.07d |  | Omar Santiago/Fernando Nava/ITSC | 1h |  |
| 270 | 1.3.1.6.1.15 | PI - Catalogo Clientes Solicidates | 0.25d? | 2018-06-20 | 2018-06-20 | 265 | 2018-08-10 | 2018-08-13 | 2d? | 66.32d | 0d | Omar Santiago/Fernando Nava/ITSC | 1h |  |

| ID | WBS | Task | Duration | Start | Finish | Predecessors | Complete | Baseline start | Baseline finish | Baseline duration | Total slack | Free slack | Resources | Work |
| --- | --- | --- | --- | --- | --- | --- | --- | --- | --- | --- | --- | --- | --- | --- |
| 271 | 1.3.1.6.2 | **PI - Modulo Seguridad** | 0.25d? | 2018-06-20 | 2018-06-20 |  |  | 2018-08-13 | 2018-08-14 | 2d? | 66.32d |  |  | 3h |
| 272 | 1.3.1.6.2.1 | PI - Roles | 0.25d? | 2018-06-20 | 2018-06-20 | 270 |  | 2018-08-13 | 2018-08-14 | 2d? | 73.82d |  | Omar Santiago/Fernando Nava/ITSC | 1h |
| 273 | 1.3.1.6.2.2 | PI - Configuracion | 0.25d? | 2018-06-20 | 2018-06-20 | 270 |  | 2018-08-13 | 2018-08-14 | 2d? | 73.82d |  | Omar Santiago/Fernando Nava/ITSC | 1h |
| 274 | 1.3.1.6.2.3 | PI - Permisos | 0.25d? | 2018-06-20 | 2018-06-20 | 270 |  | 2018-08-13 | 2018-08-14 | 2d? | 66.32d | 0d | Omar Santiago/Fernando Nava/ITSC | 1h |
| 275 | 1.3.1.6.3 | **PI - Modulo Solicitudes** | 1d? | 2018-06-20 | 2018-06-21 |  |  | 2018-08-14 | 2018-08-16 | 4d? | 66.32d |  |  | 10h |
| 276 | 1.3.1.6.3.1 | PI - Cliente - Solicitud de Transporte | 0.5d? | 2018-06-20 | 2018-06-20 | 274 |  | 2018-08-14 | 2018-08-15 | 2d? | 73.32d |  | Omar Santiago/Fernando Nava/ITSC | 2h |
| 277 | 1.3.1.6.3.2 | PI - Trafico - Valoracion del Viaje | 0.5d? | 2018-06-20 | 2018-06-20 | 274 |  | 2018-08-14 | 2018-08-15 | 2d? | 73.32d |  | Omar Santiago/Fernando Nava/ITSC | 2h |
| 278 | 1.3.1.6.3.3 | PI - Distribucion - Asugnacion de Unidad y Carga | 0.5d? | 2018-06-20 | 2018-06-20 | 274 |  | 2018-08-14 | 2018-08-15 | 2d? | 66.32d | 0d | Omar Santiago/Fernando Nava/ITSC | 2h |
| 279 | 1.3.1.6.3.4 | PI - Operador CL - Operación y Descarga | 0.5d? | 2018-06-20 | 2018-06-21 | 278 |  | 2018-08-15 | 2018-08-16 | 2d? | 72.82d |  | Omar Santiago/Fernando Nava/ITSC | 2h |
| 280 | 1.3.1.6.3.5 | PI - Distribucion - Cierre del Viaje y Facturacion | 0.5d? | 2018-06-20 | 2018-06-21 | 278 |  | 2018-08-15 | 2018-08-16 | 2d? | 66.32d | 0d | Omar Santiago/Fernando Nava/ITSC | 2h |
| 281 | 1.3.1.6.4 | **PI - Modulo Alarmas/Reportes/Indicadores de gestión** | 4d? | 2018-06-21 | 2018-06-25 |  |  | 2018-08-16 | 2018-08-20 | 4d? | 66.32d |  |  | 24h |
| 282 | 1.3.1.6.4.1 | PI - Alarmas | 2d? | 2018-06-21 | 2018-06-22 | 280 |  | 2018-08-16 | 2018-08-17 | 2d? | 70.82d |  | Omar Santiago/Fernando Nava/ITSC | 8h |
| 283 | 1.3.1.6.4.2 | PI - Reportes | 2d? | 2018-06-21 | 2018-06-22 | 280 |  | 2018-08-16 | 2018-08-17 | 2d? | 66.32d | 0d | Omar Santiago/Fernando Nava/ITSC | 8h |
| 284 | 1.3.1.6.4.3 | PI - Indicadores de gestión | 2d? | 2018-06-22 | 2018-06-25 | 283 |  | 2018-08-17 | 2018-08-20 | 2d? | 66.32d | 0d | Omar Santiago/Fernando Nava/ITSC | 8h |
| 285 | 1.3.2 | PI - Cierre Pruebas Integrales | 0.5d? | 2018-06-25 | 2018-06-25 | 284 |  | 2018-08-20 | 2018-08-21 | 2d? | 66.32d | 0d | Omar Santiago/Fernando Nava/ITSC | 2h |
| 286 | 2 | **LB - Liberacion a Produccion** | 2d? | 2018-06-25 | 2018-06-26 |  |  | 2018-08-21 | 2018-08-22 | 2d? | 66.32d |  |  | 8h |
| 287 | 2.1 | LB - Liberacion y Cierre | 2d? | 2018-06-25 | 2018-06-26 | 285 |  | 2018-08-21 | 2018-08-22 | 2d? | 66.32d |  | Omar Santiago/Fernando Nava/ITSC | 8h |
| 288 | 3 | Monitoreo y Control | 2d? | 2018-06-04 A | 2018-06-04 A |  | 100% | 2018-05-24 | 2018-05-24 | 2d? |  |  |  |  |
