# Plan_AN_AT_CC_29052018v4.xls

Schedule from MS Project, 2018-06-01 to 2018-08-09, status date 2018-05-29, 4 hours a day, costs in $, A marks actual dates.

## Calendars

- Copia de Estándar 4hrs: Mon-Fri 19:00-23:00; Sat-Sun off.

## Resources

| Resource | Rate |
| --- | --- |
| Omar Santiago/Fernando Nava |  |
| ITSC |  |
| Omar Santiago | 25 |
| cliente |  |
| Fernando Nava | 25 |
| Omar Santiago/Fernando Nava/ITSC |  |
| Omar Santiago/ITSC |  |

## Schedule

| ID | WBS | Task | Duration | Start | Finish | Predecessors | Complete | Remaining | Baseline start | Baseline finish | Baseline duration | Total slack | Free slack | Constraint | Resources | Work | Actual work | Cost | Actual cost |
| --- | --- | --- | --- | --- | --- | --- | --- | --- | --- | --- | --- | --- | --- | --- | --- | --- | --- | --- | --- |
| 1 | 1 | **001-ITSC_TMS Plan de Analisis y Desarrollo** | 50d? | 2018-06-01 19:00 A | 2018-08-09 23:00 |  | 1% | 49.41d? | 2018-05-24 09:00 | 2018-08-21 09:54 | 126.22d? | 0d |  |  |  | 832.5h | 7h | 14,447.73 | 150 |
| 2 | 1.1 | Inicio de Actividades | 1d? | 2018-06-01 19:00 | 2018-06-01 23:00 |  |  |  |  |  |  | 45d | 0d | start no earlier than 2018-06-01 19:00 |  |  |  |  |  |
| 3 | 1.2 | **AN_Analisis** | 49d? | 2018-06-04 09:00 A | 2018-08-09 23:00 |  | 2% | 48.15d? | 2018-05-24 09:00 | 2018-08-02 15:54 | 101.22d? | 0d |  |  |  | 472.5h | 7h | 9,322.73 | 150 |
| 4 | 1.2.1 | **AN Analisis de Negocio** | 34d? | 2018-06-04 09:00 A | 2018-07-20 11:00 |  | 6% | 31.81d? | 2018-05-24 09:00 | 2018-05-30 19:00 | 10d | 14d |  |  |  | 150h | 3h | 3,547.73 | 50 |
| 5 | 1.2.1.1 | **AN - Modulo Catalogos Maestros** | 26d? | 2018-06-04 09:00 A | 2018-07-09 23:00 |  | 2% | 25.5d? | 2018-05-24 09:00 | 2018-07-05 17:30 | 61.62d? | 22d |  |  |  | 103h | 2h | 2,575 | 50 |
| 6 | 1.2.1.1.1 | **AN - Catalogo Rol** | 2d | 2018-06-04 09:00 | 2018-06-05 23:00 |  |  |  | 2018-06-15 12:30 | 2018-06-19 17:42 | 4.8d | 44d |  |  |  | 7h |  | 175 |  |
| 7 | 1.2.1.1.1.1 | AN - Requerimientos de Negocio | 0.5d | 2018-06-04 09:00 | 2018-06-04 11:00 | 2 |  |  | 2018-06-15 12:30 | 2018-06-18 16:06 | 2.4d | 45d | 1d |  | Fernando Nava | 2h |  | 50 |  |
| 8 | 1.2.1.1.1.2 | AN - Casos de Uso | 1.25d | 2018-06-05 12:00 | 2018-06-05 23:00 | 7 |  |  | 2018-06-18 16:06 | 2018-06-19 17:42 | 2.4d | 44d | 0d | finish no earlier than 2018-06-05 23:00 | Fernando Nava | 5h |  | 125 |  |
| 9 | 1.2.1.1.2 | **AN - Catalogo Actores** | 2d? | 2018-06-04 09:00 | 2018-06-05 23:00 |  |  |  | 2018-06-15 12:30 | 2018-06-18 10:30 | 1.5d? | 46d |  |  |  | 7h |  | 175 |  |
| 10 | 1.2.1.1.2.1 | AN - Requerimientos de Negocio | 0.5d? | 2018-06-04 09:00 | 2018-06-04 11:00 | 2, 8 |  |  | 2018-06-15 12:30 | 2018-06-15 17:30 | 0.75d? | 47d | 1d |  | Omar Santiago | 2h |  | 50 |  |
| 11 | 1.2.1.1.2.2 | AN - Casos de Uso | 1.25d? | 2018-06-05 12:00 | 2018-06-05 23:00 | 10 |  |  | 2018-06-15 17:30 | 2018-06-18 10:30 | 0.75d? | 46d | 0d | finish no earlier than 2018-06-05 23:00 | Omar Santiago | 5h |  | 125 |  |
| 12 | 1.2.1.1.3 | **AN - Catalogo Actores-Roles** | 1d? | 2018-06-06 09:00 | 2018-06-07 12:42 |  |  |  | 2018-06-18 10:30 | 2018-06-20 15:42 | 4.8d? | 44d |  |  |  | 7h |  | 175 |  |
| 13 | 1.2.1.1.3.1 | AN - Requerimientos de Negocio | 0.5d? | 2018-06-06 09:00 | 2018-06-06 11:00 | 8, 11 |  |  | 2018-06-18 10:30 | 2018-06-19 12:06 | 2.4d? | 44d | 0d |  | Fernando Nava | 2h |  | 50 |  |
| 14 | 1.2.1.1.3.2 | AN - Casos de Uso | 1.25d? | 2018-06-06 11:00 | 2018-06-07 12:42 | 13 |  |  | 2018-06-19 12:06 | 2018-06-20 15:42 | 2.4d? | 44d | 0d |  | Fernando Nava | 5h |  | 125 |  |
| 15 | 1.2.1.1.4 | **AN - Catalogo Contratos** | 2d? | 2018-06-06 09:00 | 2018-06-07 23:00 |  |  |  | 2018-06-18 10:30 | 2018-06-20 15:42 | 4.8d? | 44d |  |  |  | 7h |  | 175 |  |
| 16 | 1.2.1.1.4.1 | AN - Requerimientos de Negocio | 0.5d? | 2018-06-06 09:00 | 2018-06-06 11:00 | 11, 14 |  |  | 2018-06-18 10:30 | 2018-06-19 12:06 | 2.4d? | 46d | 1d |  | Omar Santiago | 2h |  | 50 |  |
| 17 | 1.2.1.1.4.2 | AN - Casos de Uso | 1.25d? | 2018-06-07 12:00 | 2018-06-07 23:00 | 16 |  |  | 2018-06-19 12:06 | 2018-06-20 15:42 | 2.4d? | 44d |  | finish no earlier than 2018-06-07 23:00 | Omar Santiago | 5h |  | 125 |  |
| 18 | 1.2.1.1.5 | **AN - Catalogo Tipos de Tarifa** | 1d? | 2018-06-07 12:42 | 2018-06-08 11:42 |  |  |  | 2018-06-20 15:42 | 2018-06-22 18:54 | 4.8d? | 44d |  |  |  | 7h |  | 175 |  |
| 19 | 1.2.1.1.5.1 | AN - Requerimientos de Negocio | 0.5d? | 2018-06-07 12:42 | 2018-06-07 16:42 | 14, 17 |  |  | 2018-06-20 15:42 | 2018-06-21 17:18 | 2.4d? | 45d | 0d |  | Fernando Nava | 2h |  | 50 |  |
| 20 | 1.2.1.1.5.2 | AN - Casos de Uso | 1.25d? | 2018-06-07 16:42 | 2018-06-08 11:42 | 19 |  |  | 2018-06-21 17:18 | 2018-06-22 18:54 | 2.4d? | 44d |  |  | Fernando Nava | 5h |  | 125 |  |
| 21 | 1.2.1.1.6 | **AN - Catalogo Tarifa** | 3.5d? | 2018-06-07 19:00 | 2018-06-12 21:00 |  |  |  | 2018-06-20 15:42 | 2018-06-22 18:54 | 4.8d? |  |  |  |  | 7h |  | 175 |  |
| 22 | 1.2.1.1.6.1 | AN - Requerimientos de Negocio | 0.5d? | 2018-06-08 09:00 | 2018-06-08 11:00 | 20 |  |  | 2018-06-20 15:42 | 2018-06-21 17:18 | 2.4d? | 44d |  | start no earlier than 2018-06-07 19:00 | Omar Santiago | 2h |  | 50 |  |
| 23 | 1.2.1.1.6.2 | AN - Casos de Uso | 1.25d? | 2018-06-08 12:00 | 2018-06-08 23:00 | 22 |  |  | 2018-06-21 17:18 | 2018-06-22 18:54 | 2.4d? | 43d |  | finish no earlier than 2018-06-08 23:00 | Omar Santiago | 5h |  | 125 |  |
| 24 | 1.2.1.1.7 | **AN - Catalogo Conceptos de Tarifa** | 10d? | 2018-06-04 09:00 | 2018-06-15 23:00 |  |  |  | 2018-06-22 18:54 | 2018-06-27 12:06 | 4.8d? | 38d |  |  |  | 7h |  | 175 |  |
| 25 | 1.2.1.1.7.1 | AN - Requerimientos de Negocio | 0.5d? | 2018-06-04 09:00 | 2018-06-04 11:00 | 23 |  |  | 2018-06-22 18:54 | 2018-06-26 10:30 | 2.4d? | 48d |  |  | Fernando Nava | 2h |  | 50 |  |
| 26 | 1.2.1.1.7.2 | AN - Casos de Uso | 1.25d? | 2018-06-15 12:00 | 2018-06-15 23:00 | 25 |  |  | 2018-06-26 10:30 | 2018-06-27 12:06 | 2.4d? | 38d |  | finish no earlier than 2018-06-15 23:00 | Fernando Nava | 5h |  | 125 |  |

| ID | WBS | Task | Type | Duration | Start | Finish | Predecessors | Complete | Baseline start | Baseline finish | Baseline duration | Total slack | Constraint | Resources | Work | Actual work | Cost | Actual cost |
| --- | --- | --- | --- | --- | --- | --- | --- | --- | --- | --- | --- | --- | --- | --- | --- | --- | --- | --- |
| 27 | 1.2.1.1.8 | **AN - Catalogo Choferes** |  | 2d? | 2018-06-18 09:00 | 2018-06-19 23:00 |  |  | 2018-06-22 18:54 | 2018-06-27 12:06 | 4.8d? | 36d |  |  | 7h |  | 175 |  |
| 28 | 1.2.1.1.8.1 | AN - Requerimientos de Negocio |  | 0.5d? | 2018-06-18 09:00 | 2018-06-18 11:00 | 26 |  | 2018-06-22 18:54 | 2018-06-26 10:30 | 2.4d? | 38d | start no earlier than 2018-06-15 19:00 | Omar Santiago | 2h |  | 50 |  |
| 29 | 1.2.1.1.8.2 | AN - Casos de Uso |  | 1.25d? | 2018-06-19 12:00 | 2018-06-19 23:00 | 28 |  | 2018-06-26 10:30 | 2018-06-27 12:06 | 2.4d? | 36d | finish no earlier than 2018-06-19 23:00 | Omar Santiago | 5h |  | 125 |  |
| 30 | 1.2.1.1.9 | **AN - Catalogo Camiones** |  | 2d? | 2018-06-20 09:00 | 2018-06-21 23:00 |  |  | 2018-06-27 12:06 | 2018-06-29 17:18 | 4.8d? | 34d |  |  | 7h |  | 175 |  |
| 31 | 1.2.1.1.9.1 | AN - Requerimientos de Negocio |  | 0.5d? | 2018-06-20 09:00 | 2018-06-20 11:00 | 29 |  | 2018-06-27 12:06 | 2018-06-28 15:42 | 2.4d? | 36d | start no earlier than 2018-06-19 19:00 | Fernando Nava | 2h |  | 50 |  |
| 32 | 1.2.1.1.9.2 | AN - Casos de Uso |  | 1.25d? | 2018-06-21 12:00 | 2018-06-21 23:00 | 31 |  | 2018-06-28 15:42 | 2018-06-29 17:18 | 2.4d? | 34d | finish no earlier than 2018-06-21 23:00 | Fernando Nava | 5h |  | 125 |  |
| 33 | 1.2.1.1.10 | **AN - Catalogo Responsables de Incidencias** |  | 3d? | 2018-06-21 19:00 A | 2018-06-25 23:00 A |  | 100% | 2018-05-24 09:00 | 2018-06-29 09:06 | 52.02d? |  |  |  | 2h | 2h | 50 | 50 |
| 34 | 1.2.1.1.10.1 | AN - Requerimientos de Negocio |  | 0.5d? | 2018-06-21 19:00 A | 2018-06-22 11:00 A | 32 | 100% | 2018-05-24 09:00 | 2018-06-28 10:36 | 2.12d? |  |  | Omar Santiago | 2h | 2h | 50 | 50 |
| 35 | 1.2.1.1.10.2 | AN - Casos de Uso | milestone | 0d? | 2018-06-25 19:00 A | 2018-06-25 23:00 A | 34 | 100% | 2018-05-24 09:00 | 2018-06-29 09:06 | 2.12d? |  | finish no earlier than 2018-06-25 23:00 | Omar Santiago |  |  |  |  |
| 36 | 1.2.1.1.11 | **AN - Catalogo Tipos de Incidencias** |  | 1d? | 2018-06-26 09:00 | 2018-06-27 19:00 |  |  | 2018-06-29 09:06 | 2018-07-03 12:18 | 4.8d? | 31d |  |  | 10h |  | 250 |  |
| 37 | 1.2.1.1.11.1 | AN - Requerimientos de Negocio |  | 0.5d? | 2018-06-26 09:00 | 2018-06-26 11:00 | 35 |  | 2018-06-29 09:06 | 2018-07-02 10:42 | 2.4d? | 32d | start no earlier than 2018-06-25 19:00 | Fernando Nava | 2h |  | 50 |  |
| 38 | 1.2.1.1.11.2 | AN - Casos de Uso |  | 2d? | 2018-06-27 09:00 | 2018-06-27 19:00 | 37 |  | 2018-07-02 10:42 | 2018-07-03 12:18 | 2.4d? | 31d | start no earlier than 2018-06-26 19:00 | Fernando Nava | 8h |  | 200 |  |
| 39 | 1.2.1.1.12 | **AN - Catalogo Tipos de Viaje** |  | 2d? | 2018-06-28 09:00 | 2018-06-29 23:00 |  |  | 2018-06-29 09:06 | 2018-07-03 12:18 | 4.8d? | 28d |  |  | 7h |  | 175 |  |
| 40 | 1.2.1.1.12.1 | AN - Requerimientos de Negocio |  | 0.5d? | 2018-06-28 09:00 | 2018-06-28 11:00 | 38 |  | 2018-06-29 09:06 | 2018-07-02 10:42 | 2.4d? | 30d | start no earlier than 2018-06-27 19:00 | Omar Santiago | 2h |  | 50 |  |
| 41 | 1.2.1.1.12.2 | AN - Casos de Uso |  | 1.25d? | 2018-06-29 12:00 | 2018-06-29 23:00 | 40 |  | 2018-07-02 10:42 | 2018-07-03 12:18 | 2.4d? | 28d | finish no earlier than 2018-06-29 23:00 | Omar Santiago | 5h |  | 125 |  |
| 42 | 1.2.1.1.13 | **AN - Catalogo Tipos de Carga/Descarga** |  | 22d? | 2018-06-04 09:00 | 2018-07-03 23:00 |  |  | 2018-07-03 12:18 | 2018-07-05 17:30 | 4.8d? | 26d |  |  | 7h |  | 175 |  |
| 43 | 1.2.1.1.13.1 | AN - Requerimientos de Negocio |  | 0.5d? | 2018-06-04 09:00 | 2018-06-04 11:00 | 41 |  | 2018-07-03 12:18 | 2018-07-04 15:54 | 2.4d? | 48d |  | Fernando Nava | 2h |  | 50 |  |
| 44 | 1.2.1.1.13.2 | AN - Casos de Uso |  | 1.25d? | 2018-07-03 12:00 | 2018-07-03 23:00 | 43 |  | 2018-07-04 15:54 | 2018-07-05 17:30 | 2.4d? | 26d | finish no earlier than 2018-07-03 23:00 | Fernando Nava | 5h |  | 125 |  |
| 45 | 1.2.1.1.14 | **AN - Catalogo Clientes de Entrega** |  | 24d? | 2018-06-04 09:00 | 2018-07-05 23:00 |  |  | 2018-07-03 12:18 | 2018-07-05 17:30 | 4.8d? | 24d |  |  | 7h |  | 175 |  |
| 46 | 1.2.1.1.14.1 | AN - Requerimientos de Negocio |  | 0.5d? | 2018-06-04 09:00 | 2018-06-04 11:00 | 44 |  | 2018-07-03 12:18 | 2018-07-04 15:54 | 2.4d? | 48d |  | Omar Santiago | 2h |  | 50 |  |
| 47 | 1.2.1.1.14.2 | AN - Casos de Uso |  | 1.25d? | 2018-07-05 12:00 | 2018-07-05 23:00 | 46 |  | 2018-07-04 15:54 | 2018-07-05 17:30 | 2.4d? | 24d | finish no earlier than 2018-07-05 23:00 | Omar Santiago | 5h |  | 125 |  |
| 48 | 1.2.1.1.15 | **AN - Catalogo Clientes Solicidates** |  | 26d? | 2018-06-04 09:00 | 2018-07-09 23:00 |  |  | 2018-07-03 12:18 | 2018-07-05 17:30 | 4.8d? | 22d |  |  | 7h |  | 175 |  |
| 49 | 1.2.1.1.15.1 | AN - Requerimientos de Negocio |  | 0.5d? | 2018-06-04 09:00 | 2018-06-04 11:00 | 47 |  | 2018-07-03 12:18 | 2018-07-04 15:54 | 2.4d? | 48d |  | Fernando Nava | 2h |  | 50 |  |
| 50 | 1.2.1.1.15.2 | AN - Casos de Uso |  | 1.25d? | 2018-07-09 12:00 | 2018-07-09 23:00 | 49 |  | 2018-07-04 15:54 | 2018-07-05 17:30 | 2.4d? | 22d | finish no earlier than 2018-07-09 23:00 | Fernando Nava | 5h |  | 125 |  |

| ID | WBS | Task | Duration | Start | Finish | Predecessors | Complete | Remaining | Baseline start | Baseline finish | Baseline duration | Total slack | Free slack | Constraint | Resources | Work | Actual work | Cost | Actual cost | Text1 |
| --- | --- | --- | --- | --- | --- | --- | --- | --- | --- | --- | --- | --- | --- | --- | --- | --- | --- | --- | --- | --- |
| 51 | 1.2.1.2 | **AN - Modulo Seguridad** | 32d? | 2018-06-04 09:00 | 2018-07-17 23:00 |  |  |  | 2018-07-05 17:30 | 2018-07-12 15:54 | 9.6d? | 16d |  |  |  | 18h |  | 450 |  |  |
| 52 | 1.2.1.2.1 | **AN - Roles** | 28d? | 2018-06-04 09:00 | 2018-07-11 23:00 |  |  |  | 2018-07-05 17:30 | 2018-07-10 10:42 | 4.8d? | 20d |  |  |  | 6h |  | 150 |  |  |
| 53 | 1.2.1.2.1.1 | AN - Requerimientos de Negocio | 0.75d? | 2018-06-04 09:00 | 2018-06-04 12:00 | 50 |  |  | 2018-07-05 17:30 | 2018-07-09 09:06 | 2.4d? | 48d |  |  | Omar Santiago | 3h |  | 75 |  |  |
| 54 | 1.2.1.2.1.2 | AN - Casos de Uso | 0.75d? | 2018-07-11 16:00 | 2018-07-11 23:00 | 53 |  |  | 2018-07-09 09:06 | 2018-07-10 10:42 | 2.4d? | 20d |  | finish no earlier than 2018-07-11 23:00 | Omar Santiago | 3h |  | 75 |  |  |
| 55 | 1.2.1.2.2 | **AN - Configuracion** | 30d? | 2018-06-04 09:00 | 2018-07-13 23:00 |  |  |  | 2018-07-05 17:30 | 2018-07-10 10:42 | 4.8d? | 18d |  |  |  | 6h |  | 150 |  |  |
| 56 | 1.2.1.2.2.1 | AN - Requerimientos de Negocio | 0.75d? | 2018-06-04 09:00 | 2018-06-04 12:00 | 54 |  |  | 2018-07-05 17:30 | 2018-07-09 09:06 | 2.4d? | 48d |  |  | Fernando Nava | 3h |  | 75 |  |  |
| 57 | 1.2.1.2.2.2 | AN - Casos de Uso | 0.75d? | 2018-07-13 16:00 | 2018-07-13 23:00 | 56 |  |  | 2018-07-09 09:06 | 2018-07-10 10:42 | 2.4d? | 18d |  | finish no earlier than 2018-07-13 23:00 | Fernando Nava | 3h |  | 75 |  |  |
| 58 | 1.2.1.2.3 | **AN - Permisos** | 2d? | 2018-07-16 09:00 | 2018-07-17 23:00 |  |  |  | 2018-07-10 10:42 | 2018-07-12 15:54 | 4.8d? | 14d |  |  |  | 6h |  | 150 |  |  |
| 59 | 1.2.1.2.3.1 | AN - Requerimientos de Negocio | 0.75d? | 2018-07-16 09:00 | 2018-07-16 12:00 | 57 |  |  | 2018-07-10 10:42 | 2018-07-11 12:18 | 2.4d? | 18d |  | start no earlier than 2018-07-13 19:00 | Omar Santiago | 3h |  | 75 |  |  |
| 60 | 1.2.1.2.3.2 | AN - Casos de Uso | 0.75d? | 2018-07-17 16:00 | 2018-07-17 23:00 | 59 |  |  | 2018-07-11 12:18 | 2018-07-12 15:54 | 2.4d? | 13d | 0d | finish no earlier than 2018-07-17 23:00 | Omar Santiago | 3h |  | 75 |  |  |
| 61 | 1.2.1.3 | **AN - Modulo Alarmas/Reportes/Indicadores de gestión** | 2d? | 2018-07-18 09:00 | 2018-07-20 11:00 |  |  |  | 2018-07-24 15:54 | 2018-07-30 15:54 | 8d? | 13d |  |  |  | 18h |  | 450 |  |  |
| 62 | 1.2.1.3.1 | **AN - Alarmas** | 0d? | 2018-07-18 09:00 | 2018-07-18 17:00 |  |  |  | 2018-07-24 15:54 | 2018-07-26 15:54 | 4d? | 13d |  |  |  | 6h |  | 150 |  |  |
| 63 | 1.2.1.3.1.1 | AN - Requerimientos de Negocio | 0.75d? | 2018-07-18 09:00 | 2018-07-18 12:00 | 60 |  |  | 2018-07-24 15:54 | 2018-07-25 15:54 | 2d? | 13d | 0d |  | Fernando Nava | 3h |  | 75 |  |  |
| 64 | 1.2.1.3.1.2 | AN - Casos de Uso | 0.75d? | 2018-07-18 12:00 | 2018-07-18 17:00 | 63 |  |  | 2018-07-25 15:54 | 2018-07-26 15:54 | 2d? | 13d | 0d |  | Fernando Nava | 3h |  | 75 |  |  |
| 65 | 1.2.1.3.2 | **AN - Reportes** | 1d? | 2018-07-18 17:00 | 2018-07-19 13:00 |  |  |  | 2018-07-24 15:54 | 2018-07-26 15:54 | 4d? | 13d |  |  |  | 6h |  | 150 |  |  |
| 66 | 1.2.1.3.2.1 | AN - Requerimientos de Negocio | 0.75d? | 2018-07-18 17:00 | 2018-07-19 10:00 | 64 |  |  | 2018-07-24 15:54 | 2018-07-25 15:54 | 2d? | 13d | 0d |  | Omar Santiago | 3h |  | 75 |  |  |
| 67 | 1.2.1.3.2.2 | AN - Casos de Uso | 0.75d? | 2018-07-19 10:00 | 2018-07-19 13:00 | 66 |  |  | 2018-07-25 15:54 | 2018-07-26 15:54 | 2d? | 13d | 0d |  | Omar Santiago | 3h |  | 75 |  |  |
| 68 | 1.2.1.3.3 | **AN - Indicadores de gestión** | 1d? | 2018-07-19 15:00 | 2018-07-20 11:00 |  |  |  | 2018-07-26 15:54 | 2018-07-30 15:54 | 4d? | 13d |  |  |  | 6h |  | 150 |  |  |
| 69 | 1.2.1.3.3.1 | AN - Requerimientos de Negocio | 0.75d? | 2018-07-19 15:00 | 2018-07-19 18:00 | 67 |  |  | 2018-07-26 15:54 | 2018-07-27 15:54 | 2d? | 13d | 0d |  | Fernando Nava | 3h |  | 75 |  |  |
| 70 | 1.2.1.3.3.2 | AN - Casos de Uso | 0.75d? | 2018-07-19 18:00 | 2018-07-20 11:00 | 69 |  |  | 2018-07-27 15:54 | 2018-07-30 15:54 | 2d? | 13d | 0d |  | Fernando Nava | 3h |  | 75 |  |  |
| 71 | 1.2.1.4 | AT - Revisión interna | 2d | 2018-07-18 19:00 A | 2018-07-19 19:00 A | 70 | 100% |  | 2018-05-28 09:00 | 2018-05-28 19:00 | 2d |  |  |  | ITSC | 1h | 1h |  |  |  |
| 72 | 1.2.1.5 | AT - Ajustes de comentarios del usuario | 1.33d | 2018-06-04 09:00 | 2018-06-04 16:20 | 71 |  |  | 2018-05-29 09:00 | 2018-05-29 19:00 | 2d | 48d |  |  | ITSC; cliente | 6h |  |  |  |  |
| 73 | 1.2.1.6 | AT - Peer Review y Vo Bo | 0.73d | 2018-06-04 09:00 | 2018-06-04 11:54 |  |  |  | 2018-05-30 09:00 | 2018-05-30 19:00 | 2d | 39d | 0d |  | ITSC; Omar Santiago | 4h |  | 72.73 |  |  |
| 74 | 1.2.2 | **AT Analisis de Tecnico** | 49d? | 2018-06-04 09:00 A | 2018-08-09 23:00 |  | 1% | 48.7d? | 2018-05-24 09:00 | 2018-08-02 15:54 | 101.22d? | 0d |  |  |  | 316.5h | 4h | 5,775 | 100 |  |
| 75 | 1.2.2.1 | **IAT - Revisión de documentación entregada por Negocio** | 9d? | 2018-06-04 11:54 | 2018-06-15 15:24 |  |  |  | 2018-05-31 09:00 | 2018-06-13 12:30 | 18.88d? | 39d |  |  |  | 73.5h |  |  |  |  |
| 76 | 1.2.2.1.1 | AT - Requerimientos de Negocio | 1.5d | 2018-06-04 11:54 | 2018-06-05 09:54 | 73 |  |  | 2018-05-31 09:00 | 2018-05-31 19:00 | 2d | 39d | 0d |  | Omar Santiago/Fernando Nava | 6h |  |  |  | 1 Docuemnto de RN |
| 77 | 1.2.2.1.2 | AT - Casos de Uso | 16.88d? | 2018-06-05 09:54 | 2018-06-15 15:24 | 76 |  |  | 2018-06-01 09:00 | 2018-06-13 12:30 | 16.88d? | 39d |  |  | Omar Santiago/Fernando Nava | 67.5h |  |  |  | 27 Documentos de CU |

| ID | WBS | Task | Duration | Start | Finish | Predecessors | Complete | Remaining | Baseline start | Baseline finish | Baseline duration | Total slack | Free slack | Constraint | Resources | Work | Actual work | Cost | Actual cost |
| --- | --- | --- | --- | --- | --- | --- | --- | --- | --- | --- | --- | --- | --- | --- | --- | --- | --- | --- | --- |
| 78 | 1.2.2.2 | **AT - Elaboracion de propuesta de Arquitectura de Solucion** | 49d? | 2018-06-04 09:00 | 2018-08-09 23:00 |  |  |  | 2018-06-13 12:30 | 2018-06-14 12:30 | 2d? | 0d |  |  |  | 54h |  | 1,350 |  |
| 79 | 1.2.2.2.1 | AT - Requerimientos tecnicos | 1.75d? | 2018-08-06 09:00 | 2018-08-06 18:00 | 77 |  |  | 2018-06-13 12:30 | 2018-06-14 12:30 | 2d? | 3d |  | start no earlier than 2018-08-03 19:00 | Omar Santiago | 7h |  | 175 |  |
| 80 | 1.2.2.2.2 | AT - Analisis tecnico | 3.75d? | 2018-08-07 10:00 | 2018-08-08 23:00 | 79 |  |  | 2018-06-13 12:30 | 2018-06-14 12:30 | 2d? | 0d |  | finish no earlier than 2018-08-08 23:00 | Omar Santiago | 15h |  | 375 |  |
| 81 | 1.2.2.2.3 | AT - Requerimientos de solucion | 2d? | 2018-08-09 09:00 | 2018-08-09 23:00 | 80 |  |  | 2018-06-13 12:30 | 2018-06-14 12:30 | 2d? | 0d |  | finish no earlier than 2018-08-09 23:00 | Omar Santiago | 8h |  | 200 |  |
| 82 | 1.2.2.2.4 | AT - Escalabilidad | 1.75d? | 2018-06-04 09:00 | 2018-06-04 18:00 | 81 |  |  | 2018-06-13 12:30 | 2018-06-14 12:30 | 2d? | 48d |  |  | Omar Santiago | 7h |  | 175 |  |
| 83 | 1.2.2.2.5 | AT - Modelado BD | 1.75d? | 2018-06-04 09:00 | 2018-06-04 18:00 | 82 |  |  | 2018-06-13 12:30 | 2018-06-14 12:30 | 2d? | 48d |  |  | Omar Santiago | 7h |  | 175 |  |
| 84 | 1.2.2.2.6 | AT - Herramientas para solucion | 1.25d? | 2018-06-04 09:00 | 2018-06-04 16:00 | 83 |  |  | 2018-06-13 12:30 | 2018-06-14 12:30 | 2d? | 48d |  |  | Omar Santiago | 5h |  | 125 |  |
| 85 | 1.2.2.2.7 | AT - Aplicación responsiva para navegadores web | 1.25d? | 2018-06-04 09:00 | 2018-06-04 16:00 | 84 |  |  | 2018-06-13 12:30 | 2018-06-14 12:30 | 2d? | 48d |  |  | Omar Santiago | 5h |  | 125 |  |
| 86 | 1.2.2.3 | AT - Peer Review y Vo Bo Arquitectura de Solucion | 1d | 2018-06-04 09:00 | 2018-06-04 13:00 | 85 |  |  | 2018-06-14 12:30 | 2018-06-15 12:30 | 2d | 38d | 0d |  | Omar Santiago | 4h |  | 100 |  |
| 87 | 1.2.2.4 | **AT - Elaboración de documentos AT** | 29d? | 2018-06-04 09:00 A | 2018-07-13 15:42 |  | 1% | 28.77d? | 2018-05-24 09:00 | 2018-07-30 15:54 | 95.22d? | 19d |  |  |  | 173h | 4h | 4,325 | 100 |
| 88 | 1.2.2.4.1 | **AT - Modulo Catalogos Maestros** | 10d? | 2018-06-04 09:00 A | 2018-06-18 17:48 |  | 1% | 9.85d? | 2018-05-24 09:00 | 2018-07-05 17:30 | 61.62d? | 38d |  |  |  | 90h | 4h | 2,250 | 100 |
| 89 | 1.2.2.4.1.1 | **AT - Catalogo Rol** | 2d | 2018-06-04 15:00 | 2018-06-06 18:12 |  |  |  | 2018-06-15 12:30 | 2018-06-19 17:42 | 4.8d | 46d |  |  |  | 6h |  | 150 |  |
| 90 | 1.2.2.4.1.1.1 | AT - Elaboración Bocetos de Archivos | 1.6d | 2018-06-04 15:00 | 2018-06-05 11:24 | 86 |  |  | 2018-06-15 12:30 | 2018-06-18 16:06 | 2.4d | 46d | 0d |  | Fernando Nava [31.2%] | 2h |  | 50 |  |
| 91 | 1.2.2.4.1.1.2 | AT - Elaboración Bocetos de Pantallas | 3.2d | 2018-06-05 11:24 | 2018-06-06 18:12 | 90 |  |  | 2018-06-18 16:06 | 2018-06-19 17:42 | 2.4d | 46d |  |  | Fernando Nava [31.2%] | 4h |  | 100 |  |
| 92 | 1.2.2.4.1.2 | **AT - Catalogo Actores** | 1d? | 2018-06-04 15:00 | 2018-06-05 11:00 |  |  |  | 2018-06-15 12:30 | 2018-06-18 10:30 | 1.5d? | 38d |  |  |  | 6h |  | 150 |  |
| 93 | 1.2.2.4.1.2.1 | AT - Elaboración Bocetos de Archivos | 0.5d? | 2018-06-04 15:00 | 2018-06-04 17:00 | 86 |  |  | 2018-06-15 12:30 | 2018-06-15 17:30 | 0.75d? | 38d | 0d |  | Fernando Nava | 2h |  | 50 |  |
| 94 | 1.2.2.4.1.2.2 | AT - Elaboración Bocetos de Pantallas | 1d? | 2018-06-04 17:00 | 2018-06-05 11:00 | 93 |  |  | 2018-06-15 17:30 | 2018-06-18 10:30 | 0.75d? | 38d | 0d |  | Fernando Nava | 4h |  | 100 |  |
| 95 | 1.2.2.4.1.3 | **AT - Catalogo Actores-Roles** | 2d? | 2018-06-05 11:00 | 2018-06-07 16:12 |  |  |  | 2018-06-18 10:30 | 2018-06-20 15:42 | 4.8d? | 45d |  |  |  | 6h |  | 150 |  |
| 96 | 1.2.2.4.1.3.1 | AT - Elaboración Bocetos de Archivos | 1.6d? | 2018-06-05 11:00 | 2018-06-06 09:24 | 94 |  |  | 2018-06-18 10:30 | 2018-06-19 12:06 | 2.4d? | 45d | 0d |  | Fernando Nava [31.2%] | 2h |  | 50 |  |
| 97 | 1.2.2.4.1.3.2 | AT - Elaboración Bocetos de Pantallas | 3.2d? | 2018-06-06 09:24 | 2018-06-07 16:12 | 96 |  |  | 2018-06-19 12:06 | 2018-06-20 15:42 | 2.4d? | 45d |  |  | Fernando Nava [31.2%] | 4h |  | 100 |  |
| 98 | 1.2.2.4.1.4 | **AT - Catalogo Contratos** | 2d? | 2018-06-05 11:00 | 2018-06-07 16:12 |  |  |  | 2018-06-18 10:30 | 2018-06-20 15:42 | 4.8d? | 38d |  |  |  | 6h |  | 150 |  |
| 99 | 1.2.2.4.1.4.1 | AT - Elaboración Bocetos de Archivos | 1.6d? | 2018-06-05 11:00 | 2018-06-06 09:24 | 94 |  |  | 2018-06-18 10:30 | 2018-06-19 12:06 | 2.4d? | 38d | 0d |  | Fernando Nava [31.2%] | 2h |  | 50 |  |
| 100 | 1.2.2.4.1.4.2 | AT - Elaboración Bocetos de Pantallas | 3.2d? | 2018-06-06 09:24 | 2018-06-07 16:12 | 99 |  |  | 2018-06-19 12:06 | 2018-06-20 15:42 | 2.4d? | 38d | 0d |  | Fernando Nava [31.2%] | 4h |  | 100 |  |
| 101 | 1.2.2.4.1.5 | **AT - Catalogo Tipos de Tarifa** | 3d? | 2018-06-07 16:12 | 2018-06-12 09:24 |  |  |  | 2018-06-20 15:42 | 2018-06-22 18:54 | 4.8d? | 42d |  |  |  | 6h |  | 150 |  |
| 102 | 1.2.2.4.1.5.1 | AT - Elaboración Bocetos de Archivos | 1.6d? | 2018-06-07 16:12 | 2018-06-08 12:36 | 100 |  |  | 2018-06-20 15:42 | 2018-06-21 17:18 | 2.4d? | 43d | 0d |  | Fernando Nava [31.2%] | 2h |  | 50 |  |
| 103 | 1.2.2.4.1.5.2 | AT - Elaboración Bocetos de Pantallas | 3.2d? | 2018-06-08 12:36 | 2018-06-12 09:24 | 102 |  |  | 2018-06-21 17:18 | 2018-06-22 18:54 | 2.4d? | 42d |  |  | Fernando Nava [31.2%] | 4h |  | 100 |  |

| ID | WBS | Task | Duration | Start | Finish | Predecessors | Complete | Remaining | Baseline start | Baseline finish | Baseline duration | Total slack | Free slack | Resources | Work | Actual work | Cost | Actual cost |
| --- | --- | --- | --- | --- | --- | --- | --- | --- | --- | --- | --- | --- | --- | --- | --- | --- | --- | --- |
| 104 | 1.2.2.4.1.6 | **AT - Catalogo Tarifa** | 3d? | 2018-06-07 16:12 | 2018-06-12 09:24 |  |  |  | 2018-06-20 15:42 | 2018-06-22 18:54 | 4.8d? | 38d |  |  | 6h |  | 150 |  |
| 105 | 1.2.2.4.1.6.1 | AT - Elaboración Bocetos de Archivos | 1.6d? | 2018-06-07 16:12 | 2018-06-08 12:36 | 100 |  |  | 2018-06-20 15:42 | 2018-06-21 17:18 | 2.4d? | 38d | 0d | Fernando Nava [31.2%] | 2h |  | 50 |  |
| 106 | 1.2.2.4.1.6.2 | AT - Elaboración Bocetos de Pantallas | 3.2d? | 2018-06-08 12:36 | 2018-06-12 09:24 | 105 |  |  | 2018-06-21 17:18 | 2018-06-22 18:54 | 2.4d? | 38d | 0d | Fernando Nava [31.2%] | 4h |  | 100 |  |
| 107 | 1.2.2.4.1.7 | **AT - Catalogo Conceptos de Tarifa** | 2d? | 2018-06-12 09:24 | 2018-06-14 12:36 |  |  |  | 2018-06-22 18:54 | 2018-06-27 12:06 | 4.8d? | 38d |  |  | 6h |  | 150 |  |
| 108 | 1.2.2.4.1.7.1 | AT - Elaboración Bocetos de Archivos | 1.6d? | 2018-06-12 09:24 | 2018-06-12 17:48 | 106 |  |  | 2018-06-22 18:54 | 2018-06-26 10:30 | 2.4d? | 38d | 0d | Fernando Nava [31.2%] | 2h |  | 50 |  |
| 109 | 1.2.2.4.1.7.2 | AT - Elaboración Bocetos de Pantallas | 3.2d? | 2018-06-12 17:48 | 2018-06-14 12:36 | 108 |  |  | 2018-06-26 10:30 | 2018-06-27 12:06 | 2.4d? | 40d |  | Fernando Nava [31.2%] | 4h |  | 100 |  |
| 110 | 1.2.2.4.1.8 | **AT - Catalogo Choferes** | 2d? | 2018-06-12 09:24 | 2018-06-14 12:36 |  |  |  | 2018-06-22 18:54 | 2018-06-27 12:06 | 4.8d? | 39d |  |  | 6h |  | 150 |  |
| 111 | 1.2.2.4.1.8.1 | AT - Elaboración Bocetos de Archivos | 1.6d? | 2018-06-12 09:24 | 2018-06-12 17:48 | 106 |  |  | 2018-06-22 18:54 | 2018-06-26 10:30 | 2.4d? | 42d |  | Fernando Nava [31.2%] | 2h |  | 50 |  |
| 112 | 1.2.2.4.1.8.2 | AT - Elaboración Bocetos de Pantallas | 3.2d? | 2018-06-12 17:48 | 2018-06-14 12:36 | 108 |  |  | 2018-06-26 10:30 | 2018-06-27 12:06 | 2.4d? | 38d | 0d | Fernando Nava [31.2%] | 4h |  | 100 |  |
| 113 | 1.2.2.4.1.9 | **AT - Catalogo Camiones** | 2d? | 2018-06-14 12:36 | 2018-06-18 17:48 |  |  |  | 2018-06-27 12:06 | 2018-06-29 17:18 | 4.8d? | 38d |  |  | 6h |  | 150 |  |
| 114 | 1.2.2.4.1.9.1 | AT - Elaboración Bocetos de Archivos | 1.6d? | 2018-06-14 12:36 | 2018-06-15 11:00 | 112 |  |  | 2018-06-27 12:06 | 2018-06-28 15:42 | 2.4d? | 38d | 0d | Fernando Nava [31.2%] | 2h |  | 50 |  |
| 115 | 1.2.2.4.1.9.2 | AT - Elaboración Bocetos de Pantallas | 3.2d? | 2018-06-15 11:00 | 2018-06-18 17:48 | 114 |  |  | 2018-06-28 15:42 | 2018-06-29 17:18 | 2.4d? | 38d |  | Fernando Nava [31.2%] | 4h |  | 100 |  |
| 116 | 1.2.2.4.1.10 | **AT - Catalogo Responsables de Incidencias** | 1d? | 2018-06-04 09:00 A | 2018-06-05 10:30 |  | 35% | 0.65d? | 2018-05-24 09:00 | 2018-06-29 09:06 | 52.02d? | 18d |  |  | 6h | 4h | 150 | 100 |
| 117 | 1.2.2.4.1.10.1 | AT - Elaboración Bocetos de Archivos | 0.5d? | 2018-06-04 09:00 A | 2018-06-04 11:00 A | 112 | 100% |  | 2018-05-24 09:00 | 2018-06-28 10:36 | 2.12d? |  |  | Fernando Nava | 2h | 2h | 50 | 50 |
| 118 | 1.2.2.4.1.10.2 | AT - Elaboración Bocetos de Pantallas | 2.38d? | 2018-06-04 09:00 A | 2018-06-05 10:30 | 117 | 21% | 1.88d? | 2018-05-24 09:00 | 2018-06-29 09:06 | 2.12d? | 18d | 0d | Fernando Nava | 4h | 2h | 100 | 50 |
| 119 | 1.2.2.4.1.11 | **AT - Catalogo Tipos de Incidencias** | 2d? | 2018-06-05 10:30 | 2018-06-07 15:42 |  |  |  | 2018-06-29 09:06 | 2018-07-03 12:18 | 4.8d? | 45d |  |  | 6h |  | 150 |  |
| 120 | 1.2.2.4.1.11.1 | AT - Elaboración Bocetos de Archivos | 1.6d? | 2018-06-05 10:30 | 2018-06-05 18:54 | 118 |  |  | 2018-06-29 09:06 | 2018-07-02 10:42 | 2.4d? | 45d | 0d | Fernando Nava [31.2%] | 2h |  | 50 |  |
| 121 | 1.2.2.4.1.11.2 | AT - Elaboración Bocetos de Pantallas | 3.2d? | 2018-06-05 18:54 | 2018-06-07 15:42 | 120 |  |  | 2018-07-02 10:42 | 2018-07-03 12:18 | 2.4d? | 45d |  | Fernando Nava [31.2%] | 4h |  | 100 |  |
| 122 | 1.2.2.4.1.12 | **AT - Catalogo Tipos de Viaje** | 2d? | 2018-06-05 10:30 | 2018-06-07 15:42 |  |  |  | 2018-06-29 09:06 | 2018-07-03 12:18 | 4.8d? | 18d | 0d |  | 6h |  | 150 |  |
| 123 | 1.2.2.4.1.12.1 | AT - Elaboración Bocetos de Archivos | 1.6d? | 2018-06-05 10:30 | 2018-06-05 18:54 | 118 |  |  | 2018-06-29 09:06 | 2018-07-02 10:42 | 2.4d? | 18d | 0d | Fernando Nava [31.2%] | 2h |  | 50 |  |
| 124 | 1.2.2.4.1.12.2 | AT - Elaboración Bocetos de Pantallas | 3.2d? | 2018-06-05 18:54 | 2018-06-07 15:42 | 123 |  |  | 2018-07-02 10:42 | 2018-07-03 12:18 | 2.4d? | 18d | 0d | Fernando Nava [31.2%] | 4h |  | 100 |  |
| 125 | 1.2.2.4.1.13 | **AT - Catalogo Tipos de Carga/Descarga** | 2d? | 2018-06-07 15:42 | 2018-06-11 18:54 |  |  |  | 2018-07-03 12:18 | 2018-07-05 17:30 | 4.8d? | 43d |  |  | 6h |  | 150 |  |
| 126 | 1.2.2.4.1.13.1 | AT - Elaboración Bocetos de Archivos | 1.6d? | 2018-06-07 15:42 | 2018-06-08 12:06 | 124 |  |  | 2018-07-03 12:18 | 2018-07-04 15:54 | 2.4d? | 43d | 0d | Fernando Nava [31.2%] | 2h |  | 50 |  |
| 127 | 1.2.2.4.1.13.2 | AT - Elaboración Bocetos de Pantallas | 3.2d? | 2018-06-08 12:06 | 2018-06-11 18:54 | 126 |  |  | 2018-07-04 15:54 | 2018-07-05 17:30 | 2.4d? | 43d |  | Fernando Nava [31.2%] | 4h |  | 100 |  |

| ID | WBS | Task | Duration | Start | Finish | Predecessors | Baseline start | Baseline finish | Baseline duration | Total slack | Free slack | Resources | Work | Cost |
| --- | --- | --- | --- | --- | --- | --- | --- | --- | --- | --- | --- | --- | --- | --- |
| 128 | 1.2.2.4.1.14 | **AT - Catalogo Clientes de Entrega** | 2d? | 2018-06-07 15:42 | 2018-06-11 18:54 |  | 2018-07-03 12:18 | 2018-07-05 17:30 | 4.8d? | 43d |  |  | 6h | 150 |
| 129 | 1.2.2.4.1.14.1 | AT - Elaboración Bocetos de Archivos | 1.6d? | 2018-06-07 15:42 | 2018-06-08 12:06 | 124 | 2018-07-03 12:18 | 2018-07-04 15:54 | 2.4d? | 43d | 0d | Fernando Nava [31.2%] | 2h | 50 |
| 130 | 1.2.2.4.1.14.2 | AT - Elaboración Bocetos de Pantallas | 3.2d? | 2018-06-08 12:06 | 2018-06-11 18:54 | 129 | 2018-07-04 15:54 | 2018-07-05 17:30 | 2.4d? | 43d |  | Fernando Nava [31.2%] | 4h | 100 |
| 131 | 1.2.2.4.1.15 | **AT - Catalogo Clientes Solicidates** | 2d? | 2018-06-07 15:42 | 2018-06-11 18:54 |  | 2018-07-03 12:18 | 2018-07-05 17:30 | 4.8d? | 18d |  |  | 6h | 150 |
| 132 | 1.2.2.4.1.15.1 | AT - Elaboración Bocetos de Archivos | 1.6d? | 2018-06-07 15:42 | 2018-06-08 12:06 | 124 | 2018-07-03 12:18 | 2018-07-04 15:54 | 2.4d? | 18d | 0d | Fernando Nava [31.2%] | 2h | 50 |
| 133 | 1.2.2.4.1.15.2 | AT - Elaboración Bocetos de Pantallas | 3.2d? | 2018-06-08 12:06 | 2018-06-11 18:54 | 132 | 2018-07-04 15:54 | 2018-07-05 17:30 | 2.4d? | 18d | 0d | Fernando Nava [31.2%] | 4h | 100 |
| 134 | 1.2.2.4.2 | **AT - Modulo Seguridad** | 6d? | 2018-06-11 18:54 | 2018-06-19 15:42 |  | 2018-07-05 17:30 | 2018-07-12 15:54 | 9.6d? | 18d |  |  | 22h | 550 |
| 135 | 1.2.2.4.2.1 | **AT - Roles** | 4d? | 2018-06-11 18:54 | 2018-06-15 10:30 |  | 2018-07-05 17:30 | 2018-07-10 10:42 | 4.8d? | 39d |  |  | 8h | 200 |
| 136 | 1.2.2.4.2.1.1 | AT - Elaboración Bocetos de Archivos | 2.4d? | 2018-06-11 18:54 | 2018-06-13 10:30 | 133 | 2018-07-05 17:30 | 2018-07-09 09:06 | 2.4d? | 39d | 0d | Fernando Nava [31.2%] | 3h | 75 |
| 137 | 1.2.2.4.2.1.2 | AT - Elaboración Bocetos de Pantallas | 4d? | 2018-06-13 10:30 | 2018-06-15 10:30 | 136 | 2018-07-09 09:06 | 2018-07-10 10:42 | 2.4d? | 39d |  | Fernando Nava [31.2%] | 5h | 125 |
| 138 | 1.2.2.4.2.2 | **AT - Configuracion** | 4d? | 2018-06-11 18:54 | 2018-06-15 10:30 |  | 2018-07-05 17:30 | 2018-07-10 10:42 | 4.8d? | 18d |  |  | 8h | 200 |
| 139 | 1.2.2.4.2.2.1 | AT - Elaboración Bocetos de Archivos | 2.4d? | 2018-06-11 18:54 | 2018-06-13 10:30 | 133 | 2018-07-05 17:30 | 2018-07-09 09:06 | 2.4d? | 18d | 0d | Fernando Nava [31.2%] | 3h | 75 |
| 140 | 1.2.2.4.2.2.2 | AT - Elaboración Bocetos de Pantallas | 4d? | 2018-06-13 10:30 | 2018-06-15 10:30 | 139 | 2018-07-09 09:06 | 2018-07-10 10:42 | 2.4d? | 18d | 0d | Fernando Nava [31.2%] | 5h | 125 |
| 141 | 1.2.2.4.2.3 | **AT - Permisos** | 2d? | 2018-06-15 10:30 | 2018-06-19 15:42 |  | 2018-07-10 10:42 | 2018-07-12 15:54 | 4.8d? | 18d |  |  | 6h | 150 |
| 142 | 1.2.2.4.2.3.1 | AT - Elaboración Bocetos de Archivos | 2.4d? | 2018-06-15 10:30 | 2018-06-18 12:06 | 140 | 2018-07-10 10:42 | 2018-07-11 12:18 | 2.4d? | 18d | 0d | Fernando Nava [31.2%] | 3h | 75 |
| 143 | 1.2.2.4.2.3.2 | AT - Elaboración Bocetos de Pantallas | 2.4d? | 2018-06-18 12:06 | 2018-06-19 15:42 | 142 | 2018-07-11 12:18 | 2018-07-12 15:54 | 2.4d? | 18d | 0d | Fernando Nava [31.2%] | 3h | 75 |
| 144 | 1.2.2.4.3 | **AT - Modulo Solicitudes** | 13d? | 2018-06-19 15:42 | 2018-07-06 18:22 |  | 2018-07-12 15:54 | 2018-07-24 15:54 | 16d? | 18d |  |  | 40h | 1,000 |
| 145 | 1.2.2.4.3.1 | **AT - Cliente - Solicitud de Transporte** | 3d? | 2018-06-19 15:42 | 2018-06-22 11:02 |  | 2018-07-12 15:54 | 2018-07-17 11:14 | 5.33d? | 18d |  |  | 8h | 200 |
| 146 | 1.2.2.4.3.1.1 | AT - Elaboración Bocetos de Archivos | 2d? | 2018-06-19 15:42 | 2018-06-20 15:42 | 143 | 2018-07-12 15:54 | 2018-07-13 18:34 | 2.67d? | 18d | 0d | Fernando Nava [37.5%] | 3h | 75 |
| 147 | 1.2.2.4.3.1.2 | AT - Elaboración Bocetos de Pantallas | 3.33d? | 2018-06-20 15:42 | 2018-06-22 11:02 | 146 | 2018-07-13 18:34 | 2018-07-17 11:14 | 2.67d? | 18d | 0d | Fernando Nava [37.5%] | 5h | 125 |
| 148 | 1.2.2.4.3.2 | **AT - Trafico - Valoracion del Viaje** | 2d? | 2018-06-22 11:02 | 2018-06-26 18:22 |  | 2018-07-12 15:54 | 2018-07-17 11:14 | 5.33d? | 18d |  |  | 8h | 200 |
| 149 | 1.2.2.4.3.2.1 | AT - Elaboración Bocetos de Archivos | 2d? | 2018-06-22 11:02 | 2018-06-25 11:02 | 147 | 2018-07-12 15:54 | 2018-07-13 18:34 | 2.67d? | 18d | 0d | Fernando Nava [37.5%] | 3h | 75 |
| 150 | 1.2.2.4.3.2.2 | AT - Elaboración Bocetos de Pantallas | 3.33d? | 2018-06-25 11:02 | 2018-06-26 18:22 | 149 | 2018-07-13 18:34 | 2018-07-17 11:14 | 2.67d? | 18d | 0d | Fernando Nava [37.5%] | 5h | 125 |
| 151 | 1.2.2.4.3.3 | **AT - Distribucion - Asugnacion de Unidad y Carga** | 3d? | 2018-06-26 18:22 | 2018-06-29 15:42 |  | 2018-07-17 11:14 | 2018-07-19 18:34 | 5.33d? | 18d |  |  | 8h | 200 |
| 152 | 1.2.2.4.3.3.1 | AT - Elaboración Bocetos de Archivos | 2d? | 2018-06-26 18:22 | 2018-06-27 18:22 | 150 | 2018-07-17 11:14 | 2018-07-18 15:54 | 2.67d? | 18d | 0d | Fernando Nava [37.5%] | 3h | 75 |
| 153 | 1.2.2.4.3.3.2 | AT - Elaboración Bocetos de Pantallas | 3.33d? | 2018-06-27 18:22 | 2018-06-29 15:42 | 152 | 2018-07-18 15:54 | 2018-07-19 18:34 | 2.67d? | 18d | 0d | Fernando Nava [37.5%] | 5h | 125 |

| ID | WBS | Task | Duration | Start | Finish | Predecessors | Baseline start | Baseline finish | Baseline duration | Total slack | Free slack | Resources | Work | Cost |
| --- | --- | --- | --- | --- | --- | --- | --- | --- | --- | --- | --- | --- | --- | --- |
| 154 | 1.2.2.4.3.4 | **AT - Operador CL - Operación y Descarga** | 3d? | 2018-06-29 15:42 | 2018-07-04 11:02 |  | 2018-07-17 11:14 | 2018-07-19 18:34 | 5.33d? | 18d |  |  | 8h | 200 |
| 155 | 1.2.2.4.3.4.1 | AT - Elaboración Bocetos de Archivos | 2d? | 2018-06-29 15:42 | 2018-07-02 15:42 | 153 | 2018-07-17 11:14 | 2018-07-18 15:54 | 2.67d? | 18d | 0d | Fernando Nava [37.5%] | 3h | 75 |
| 156 | 1.2.2.4.3.4.2 | AT - Elaboración Bocetos de Pantallas | 3.33d? | 2018-07-02 15:42 | 2018-07-04 11:02 | 155 | 2018-07-18 15:54 | 2018-07-19 18:34 | 2.67d? | 18d | 0d | Fernando Nava [37.5%] | 5h | 125 |
| 157 | 1.2.2.4.3.5 | **AT - Distribucion - Cierre del Viaje y Facturacion** | 2d? | 2018-07-04 11:02 | 2018-07-06 18:22 |  | 2018-07-19 18:34 | 2018-07-24 15:54 | 5.33d? | 18d |  |  | 8h | 200 |
| 158 | 1.2.2.4.3.5.1 | AT - Elaboración Bocetos de Archivos | 2d? | 2018-07-04 11:02 | 2018-07-05 11:02 | 156 | 2018-07-19 18:34 | 2018-07-23 11:14 | 2.67d? | 18d | 0d | Fernando Nava [37.5%] | 3h | 75 |
| 159 | 1.2.2.4.3.5.2 | AT - Elaboración Bocetos de Pantallas | 3.33d? | 2018-07-05 11:02 | 2018-07-06 18:22 | 158 | 2018-07-23 11:14 | 2018-07-24 15:54 | 2.67d? | 18d | 0d | Fernando Nava [37.5%] | 5h | 125 |
| 160 | 1.2.2.4.4 | **AT - Modulo Alarmas/Reportes/Indicadores de gestión** | 5d? | 2018-07-06 18:22 | 2018-07-13 15:42 |  | 2018-07-24 15:54 | 2018-07-30 15:54 | 8d? | 18d |  |  | 21h | 525 |
| 161 | 1.2.2.4.4.1 | **AT - Alarmas** | 3d? | 2018-07-06 18:22 | 2018-07-11 11:02 |  | 2018-07-24 15:54 | 2018-07-26 15:54 | 4d? | 21d |  |  | 7h | 175 |
| 162 | 1.2.2.4.4.1.1 | AT - Elaboración Bocetos de Archivos | 2.67d? | 2018-07-06 18:22 | 2018-07-10 11:02 | 159 | 2018-07-24 15:54 | 2018-07-25 15:54 | 2d? | 21d | 0d | Fernando Nava [37.5%] | 4h | 100 |
| 163 | 1.2.2.4.4.1.2 | AT - Elaboración Bocetos de Pantallas | 2d? | 2018-07-10 11:02 | 2018-07-11 11:02 | 162 | 2018-07-25 15:54 | 2018-07-26 15:54 | 2d? | 21d |  | Fernando Nava [37.5%] | 3h | 75 |
| 164 | 1.2.2.4.4.2 | **AT - Reportes** | 3d? | 2018-07-06 18:22 | 2018-07-11 11:02 |  | 2018-07-24 15:54 | 2018-07-26 15:54 | 4d? | 18d |  |  | 7h | 175 |
| 165 | 1.2.2.4.4.2.1 | AT - Elaboración Bocetos de Archivos | 2.67d? | 2018-07-06 18:22 | 2018-07-10 11:02 | 159 | 2018-07-24 15:54 | 2018-07-25 15:54 | 2d? | 18d | 0d | Fernando Nava [37.5%] | 4h | 100 |
| 166 | 1.2.2.4.4.2.2 | AT - Elaboración Bocetos de Pantallas | 2d? | 2018-07-10 11:02 | 2018-07-11 11:02 | 165 | 2018-07-25 15:54 | 2018-07-26 15:54 | 2d? | 18d | 0d | Fernando Nava [37.5%] | 3h | 75 |
| 167 | 1.2.2.4.4.3 | **AT - Indicadores de gestión** | 2d? | 2018-07-11 11:02 | 2018-07-13 15:42 |  | 2018-07-26 15:54 | 2018-07-30 15:54 | 4d? | 18d |  |  | 7h | 175 |
| 168 | 1.2.2.4.4.3.1 | AT - Elaboración Bocetos de Archivos | 2.67d? | 2018-07-11 11:02 | 2018-07-12 15:42 | 166 | 2018-07-26 15:54 | 2018-07-27 15:54 | 2d? | 18d | 0d | Fernando Nava [37.5%] | 4h | 100 |
| 169 | 1.2.2.4.4.3.2 | AT - Elaboración Bocetos de Pantallas | 2d? | 2018-07-12 15:42 | 2018-07-13 15:42 | 168 | 2018-07-27 15:54 | 2018-07-30 15:54 | 2d? | 18d | 5d | Fernando Nava [37.5%] | 3h | 75 |
| 170 | 1.2.2.5 | AT - Revisión con el usuario | 1d? | 2018-07-20 11:00 | 2018-07-20 17:00 | 143, 159, 169, 60, 70 | 2018-07-30 15:54 | 2018-07-31 15:54 | 2d? | 13d | 0d | Omar Santiago/Fernando Nava/ITSC | 4h |  |
| 171 | 1.2.2.6 | AT - Ajustes de comentarios del usuario | 1.5d? | 2018-07-20 17:00 | 2018-07-23 13:00 | 170 | 2018-07-31 15:54 | 2018-08-01 15:54 | 2d? | 13d | 0d | Omar Santiago/Fernando Nava | 6h |  |
| 172 | 1.2.2.7 | AT - Peer Review y Vo Bo | 0.5d? | 2018-07-23 15:00 | 2018-07-23 17:00 | 171 | 2018-08-01 15:54 | 2018-08-02 15:54 | 2d? | 13d |  | Omar Santiago/Fernando Nava/ITSC | 2h |  |
| 173 | 1.2.3 | Validacion de documentacion, ultimos ajustes | 1.5d? | 2018-06-04 09:00 | 2018-06-04 17:00 |  | 2018-08-02 15:54 | 2018-08-03 15:54 | 2d? | 30d | 0d | Omar Santiago/Fernando Nava | 6h |  |
| 174 | 1.3 | **CC_Desarrollo** | 21d? | 2018-06-04 15:00 | 2018-07-03 11:00 |  | 2018-06-15 12:30 | 2018-08-21 09:54 | 93.35d? | 28d |  |  | 360h | 5,125 |
| 175 | 1.3.1 | **Diseño y Construcción** | 20d? | 2018-06-04 15:00 | 2018-06-29 23:00 |  | 2018-06-15 12:30 | 2018-08-20 09:54 | 91.35d? | 29d |  |  | 350h | 5,125 |
| 176 | 1.3.1.1 | CC - Revision del documento de Arquitectura de Solucion | 0.75d? | 2018-06-04 15:00 | 2018-06-04 18:00 | 86 | 2018-06-15 12:30 | 2018-06-18 12:30 | 2d? | 45d | 0d | Omar Santiago | 3h | 75 |
| 177 | 1.3.1.2 | **CC - Instalacion y Configuracion** | 3d? | 2018-06-04 18:00 | 2018-06-07 17:00 |  | 2018-06-18 12:30 | 2018-06-25 09:50 | 9.33d? | 45d |  |  | 23h | 575 |
| 178 | 1.3.1.2.1 | CC - Instalacion de herramientas de desarrollo | 2.25d? | 2018-06-04 18:00 | 2018-06-05 19:00 | 176 | 2018-06-18 12:30 | 2018-06-21 12:30 | 6d? | 46d | 1d | Omar Santiago | 9h | 225 |
| 179 | 1.3.1.2.2 | CC - Instalacion de herramientas de gestion de Bases de Datos | 2.25d? | 2018-06-06 09:00 | 2018-06-07 10:00 | 178 | 2018-06-18 12:30 | 2018-06-21 12:30 | 6d? | 45d | 0d | Omar Santiago | 9h | 225 |
| 180 | 1.3.1.2.3 | CC - Instalacion de herramienta para soportar aplicaciones web | 1.25d? | 2018-06-07 10:00 | 2018-06-07 17:00 | 179 | 2018-06-21 12:30 | 2018-06-25 09:50 | 3.33d? | 45d |  | Omar Santiago | 5h | 125 |

| ID | WBS | Task | Duration | Start | Finish | Predecessors | Baseline start | Baseline finish | Baseline duration | Total slack | Free slack | Resources | Work | Cost |
| --- | --- | --- | --- | --- | --- | --- | --- | --- | --- | --- | --- | --- | --- | --- |
| 181 | 1.3.1.3 | **CC - Desarrollo** | 18d? | 2018-06-04 17:00 | 2018-06-28 15:17 |  | 2018-06-18 10:30 | 2018-07-31 15:54 | 62.85d? | 30d |  |  | 159h | 3,525 |
| 182 | 1.3.1.3.1 | **CC - Modulo Catalogos Maestros** | 8d? | 2018-06-04 17:00 | 2018-06-14 11:00 |  | 2018-06-18 10:30 | 2018-07-06 17:30 | 29.25d? | 30d |  |  | 60h | 1,500 |
| 183 | 1.3.1.3.1.1 | CC - Catalogo Rol | 1d? | 2018-06-04 17:00 | 2018-06-05 11:00 | 173 | 2018-06-19 17:42 | 2018-06-20 17:42 | 2d? | 30d | 0d | Omar Santiago | 4h | 100 |
| 184 | 1.3.1.3.1.2 | CC - Catalogo Actores | 1d? | 2018-06-05 11:00 | 2018-06-05 17:00 | 183 | 2018-06-18 10:30 | 2018-06-19 10:30 | 2d? | 30d | 0d | Omar Santiago | 4h | 100 |
| 185 | 1.3.1.3.1.3 | CC - Catalogo Actores-Roles | 1d? | 2018-06-05 17:00 | 2018-06-06 11:00 | 184 | 2018-06-20 15:42 | 2018-06-21 15:42 | 2d? | 30d | 0d | Omar Santiago | 4h | 100 |
| 186 | 1.3.1.3.1.4 | CC - Catalogo Contratos | 1d? | 2018-06-06 11:00 | 2018-06-06 17:00 | 185 | 2018-06-20 15:42 | 2018-06-21 15:42 | 2d? | 30d | 0d | Omar Santiago | 4h | 100 |
| 187 | 1.3.1.3.1.5 | CC - Catalogo Tipos de Tarifa | 1d? | 2018-06-06 17:00 | 2018-06-07 11:00 | 186 | 2018-06-22 18:54 | 2018-06-25 18:54 | 2d? | 30d | 0d | Omar Santiago | 4h | 100 |
| 188 | 1.3.1.3.1.6 | CC - Catalogo Tarifa | 1d? | 2018-06-07 11:00 | 2018-06-07 17:00 | 187 | 2018-06-22 18:54 | 2018-06-25 18:54 | 2d? | 30d | 0d | Omar Santiago | 4h | 100 |
| 189 | 1.3.1.3.1.7 | CC - Catalogo Conceptos de Tarifa | 1d? | 2018-06-07 17:00 | 2018-06-08 11:00 | 188 | 2018-06-27 12:06 | 2018-06-28 12:06 | 2d? | 30d | 0d | Omar Santiago | 4h | 100 |
| 190 | 1.3.1.3.1.8 | CC - Catalogo Choferes | 1d? | 2018-06-08 11:00 | 2018-06-08 17:00 | 189 | 2018-06-27 12:06 | 2018-06-28 12:06 | 2d? | 30d | 0d | Omar Santiago | 4h | 100 |
| 191 | 1.3.1.3.1.9 | CC - Catalogo Camiones | 1d? | 2018-06-08 17:00 | 2018-06-11 11:00 | 190 | 2018-06-29 17:18 | 2018-07-02 17:18 | 2d? | 30d | 0d | Omar Santiago | 4h | 100 |
| 192 | 1.3.1.3.1.10 | CC - Catalogo Responsables de Incidencias | 1d? | 2018-06-11 11:00 | 2018-06-11 17:00 | 191 | 2018-06-29 09:06 | 2018-07-02 09:06 | 2d? | 30d | 0d | Omar Santiago | 4h | 100 |
| 193 | 1.3.1.3.1.11 | CC - Catalogo Tipos de Incidencias | 1d? | 2018-06-11 17:00 | 2018-06-12 11:00 | 192 | 2018-07-03 12:18 | 2018-07-04 12:18 | 2d? | 30d | 0d | Omar Santiago | 4h | 100 |
| 194 | 1.3.1.3.1.12 | CC - Catalogo Tipos de Viaje | 1d? | 2018-06-12 11:00 | 2018-06-12 17:00 | 193 | 2018-07-03 12:18 | 2018-07-04 12:18 | 2d? | 30d | 0d | Omar Santiago | 4h | 100 |
| 195 | 1.3.1.3.1.13 | CC - Catalogo Tipos de Carga/Descarga | 1d? | 2018-06-12 17:00 | 2018-06-13 11:00 | 194 | 2018-07-05 17:30 | 2018-07-06 17:30 | 2d? | 30d | 0d | Omar Santiago | 4h | 100 |
| 196 | 1.3.1.3.1.14 | CC - Catalogo Clientes de Entrega | 1d? | 2018-06-13 11:00 | 2018-06-13 17:00 | 195 | 2018-07-05 17:30 | 2018-07-06 17:30 | 2d? | 30d | 0d | Omar Santiago | 4h | 100 |
| 197 | 1.3.1.3.1.15 | CC - Catalogo Clientes Solicidates | 1d? | 2018-06-13 17:00 | 2018-06-14 11:00 | 196 | 2018-07-05 17:30 | 2018-07-06 17:30 | 2d? | 30d | 0d | Omar Santiago | 4h | 100 |
| 198 | 1.3.1.3.2 | **CC - Modulo Seguridad** | 2d? | 2018-06-14 11:00 | 2018-06-18 19:00 |  | 2018-07-10 10:42 | 2018-07-16 15:54 | 8.8d? | 30d |  |  | 22h | 550 |
| 199 | 1.3.1.3.2.1 | CC - Roles | 1.75d? | 2018-06-14 11:00 | 2018-06-15 10:00 | 197 | 2018-07-10 10:42 | 2018-07-11 18:42 | 3.5d? | 30d | 0d | Omar Santiago | 7h | 175 |
| 200 | 1.3.1.3.2.2 | CC - Configuracion | 1.75d? | 2018-06-15 10:00 | 2018-06-15 19:00 | 199 | 2018-07-10 10:42 | 2018-07-11 18:42 | 3.5d? | 30d | 1d | Omar Santiago | 7h | 175 |
| 201 | 1.3.1.3.2.3 | CC - Permisos | 2d? | 2018-06-18 09:00 | 2018-06-18 19:00 | 200 | 2018-07-12 15:54 | 2018-07-16 15:54 | 4d? | 30d | 1d | Omar Santiago | 8h | 200 |
| 202 | 1.3.1.3.3 | **CC - Modulo Solicitudes** | 7d? | 2018-06-19 09:00 | 2018-06-28 15:17 |  | 2018-07-17 11:14 | 2018-07-30 17:11 | 18.99d? | 30d |  |  | 53h | 875 |
| 203 | 1.3.1.3.3.1 | CC - Cliente - Solicitud de Transporte | 1.75d? | 2018-06-19 09:00 | 2018-06-19 18:00 | 201 | 2018-07-17 11:14 | 2018-07-18 11:14 | 2d? | 30d | 0d | Omar Santiago | 7h | 175 |
| 204 | 1.3.1.3.3.2 | CC - Trafico - Valoracion del Viaje | 1.75d? | 2018-06-19 18:00 | 2018-06-20 17:00 | 203 | 2018-07-17 11:14 | 2018-07-18 11:14 | 2d? | 31d | 0d | Omar Santiago | 7h | 175 |
| 205 | 1.3.1.3.3.3 | CC - Distribucion - Asugnacion de Unidad y Carga | 1.75d? | 2018-06-20 17:00 | 2018-06-21 16:00 | 204 | 2018-07-19 18:34 | 2018-07-20 18:34 | 2d? | 31d | 0d | Omar Santiago | 7h | 175 |
| 206 | 1.3.1.3.3.4 | CC - Operador CL - Operación y Descarga | 1.75d? | 2018-06-21 16:00 | 2018-06-22 13:00 | 205 | 2018-07-19 18:34 | 2018-07-20 18:34 | 2d? | 30d | 0d | Omar Santiago | 7h | 175 |
| 207 | 1.3.1.3.3.5 | CC - Distribucion - Cierre del Viaje y Facturacion | 1.75d? | 2018-06-22 15:00 | 2018-06-25 12:00 | 206 | 2018-07-24 15:54 | 2018-07-25 15:54 | 2d? | 30d | 0d | Omar Santiago | 7h | 175 |

| ID | WBS | Task | Duration | Start | Finish | Predecessors | Baseline start | Baseline finish | Baseline duration | Total slack | Free slack | Resources | Work | Cost |
| --- | --- | --- | --- | --- | --- | --- | --- | --- | --- | --- | --- | --- | --- | --- |
| 208 | 1.3.1.3.3.6 | **CC - Primer Check point operativo** | 2d? | 2018-06-25 12:00 | 2018-06-27 12:00 |  | 2018-07-25 15:54 | 2018-07-27 15:54 | 4d? | 30d |  |  | 9h |  |
| 209 | 1.3.1.3.3.6.1 | CC - Primer Check point operativo | 2d? | 2018-06-25 12:00 | 2018-06-26 12:00 | 207 | 2018-07-25 15:54 | 2018-07-26 15:54 | 2d? | 30d | 0d | Omar Santiago/ITSC [25%] | 2h |  |
| 210 | 1.3.1.3.3.6.2 | CC - Actualizacion de los puntos del primer Ckeckpoint | 2d? | 2018-06-26 12:00 | 2018-06-27 12:00 | 209 | 2018-07-26 15:54 | 2018-07-27 15:54 | 2d? | 30d | 0d | Omar Santiago/ITSC [87.5%] | 7h |  |
| 211 | 1.3.1.3.3.7 | **CC - Segundo Check point operativo** | 1d? | 2018-06-27 12:00 | 2018-06-28 15:17 |  | 2018-07-27 15:54 | 2018-07-30 17:11 | 2.32d? | 30d |  |  | 9h |  |
| 212 | 1.3.1.3.3.7.1 | CC - Segundo Check point operativo | 0.57d? | 2018-06-27 12:00 | 2018-06-27 16:17 | 210 | 2018-07-27 15:54 | 2018-07-27 18:11 | 0.57d? | 30d | 0d | Omar Santiago/ITSC [87.5%] | 2h |  |
| 213 | 1.3.1.3.3.7.2 | CC - Actualizacion de los puntos del segundo Check point operativo | 1.75d? | 2018-06-27 16:17 | 2018-06-28 15:17 | 212 | 2018-07-27 18:11 | 2018-07-30 17:11 | 1.75d? | 30d |  | Omar Santiago/ITSC | 7h |  |
| 214 | 1.3.1.3.4 | **CC - Modulo Alarmas/Reportes/Indicadores de gestión** | 6d? | 2018-06-07 15:42 | 2018-06-14 23:00 |  | 2018-07-26 15:54 | 2018-07-31 15:54 | 6d? | 27d |  |  | 24h | 600 |
| 215 | 1.3.1.3.4.1 | CC - Alarmas | 2d? | 2018-06-07 15:42 | 2018-06-08 23:00 | 122 | 2018-07-26 15:54 | 2018-07-27 15:54 | 2d? | 27d | 0d | Omar Santiago | 8h | 200 |
| 216 | 1.3.1.3.4.2 | CC - Reportes | 2d? | 2018-06-11 09:00 | 2018-06-12 23:00 | 215 | 2018-07-26 15:54 | 2018-07-27 15:54 | 2d? | 27d | 0d | Omar Santiago | 8h | 200 |
| 217 | 1.3.1.3.4.3 | CC - Indicadores de gestión | 2d? | 2018-06-13 09:00 | 2018-06-14 23:00 | 216 | 2018-07-30 15:54 | 2018-07-31 15:54 | 2d? | 27d | 0d | Omar Santiago | 8h | 200 |
| 218 | 1.3.1.4 | **PU - Pruebas Untarias** | 14d? | 2018-06-05 11:00 | 2018-06-25 17:00 |  | 2018-06-19 10:30 | 2018-08-01 15:54 | 62.85d? | 34d |  |  | 75h |  |
| 219 | 1.3.1.4.1 | **PU - Modulo Catalogos Maestros** | 7d? | 2018-06-05 11:00 | 2018-06-14 13:00 |  | 2018-06-19 10:30 | 2018-07-09 17:30 | 29.25d? | 40d |  |  | 30h |  |
| 220 | 1.3.1.4.1.1 | PU - Catalogo Rol | 0.5d? | 2018-06-05 11:00 | 2018-06-05 13:00 | 183 | 2018-06-20 17:42 | 2018-06-21 17:42 | 2d? | 47d |  | Omar Santiago/Fernando Nava | 2h |  |
| 221 | 1.3.1.4.1.2 | PU - Catalogo Actores | 0.5d? | 2018-06-05 17:00 | 2018-06-05 19:00 | 184 | 2018-06-19 10:30 | 2018-06-19 12:30 | 0.5d? | 47d |  | Omar Santiago/Fernando Nava | 2h |  |
| 222 | 1.3.1.4.1.3 | PU - Catalogo Actores-Roles | 0.5d? | 2018-06-06 11:00 | 2018-06-06 13:00 | 185 | 2018-06-21 15:42 | 2018-06-22 15:42 | 2d? | 46d |  | Omar Santiago/Fernando Nava | 2h |  |
| 223 | 1.3.1.4.1.4 | PU - Catalogo Contratos | 0.5d? | 2018-06-06 17:00 | 2018-06-06 19:00 | 186 | 2018-06-21 15:42 | 2018-06-22 15:42 | 2d? | 46d |  | Omar Santiago/Fernando Nava | 2h |  |
| 224 | 1.3.1.4.1.5 | PU - Catalogo Tipos de Tarifa | 0.5d? | 2018-06-07 11:00 | 2018-06-07 13:00 | 187 | 2018-06-25 18:54 | 2018-06-26 18:54 | 2d? | 45d |  | Omar Santiago/Fernando Nava | 2h |  |
| 225 | 1.3.1.4.1.6 | PU - Catalogo Tarifa | 0.5d? | 2018-06-07 17:00 | 2018-06-07 19:00 | 188 | 2018-06-25 18:54 | 2018-06-26 18:54 | 2d? | 45d |  | Omar Santiago/Fernando Nava | 2h |  |
| 226 | 1.3.1.4.1.7 | PU - Catalogo Conceptos de Tarifa | 0.5d? | 2018-06-08 11:00 | 2018-06-08 13:00 | 189 | 2018-06-28 12:06 | 2018-06-29 12:06 | 2d? | 44d |  | Omar Santiago/Fernando Nava | 2h |  |
| 227 | 1.3.1.4.1.8 | PU - Catalogo Choferes | 0.5d? | 2018-06-08 17:00 | 2018-06-08 19:00 | 190 | 2018-06-28 12:06 | 2018-06-29 12:06 | 2d? | 44d |  | Omar Santiago/Fernando Nava | 2h |  |
| 228 | 1.3.1.4.1.9 | PU - Catalogo Camiones | 0.5d? | 2018-06-11 11:00 | 2018-06-11 13:00 | 191 | 2018-07-02 17:18 | 2018-07-03 17:18 | 2d? | 43d |  | Omar Santiago/Fernando Nava | 2h |  |
| 229 | 1.3.1.4.1.10 | PU - Catalogo Responsables de Incidencias | 0.5d? | 2018-06-11 17:00 | 2018-06-11 19:00 | 192 | 2018-07-02 09:06 | 2018-07-03 09:06 | 2d? | 43d |  | Omar Santiago/Fernando Nava | 2h |  |
| 230 | 1.3.1.4.1.11 | PU - Catalogo Tipos de Incidencias | 0.5d? | 2018-06-12 11:00 | 2018-06-12 13:00 | 193 | 2018-07-04 12:18 | 2018-07-05 12:18 | 2d? | 42d |  | Omar Santiago/Fernando Nava | 2h |  |
| 231 | 1.3.1.4.1.12 | PU - Catalogo Tipos de Viaje | 0.5d? | 2018-06-12 17:00 | 2018-06-12 19:00 | 194 | 2018-07-04 12:18 | 2018-07-05 12:18 | 2d? | 42d |  | Omar Santiago/Fernando Nava | 2h |  |
| 232 | 1.3.1.4.1.13 | PU - Catalogo Tipos de Carga/Descarga | 0.5d? | 2018-06-13 11:00 | 2018-06-13 13:00 | 195 | 2018-07-06 17:30 | 2018-07-09 17:30 | 2d? | 41d |  | Omar Santiago/Fernando Nava | 2h |  |
| 233 | 1.3.1.4.1.14 | PU - Catalogo Clientes de Entrega | 0.5d? | 2018-06-13 17:00 | 2018-06-13 19:00 | 196 | 2018-07-06 17:30 | 2018-07-09 17:30 | 2d? | 41d |  | Omar Santiago/Fernando Nava | 2h |  |
| 234 | 1.3.1.4.1.15 | PU - Catalogo Clientes Solicidates | 0.5d? | 2018-06-14 11:00 | 2018-06-14 13:00 | 197 | 2018-07-06 17:30 | 2018-07-09 17:30 | 2d? | 40d |  | Omar Santiago/Fernando Nava | 2h |  |

| ID | WBS | Task | Duration | Start | Finish | Predecessors | Baseline start | Baseline finish | Baseline duration | Total slack | Free slack | Resources | Work | Cost |
| --- | --- | --- | --- | --- | --- | --- | --- | --- | --- | --- | --- | --- | --- | --- |
| 235 | 1.3.1.4.2 | **PU - Modulo Seguridad** | 2d? | 2018-06-15 10:00 | 2018-06-19 11:00 |  | 2018-07-11 18:42 | 2018-07-17 15:54 | 7.3d? | 37d |  |  | 6h |  |
| 236 | 1.3.1.4.2.1 | PU - Roles | 0.5d? | 2018-06-15 10:00 | 2018-06-15 12:00 | 199 | 2018-07-11 18:42 | 2018-07-12 18:42 | 2d? | 39d |  | Omar Santiago/Fernando Nava | 2h |  |
| 237 | 1.3.1.4.2.2 | PU - Configuracion | 0.5d? | 2018-06-18 09:00 | 2018-06-18 11:00 | 200 | 2018-07-11 18:42 | 2018-07-12 18:42 | 2d? | 38d |  | Omar Santiago/Fernando Nava | 2h |  |
| 238 | 1.3.1.4.2.3 | PU - Permisos | 0.5d? | 2018-06-19 09:00 | 2018-06-19 11:00 | 201 | 2018-07-16 15:54 | 2018-07-17 15:54 | 2d? | 37d |  | Omar Santiago/Fernando Nava | 2h |  |
| 239 | 1.3.1.4.3 | **PU - Modulo Solicitudes** | 4d? | 2018-06-19 18:00 | 2018-06-25 17:00 |  | 2018-07-18 11:14 | 2018-07-26 15:54 | 12.67d? | 33d |  |  | 15h |  |
| 240 | 1.3.1.4.3.1 | PU - Cliente - Solicitud de Transporte | 0.75d? | 2018-06-19 18:00 | 2018-06-20 11:00 | 203 | 2018-07-18 11:14 | 2018-07-19 11:14 | 2d? | 36d |  | Omar Santiago/Fernando Nava | 3h |  |
| 241 | 1.3.1.4.3.2 | PU - Trafico - Valoracion del Viaje | 0.75d? | 2018-06-20 17:00 | 2018-06-21 10:00 | 204 | 2018-07-18 11:14 | 2018-07-19 11:14 | 2d? | 35d |  | Omar Santiago/Fernando Nava | 3h |  |
| 242 | 1.3.1.4.3.3 | PU - Distribucion - Asugnacion de Unidad y Carga | 0.75d? | 2018-06-21 16:00 | 2018-06-21 19:00 | 205 | 2018-07-20 18:34 | 2018-07-23 18:34 | 2d? | 35d |  | Omar Santiago/Fernando Nava | 3h |  |
| 243 | 1.3.1.4.3.4 | PU - Operador CL - Operación y Descarga | 0.75d? | 2018-06-22 15:00 | 2018-06-22 18:00 | 206 | 2018-07-20 18:34 | 2018-07-23 18:34 | 2d? | 34d |  | Omar Santiago/Fernando Nava | 3h |  |
| 244 | 1.3.1.4.3.5 | PU - Distribucion - Cierre del Viaje y Facturacion | 0.75d? | 2018-06-25 12:00 | 2018-06-25 17:00 | 207 | 2018-07-25 15:54 | 2018-07-26 15:54 | 2d? | 33d |  | Omar Santiago/Fernando Nava | 3h |  |
| 245 | 1.3.1.4.4 | **PU - Modulo Alarmas/Reportes/Indicadores de gestión** | 6d? | 2018-06-11 09:00 | 2018-06-18 23:00 |  | 2018-07-27 15:54 | 2018-08-01 15:54 | 6d? | 31d |  |  | 24h |  |
| 246 | 1.3.1.4.4.1 | PU - Alarmas | 2d? | 2018-06-11 09:00 | 2018-06-12 23:00 | 215 | 2018-07-27 15:54 | 2018-07-30 15:54 | 2d? | 42d |  | Omar Santiago/Fernando Nava | 8h |  |
| 247 | 1.3.1.4.4.2 | PU - Reportes | 2d? | 2018-06-13 09:00 | 2018-06-14 23:00 | 216 | 2018-07-27 15:54 | 2018-07-30 15:54 | 2d? | 40d |  | Omar Santiago/Fernando Nava | 8h |  |
| 248 | 1.3.1.4.4.3 | PU - Indicadores de gestión | 2d? | 2018-06-15 09:00 | 2018-06-18 23:00 | 217 | 2018-07-31 15:54 | 2018-08-01 15:54 | 2d? | 27d | 0d | Omar Santiago/Fernando Nava | 8h |  |
| 249 | 1.3.1.5 | **TD - Termina Desarrollo** | 4d? | 2018-06-19 09:00 | 2018-06-25 17:00 |  | 2018-08-01 15:54 | 2018-08-09 09:54 | 11d? | 27d |  |  | 38h | 950 |
| 250 | 1.3.1.5.1 | **TD - Configuracion en Ambiente QA o TEST** | 4d? | 2018-06-19 09:00 | 2018-06-25 17:00 |  | 2018-08-01 15:54 | 2018-08-09 09:54 | 11d? | 27d | 0d |  | 38h | 950 |
| 251 | 1.3.1.5.1.1 | Configuracion de Java 7 u 8 | 1.5d? | 2018-06-19 09:00 | 2018-06-19 17:00 | 248 | 2018-08-01 15:54 | 2018-08-02 15:54 | 2d? | 27d | 0d | Omar Santiago | 6h | 150 |
| 252 | 1.3.1.5.1.2 | Configuracion de Mysql y complementos | 1.5d? | 2018-06-19 17:00 | 2018-06-20 13:00 | 251 | 2018-08-02 15:54 | 2018-08-03 15:54 | 2d? | 27d | 0d | Omar Santiago | 6h | 150 |
| 253 | 1.3.1.5.1.3 | Configuracion de Apache Tomcat | 1.5d? | 2018-06-20 15:00 | 2018-06-21 11:00 | 252 | 2018-08-03 15:54 | 2018-08-06 15:54 | 2d? | 27d | 0d | Omar Santiago | 6h | 150 |
| 254 | 1.3.1.5.1.4 | Configuracion AppWeb v1 | 5d? | 2018-06-21 11:00 | 2018-06-25 17:00 | 253 | 2018-08-06 15:54 | 2018-08-09 09:54 | 5d? | 27d |  | Omar Santiago | 20h | 500 |
| 255 | 1.3.1.6 | **PI - Pruebas Integrales** | 5d? | 2018-06-25 17:00 | 2018-06-29 23:00 |  | 2018-08-09 09:54 | 2018-08-20 09:54 | 14d? | 28d |  |  | 52h |  |
| 256 | 1.3.1.6.1 | **PI - Modulo Catalogos Maestros** | 0d? | 2018-06-25 17:00 | 2018-06-25 19:00 |  | 2018-08-09 09:54 | 2018-08-13 09:54 | 4d? | 28d |  |  | 15h |  |
| 257 | 1.3.1.6.1.1 | PI - Catalogo Rol | 0.25d? | 2018-06-25 17:00 | 2018-06-25 18:00 | 250 | 2018-08-09 09:54 | 2018-08-10 09:54 | 2d? | 33d |  | Omar Santiago/Fernando Nava/ITSC | 1h |  |
| 258 | 1.3.1.6.1.2 | PI - Catalogo Actores | 0.25d? | 2018-06-25 17:00 | 2018-06-25 18:00 | 250 | 2018-08-09 09:54 | 2018-08-10 09:54 | 2d? | 33d |  | Omar Santiago/Fernando Nava/ITSC | 1h |  |
| 259 | 1.3.1.6.1.3 | PI - Catalogo Actores-Roles | 0.25d? | 2018-06-25 17:00 | 2018-06-25 18:00 | 250 | 2018-08-09 09:54 | 2018-08-10 09:54 | 2d? | 33d |  | Omar Santiago/Fernando Nava/ITSC | 1h |  |
| 260 | 1.3.1.6.1.4 | PI - Catalogo Contratos | 0.25d? | 2018-06-25 17:00 | 2018-06-25 18:00 | 250 | 2018-08-09 09:54 | 2018-08-10 09:54 | 2d? | 33d |  | Omar Santiago/Fernando Nava/ITSC | 1h |  |
| 261 | 1.3.1.6.1.5 | PI - Catalogo Tipos de Tarifa | 0.25d? | 2018-06-25 17:00 | 2018-06-25 18:00 | 250 | 2018-08-09 09:54 | 2018-08-10 09:54 | 2d? | 33d |  | Omar Santiago/Fernando Nava/ITSC | 1h |  |
| 262 | 1.3.1.6.1.6 | PI - Catalogo Tarifa | 0.25d? | 2018-06-25 17:00 | 2018-06-25 18:00 | 250 | 2018-08-09 09:54 | 2018-08-10 09:54 | 2d? | 33d |  | Omar Santiago/Fernando Nava/ITSC | 1h |  |
| 263 | 1.3.1.6.1.7 | PI - Catalogo Conceptos de Tarifa | 0.25d? | 2018-06-25 17:00 | 2018-06-25 18:00 | 250 | 2018-08-09 09:54 | 2018-08-10 09:54 | 2d? | 33d |  | Omar Santiago/Fernando Nava/ITSC | 1h |  |
| 264 | 1.3.1.6.1.8 | PI - Catalogo Choferes | 0.25d? | 2018-06-25 17:00 | 2018-06-25 18:00 | 250 | 2018-08-09 09:54 | 2018-08-10 09:54 | 2d? | 33d |  | Omar Santiago/Fernando Nava/ITSC | 1h |  |
| 265 | 1.3.1.6.1.9 | PI - Catalogo Camiones | 0.25d? | 2018-06-25 17:00 | 2018-06-25 18:00 | 250 | 2018-08-09 09:54 | 2018-08-10 09:54 | 2d? | 33d |  | Omar Santiago/Fernando Nava/ITSC | 1h |  |
| 266 | 1.3.1.6.1.10 | PI - Catalogo Responsables de Incidencias | 0.25d? | 2018-06-25 17:00 | 2018-06-25 18:00 | 250 | 2018-08-09 09:54 | 2018-08-10 09:54 | 2d? | 28d | 0d | Omar Santiago/Fernando Nava/ITSC | 1h |  |
| 267 | 1.3.1.6.1.11 | PI - Catalogo Tipos de Incidencias | 0.25d? | 2018-06-25 18:00 | 2018-06-25 19:00 | 266 | 2018-08-10 09:54 | 2018-08-13 09:54 | 2d? | 33d |  | Omar Santiago/Fernando Nava/ITSC | 1h |  |
| 268 | 1.3.1.6.1.12 | PI - Catalogo Tipos de Viaje | 0.25d? | 2018-06-25 18:00 | 2018-06-25 19:00 | 266 | 2018-08-10 09:54 | 2018-08-13 09:54 | 2d? | 33d |  | Omar Santiago/Fernando Nava/ITSC | 1h |  |
| 269 | 1.3.1.6.1.13 | PI - Catalogo Tipos de Carga/Descarga | 0.25d? | 2018-06-25 18:00 | 2018-06-25 19:00 | 266 | 2018-08-10 09:54 | 2018-08-13 09:54 | 2d? | 33d |  | Omar Santiago/Fernando Nava/ITSC | 1h |  |
| 270 | 1.3.1.6.1.14 | PI - Catalogo Clientes de Entrega | 0.25d? | 2018-06-25 18:00 | 2018-06-25 19:00 | 266 | 2018-08-10 09:54 | 2018-08-13 09:54 | 2d? | 33d |  | Omar Santiago/Fernando Nava/ITSC | 1h |  |
| 271 | 1.3.1.6.1.15 | PI - Catalogo Clientes Solicidates | 0.25d? | 2018-06-25 18:00 | 2018-06-25 19:00 | 266 | 2018-08-10 09:54 | 2018-08-13 09:54 | 2d? | 28d | 1d | Omar Santiago/Fernando Nava/ITSC | 1h |  |

| ID | WBS | Task | Duration | Start | Finish | Predecessors | Complete | Baseline start | Baseline finish | Baseline duration | Total slack | Free slack | Resources | Work |
| --- | --- | --- | --- | --- | --- | --- | --- | --- | --- | --- | --- | --- | --- | --- |
| 272 | 1.3.1.6.2 | **PI - Modulo Seguridad** | 0d? | 2018-06-26 09:00 | 2018-06-26 10:00 |  |  | 2018-08-13 09:54 | 2018-08-14 09:54 | 2d? | 27d |  |  | 3h |
| 273 | 1.3.1.6.2.1 | PI - Roles | 0.25d? | 2018-06-26 09:00 | 2018-06-26 10:00 | 271 |  | 2018-08-13 09:54 | 2018-08-14 09:54 | 2d? | 32d |  | Omar Santiago/Fernando Nava/ITSC | 1h |
| 274 | 1.3.1.6.2.2 | PI - Configuracion | 0.25d? | 2018-06-26 09:00 | 2018-06-26 10:00 | 271 |  | 2018-08-13 09:54 | 2018-08-14 09:54 | 2d? | 32d |  | Omar Santiago/Fernando Nava/ITSC | 1h |
| 275 | 1.3.1.6.2.3 | PI - Permisos | 0.25d? | 2018-06-26 09:00 | 2018-06-26 10:00 | 271 |  | 2018-08-13 09:54 | 2018-08-14 09:54 | 2d? | 27d | 0d | Omar Santiago/Fernando Nava/ITSC | 1h |
| 276 | 1.3.1.6.3 | **PI - Modulo Solicitudes** | 0d? | 2018-06-26 10:00 | 2018-06-26 16:00 |  |  | 2018-08-14 09:54 | 2018-08-16 09:54 | 4d? | 27d |  |  | 10h |
| 277 | 1.3.1.6.3.1 | PI - Cliente - Solicitud de Transporte | 0.5d? | 2018-06-26 10:00 | 2018-06-26 12:00 | 275 |  | 2018-08-14 09:54 | 2018-08-15 09:54 | 2d? | 32d |  | Omar Santiago/Fernando Nava/ITSC | 2h |
| 278 | 1.3.1.6.3.2 | PI - Trafico - Valoracion del Viaje | 0.5d? | 2018-06-26 10:00 | 2018-06-26 12:00 | 275 |  | 2018-08-14 09:54 | 2018-08-15 09:54 | 2d? | 32d |  | Omar Santiago/Fernando Nava/ITSC | 2h |
| 279 | 1.3.1.6.3.3 | PI - Distribucion - Asugnacion de Unidad y Carga | 0.5d? | 2018-06-26 10:00 | 2018-06-26 12:00 | 275 |  | 2018-08-14 09:54 | 2018-08-15 09:54 | 2d? | 27d | 0d | Omar Santiago/Fernando Nava/ITSC | 2h |
| 280 | 1.3.1.6.3.4 | PI - Operador CL - Operación y Descarga | 0.5d? | 2018-06-26 12:00 | 2018-06-26 16:00 | 279 |  | 2018-08-15 09:54 | 2018-08-16 09:54 | 2d? | 32d |  | Omar Santiago/Fernando Nava/ITSC | 2h |
| 281 | 1.3.1.6.3.5 | PI - Distribucion - Cierre del Viaje y Facturacion | 0.5d? | 2018-06-26 12:00 | 2018-06-26 16:00 | 279 |  | 2018-08-15 09:54 | 2018-08-16 09:54 | 2d? | 27d | 0d | Omar Santiago/Fernando Nava/ITSC | 2h |
| 282 | 1.3.1.6.4 | **PI - Modulo Alarmas/Reportes/Indicadores de gestión** | 4d? | 2018-06-26 16:00 | 2018-06-29 23:00 |  |  | 2018-08-16 09:54 | 2018-08-20 09:54 | 4d? | 27d |  |  | 24h |
| 283 | 1.3.1.6.4.1 | PI - Alarmas | 2d? | 2018-06-26 16:00 | 2018-06-27 23:00 | 281 |  | 2018-08-16 09:54 | 2018-08-17 09:54 | 2d? | 31d |  | Omar Santiago/Fernando Nava/ITSC | 8h |
| 284 | 1.3.1.6.4.2 | PI - Reportes | 2d? | 2018-06-26 16:00 | 2018-06-27 23:00 | 281 |  | 2018-08-16 09:54 | 2018-08-17 09:54 | 2d? | 27d | 0d | Omar Santiago/Fernando Nava/ITSC | 8h |
| 285 | 1.3.1.6.4.3 | PI - Indicadores de gestión | 2d? | 2018-06-28 09:00 | 2018-06-29 23:00 | 284 |  | 2018-08-17 09:54 | 2018-08-20 09:54 | 2d? | 27d | 0d | Omar Santiago/Fernando Nava/ITSC | 8h |
| 286 | 1.3.2 | PI - Cierre Pruebas Integrales | 0.5d? | 2018-07-02 09:00 | 2018-07-02 11:00 | 285 |  | 2018-08-20 09:54 | 2018-08-21 09:54 | 2d? | 27d | 0d | Omar Santiago/Fernando Nava/ITSC | 2h |
| 287 | 1.3.3 | **LB - Liberacion a Produccion** | 1d? | 2018-07-02 11:00 | 2018-07-03 11:00 |  |  | 2018-08-21 09:54 | 2018-08-22 09:54 | 2d? | 27d |  |  | 8h |
| 288 | 1.3.3.1 | LB - Liberacion y Cierre | 2d? | 2018-07-02 11:00 | 2018-07-03 11:00 | 286 |  | 2018-08-21 09:54 | 2018-08-22 09:54 | 2d? | 27d |  | Omar Santiago/Fernando Nava/ITSC | 8h |
| 289 | 2 | Monitoreo y Control | 2d? | 2018-06-04 09:00 A | 2018-06-04 19:00 A |  | 100% | 2018-05-24 09:00 | 2018-05-24 19:00 | 2d? |  |  |  |  |
