# Plan_AT_CC.xls

Schedule from MS Project, 2018-05-24 to 2018-07-31.

## Calendars

- Estándar: Mon-Fri 09:00-13:00, 15:00-19:00; Sat-Sun off.

## Resources

| Resource |
| --- |
| Omar Santiago/Fernando Nava |
| ITSC |
| Omar Santiago |
| cliente |
| Fernando Nava |
| Omar Santiago/Fernando Nava/ITSC |
| Omar Santiago/ITSC |

## Schedule

| ID | WBS | Task | Duration | Start | Finish | Predecessors | Total slack | Free slack | Resources | Work |
| --- | --- | --- | --- | --- | --- | --- | --- | --- | --- | --- |
| 1 | 1 | **001-ITSC_TMS Plan de Analisis y Desarrollo** | 47.54d? | 2018-05-24 | 2018-07-30 |  | 0d |  |  | 385h |
| 2 | 1.1 | Documnetacion AN y Bocetos | 1d? | 2018-05-24 | 2018-05-24 |  | 39.54d | 0d |  |  |
| 3 | 1.2 | **AT_Analisis** | 9d? | 2018-05-24 | 2018-06-05 |  | 0d |  |  | 66h |
| 4 | 1.2.1 | **AT Analisis de Tecnico** | 9d? | 2018-05-24 | 2018-06-05 |  | 0d |  |  | 66h |
| 5 | 1.2.1.1 | **AT - Elaboracion de propuesta de Arquitectura de Solucion** | 7d? | 2018-05-25 | 2018-06-04 |  | 39.54d |  |  | 45h |
| 6 | 1.2.1.1.1 | AT - Requerimientos tecnicos | 1d? | 2018-05-25 | 2018-05-25 | 2 | 39.54d | 0d | Omar Santiago [87.5%] | 7h |
| 7 | 1.2.1.1.2 | AT - Analisis tecnico | 1d? | 2018-05-28 | 2018-05-28 | 6 | 39.54d | 0d | Omar Santiago [87.5%] | 7h |
| 8 | 1.2.1.1.3 | AT - Requerimientos de solucion | 1d? | 2018-05-29 | 2018-05-29 | 7 | 39.54d | 0d | Omar Santiago [87.5%] | 7h |
| 9 | 1.2.1.1.4 | AT - Escalabilidad | 1d? | 2018-05-30 | 2018-05-30 | 8 | 39.54d | 0d | Omar Santiago [87.5%] | 7h |
| 10 | 1.2.1.1.5 | AT - Modelado BD | 1d? | 2018-05-31 | 2018-05-31 | 9 | 39.54d | 0d | Omar Santiago [87.5%] | 7h |
| 11 | 1.2.1.1.6 | AT - Herramientas para solucion | 1d? | 2018-06-01 | 2018-06-01 | 10 | 39.54d | 0d | Omar Santiago [62.5%] | 5h |
| 12 | 1.2.1.1.7 | AT - Aplicación responsiva para navegadores web | 1d? | 2018-06-04 | 2018-06-04 | 11 | 39.54d | 0d | Omar Santiago [62.5%] | 5h |
| 13 | 1.2.1.2 | AT - Peer Review y Vo Bo Arquitectura de Solucion | 1d | 2018-06-05 | 2018-06-05 | 12 | 39.54d |  | Omar Santiago [25%] | 2h |
| 14 | 1.2.1.3 | AT - Revisión con el usuario | 1d? | 2018-05-24 | 2018-05-24 |  | 0d |  | Omar Santiago/Fernando Nava/ITSC | 8h |
| 15 | 1.2.1.4 | AT - Ajustes de comentarios del usuario | 1d? | 2018-05-25 | 2018-05-25 | 14 | 0d |  | Omar Santiago/Fernando Nava [37.5%] | 3h |
| 16 | 1.2.1.5 | AT - Peer Review y Vo Bo | 1d? | 2018-05-28 | 2018-05-28 | 15 | 0d |  | Omar Santiago/Fernando Nava/ITSC | 8h |
| 17 | 1.3 | Validacion de documentacion, ultimos ajustes | 1d? | 2018-05-29 | 2018-05-29 | 16 | 0d |  | Omar Santiago/Fernando Nava [75%] | 6h |
| 18 | 1.4 | **CC_Desarrollo** | 43.54d? | 2018-05-30 | 2018-07-30 |  | 0d |  |  | 313h |
| 19 | 1.4.1 | **Diseño y Construcción** | 42.54d? | 2018-05-30 | 2018-07-27 |  | 0d |  |  | 311h |
| 20 | 1.4.1.1 | CC - Revision del documento de Arquitectura de Solucion | 1d? | 2018-05-30 | 2018-05-30 | 17 | 0d |  | Omar Santiago [37.5%] | 3h |
| 21 | 1.4.1.2 | **CC - Instalacion y Configuracion** | 4.67d? | 2018-05-31 | 2018-06-06 |  | 0d |  |  | 23h |
| 22 | 1.4.1.2.1 | CC - Instalacion de herramientas de desarrollo | 3d? | 2018-05-31 | 2018-06-04 | 20 | 40.54d |  | Omar Santiago [37.5%] | 9h |
| 23 | 1.4.1.2.2 | CC - Instalacion de herramientas de gestion de Bases de Datos | 3d? | 2018-05-31 | 2018-06-04 | 20 | 0d |  | Omar Santiago [37.5%] | 9h |
| 24 | 1.4.1.2.3 | CC - Instalacion de herramienta para soportar aplicaciones web | 1.67d? | 2018-06-05 | 2018-06-06 | 23 | 0d |  | Omar Santiago [37.5%] | 5h |

| ID | WBS | Task | Duration | Start | Finish | Predecessors | Total slack | Free slack | Resources | Work |
| --- | --- | --- | --- | --- | --- | --- | --- | --- | --- | --- |
| 25 | 1.4.1.3 | **CC - Desarrollo** | 23.38d? | 2018-06-06 | 2018-07-10 |  | 0d |  |  | 153h |
| 26 | 1.4.1.3.1 | **CC - Modulo Catalogos Maestros** | 8d? | 2018-06-06 | 2018-06-18 |  | 0d |  |  | 60h |
| 27 | 1.4.1.3.1.1 | CC - Catalogo Rol | 1d? | 2018-06-06 | 2018-06-07 | 24 | 36.88d | 0d | Omar Santiago [50%] | 4h |
| 28 | 1.4.1.3.1.2 | CC - Catalogo Actores | 1d? | 2018-06-06 | 2018-06-07 | 24 | 0d |  | Omar Santiago [50%] | 4h |
| 29 | 1.4.1.3.1.3 | CC - Catalogo Actores-Roles | 1d? | 2018-06-07 | 2018-06-08 | 28 | 35.88d | 0d | Omar Santiago [50%] | 4h |
| 30 | 1.4.1.3.1.4 | CC - Catalogo Contratos | 1d? | 2018-06-07 | 2018-06-08 | 28 | 0d |  | Omar Santiago [50%] | 4h |
| 31 | 1.4.1.3.1.5 | CC - Catalogo Tipos de Tarifa | 1d? | 2018-06-08 | 2018-06-11 | 30 | 34.88d | 0d | Omar Santiago [50%] | 4h |
| 32 | 1.4.1.3.1.6 | CC - Catalogo Tarifa | 1d? | 2018-06-08 | 2018-06-11 | 30 | 0d |  | Omar Santiago [50%] | 4h |
| 33 | 1.4.1.3.1.7 | CC - Catalogo Conceptos de Tarifa | 1d? | 2018-06-11 | 2018-06-12 | 32 | 33.88d | 0d | Omar Santiago [50%] | 4h |
| 34 | 1.4.1.3.1.8 | CC - Catalogo Choferes | 1d? | 2018-06-11 | 2018-06-12 | 32 | 0d |  | Omar Santiago [50%] | 4h |
| 35 | 1.4.1.3.1.9 | CC - Catalogo Camiones | 1d? | 2018-06-12 | 2018-06-13 | 34 | 32.88d | 0d | Omar Santiago [50%] | 4h |
| 36 | 1.4.1.3.1.10 | CC - Catalogo Responsables de Incidencias | 1d? | 2018-06-12 | 2018-06-13 | 34 | 0d |  | Omar Santiago [50%] | 4h |
| 37 | 1.4.1.3.1.11 | CC - Catalogo Tipos de Incidencias | 1d? | 2018-06-13 | 2018-06-14 | 36 | 31.88d | 0d | Omar Santiago [50%] | 4h |
| 38 | 1.4.1.3.1.12 | CC - Catalogo Tipos de Viaje | 1d? | 2018-06-13 | 2018-06-14 | 36 | 0d |  | Omar Santiago [50%] | 4h |
| 39 | 1.4.1.3.1.13 | CC - Catalogo Tipos de Carga/Descarga | 1d? | 2018-06-14 | 2018-06-15 | 38 | 30.88d | 0d | Omar Santiago [50%] | 4h |
| 40 | 1.4.1.3.1.14 | CC - Catalogo Clientes de Entrega | 1d? | 2018-06-14 | 2018-06-15 | 38 | 0d |  | Omar Santiago [50%] | 4h |
| 41 | 1.4.1.3.1.15 | CC - Catalogo Clientes Solicidates | 1d? | 2018-06-15 | 2018-06-18 | 40 | 0d |  | Omar Santiago [50%] | 4h |
| 42 | 1.4.1.3.2 | **CC - Modulo Seguridad** | 5.5d? | 2018-06-18 | 2018-06-26 |  | 0d |  |  | 22h |
| 43 | 1.4.1.3.2.1 | CC - Roles | 1.75d? | 2018-06-18 | 2018-06-20 | 41 | 0d |  | Omar Santiago [50%] | 7h |
| 44 | 1.4.1.3.2.2 | CC - Configuracion | 1.75d? | 2018-06-20 | 2018-06-22 | 43 | 0d |  | Omar Santiago [50%] | 7h |
| 45 | 1.4.1.3.2.3 | CC - Permisos | 2d? | 2018-06-22 | 2018-06-26 | 44 | 0d |  | Omar Santiago [50%] | 8h |
| 46 | 1.4.1.3.3 | **CC - Modulo Solicitudes** | 6.88d? | 2018-06-26 | 2018-07-05 |  | 0d |  |  | 53h |
| 47 | 1.4.1.3.3.1 | CC - Cliente - Solicitud de Transporte | 1d? | 2018-06-26 | 2018-06-27 | 45 | 0d |  | Omar Santiago [87.5%] | 7h |
| 48 | 1.4.1.3.3.2 | CC - Trafico - Valoracion del Viaje | 1d? | 2018-06-27 | 2018-06-28 | 47 | 0d |  | Omar Santiago [87.5%] | 7h |
| 49 | 1.4.1.3.3.3 | CC - Distribucion - Asugnacion de Unidad y Carga | 1d? | 2018-06-28 | 2018-06-29 | 48 | 0d |  | Omar Santiago [87.5%] | 7h |
| 50 | 1.4.1.3.3.4 | CC - Operador CL - Operación y Descarga | 1d? | 2018-06-29 | 2018-07-02 | 49 | 0d |  | Omar Santiago [87.5%] | 7h |
| 51 | 1.4.1.3.3.5 | CC - Distribucion - Cierre del Viaje y Facturacion | 1d? | 2018-07-02 | 2018-07-03 | 50 | 0d |  | Omar Santiago [87.5%] | 7h |

| ID | WBS | Task | Duration | Start | Finish | Predecessors | Total slack | Resources | Work |
| --- | --- | --- | --- | --- | --- | --- | --- | --- | --- |
| 52 | 1.4.1.3.3.6 | **CC - Primer Check point operativo** | 1d? | 2018-07-03 | 2018-07-04 |  | 0d |  | 9h |
| 53 | 1.4.1.3.3.6.1 | CC - Primer Check point operativo | 1d? | 2018-07-03 | 2018-07-04 | 51 | 19.38d | Omar Santiago/ITSC [25%] | 2h |
| 54 | 1.4.1.3.3.6.2 | CC - Actualizacion de los puntos del primer Ckeckpoint | 1d? | 2018-07-03 | 2018-07-04 | 51, 53 | 0d | Omar Santiago/ITSC [87.5%] | 7h |
| 55 | 1.4.1.3.3.7 | **CC - Segundo Check point operativo** | 0.88d? | 2018-07-04 | 2018-07-05 |  | 0d |  | 9h |
| 56 | 1.4.1.3.3.7.1 | CC - Segundo Check point operativo | 0.29d? | 2018-07-04 | 2018-07-04 | 54 | 19.09d | Omar Santiago/ITSC [87.5%] | 2h |
| 57 | 1.4.1.3.3.7.2 | CC - Actualizacion de los puntos del segundo Check point operativo | 0.88d? | 2018-07-04 | 2018-07-05 | 54, 56 | 0d | Omar Santiago/ITSC | 7h |
| 58 | 1.4.1.3.4 | **CC - Modulo Alarmas/Reportes/Indicadores de gestión** | 3d? | 2018-07-05 | 2018-07-10 |  | 0d |  | 18h |
| 59 | 1.4.1.3.4.1 | CC - Alarmas | 1d? | 2018-07-05 | 2018-07-06 | 57 | 0d | Omar Santiago [75%] | 6h |
| 60 | 1.4.1.3.4.2 | CC - Reportes | 1d? | 2018-07-06 | 2018-07-09 | 59 | 0d | Omar Santiago [75%] | 6h |
| 61 | 1.4.1.3.4.3 | CC - Indicadores de gestión | 1d? | 2018-07-09 | 2018-07-10 | 60 | 0d | Omar Santiago [75%] | 6h |
| 62 | 1.4.1.4 | **PU - Pruebas Untarias** | 23.38d? | 2018-06-07 | 2018-07-11 |  | 14.5d |  | 60h |
| 63 | 1.4.1.4.1 | **PU - Modulo Catalogos Maestros** | 8d? | 2018-06-07 | 2018-06-19 |  | 29.88d |  | 30h |
| 64 | 1.4.1.4.1.1 | PU - Catalogo Rol | 1d? | 2018-06-07 | 2018-06-08 | 27 | 36.88d | Omar Santiago/Fernando Nava [25%] | 2h |
| 65 | 1.4.1.4.1.2 | PU - Catalogo Actores | 0.25d? | 2018-06-07 | 2018-06-07 | 28 | 37.62d | Omar Santiago/Fernando Nava | 2h |
| 66 | 1.4.1.4.1.3 | PU - Catalogo Actores-Roles | 1d? | 2018-06-08 | 2018-06-11 | 29 | 35.88d | Omar Santiago/Fernando Nava [25%] | 2h |
| 67 | 1.4.1.4.1.4 | PU - Catalogo Contratos | 1d? | 2018-06-08 | 2018-06-11 | 30 | 35.88d | Omar Santiago/Fernando Nava [25%] | 2h |
| 68 | 1.4.1.4.1.5 | PU - Catalogo Tipos de Tarifa | 1d? | 2018-06-11 | 2018-06-12 | 31 | 34.88d | Omar Santiago/Fernando Nava [25%] | 2h |
| 69 | 1.4.1.4.1.6 | PU - Catalogo Tarifa | 1d? | 2018-06-11 | 2018-06-12 | 32 | 34.88d | Omar Santiago/Fernando Nava [25%] | 2h |
| 70 | 1.4.1.4.1.7 | PU - Catalogo Conceptos de Tarifa | 1d? | 2018-06-12 | 2018-06-13 | 33 | 33.88d | Omar Santiago/Fernando Nava [25%] | 2h |
| 71 | 1.4.1.4.1.8 | PU - Catalogo Choferes | 1d? | 2018-06-12 | 2018-06-13 | 34 | 33.88d | Omar Santiago/Fernando Nava [25%] | 2h |
| 72 | 1.4.1.4.1.9 | PU - Catalogo Camiones | 1d? | 2018-06-13 | 2018-06-14 | 35 | 32.88d | Omar Santiago/Fernando Nava [25%] | 2h |
| 73 | 1.4.1.4.1.10 | PU - Catalogo Responsables de Incidencias | 1d? | 2018-06-13 | 2018-06-14 | 36 | 32.88d | Omar Santiago/Fernando Nava [25%] | 2h |
| 74 | 1.4.1.4.1.11 | PU - Catalogo Tipos de Incidencias | 1d? | 2018-06-14 | 2018-06-15 | 37 | 31.88d | Omar Santiago/Fernando Nava [25%] | 2h |
| 75 | 1.4.1.4.1.12 | PU - Catalogo Tipos de Viaje | 1d? | 2018-06-14 | 2018-06-15 | 38 | 31.88d | Omar Santiago/Fernando Nava [25%] | 2h |
| 76 | 1.4.1.4.1.13 | PU - Catalogo Tipos de Carga/Descarga | 1d? | 2018-06-15 | 2018-06-18 | 39 | 30.88d | Omar Santiago/Fernando Nava [25%] | 2h |
| 77 | 1.4.1.4.1.14 | PU - Catalogo Clientes de Entrega | 1d? | 2018-06-15 | 2018-06-18 | 40 | 30.88d | Omar Santiago/Fernando Nava [25%] | 2h |
| 78 | 1.4.1.4.1.15 | PU - Catalogo Clientes Solicidates | 1d? | 2018-06-18 | 2018-06-19 | 41 | 29.88d | Omar Santiago/Fernando Nava [25%] | 2h |

| ID | WBS | Task | Duration | Start | Finish | Predecessors | Total slack | Resources | Work |
| --- | --- | --- | --- | --- | --- | --- | --- | --- | --- |
| 79 | 1.4.1.4.2 | **PU - Modulo Seguridad** | 4.75d? | 2018-06-20 | 2018-06-27 |  | 24.38d |  | 6h |
| 80 | 1.4.1.4.2.1 | PU - Roles | 1d? | 2018-06-20 | 2018-06-21 | 43 | 28.12d | Omar Santiago/Fernando Nava [25%] | 2h |
| 81 | 1.4.1.4.2.2 | PU - Configuracion | 1d? | 2018-06-22 | 2018-06-25 | 44 | 26.38d | Omar Santiago/Fernando Nava [25%] | 2h |
| 82 | 1.4.1.4.2.3 | PU - Permisos | 1d? | 2018-06-26 | 2018-06-27 | 45 | 24.38d | Omar Santiago/Fernando Nava [25%] | 2h |
| 83 | 1.4.1.4.3 | **PU - Modulo Solicitudes** | 5d? | 2018-06-27 | 2018-07-04 |  | 19.38d |  | 15h |
| 84 | 1.4.1.4.3.1 | PU - Cliente - Solicitud de Transporte | 1d? | 2018-06-27 | 2018-06-28 | 47 | 23.38d | Omar Santiago/Fernando Nava [37.5%] | 3h |
| 85 | 1.4.1.4.3.2 | PU - Trafico - Valoracion del Viaje | 1d? | 2018-06-28 | 2018-06-29 | 48 | 22.38d | Omar Santiago/Fernando Nava [37.5%] | 3h |
| 86 | 1.4.1.4.3.3 | PU - Distribucion - Asugnacion de Unidad y Carga | 1d? | 2018-06-29 | 2018-07-02 | 49 | 21.38d | Omar Santiago/Fernando Nava [37.5%] | 3h |
| 87 | 1.4.1.4.3.4 | PU - Operador CL - Operación y Descarga | 1d? | 2018-07-02 | 2018-07-03 | 50 | 20.38d | Omar Santiago/Fernando Nava [37.5%] | 3h |
| 88 | 1.4.1.4.3.5 | PU - Distribucion - Cierre del Viaje y Facturacion | 1d? | 2018-07-03 | 2018-07-04 | 51 | 19.38d | Omar Santiago/Fernando Nava [37.5%] | 3h |
| 89 | 1.4.1.4.4 | **PU - Modulo Alarmas/Reportes/Indicadores de gestión** | 3d? | 2018-07-06 | 2018-07-11 |  | 2d |  | 9h |
| 90 | 1.4.1.4.4.1 | PU - Alarmas | 1d? | 2018-07-06 | 2018-07-09 | 59 | 16.5d | Omar Santiago/Fernando Nava [37.5%] | 3h |
| 91 | 1.4.1.4.4.2 | PU - Reportes | 1d? | 2018-07-09 | 2018-07-10 | 60 | 15.5d | Omar Santiago/Fernando Nava [37.5%] | 3h |
| 92 | 1.4.1.4.4.3 | PU - Indicadores de gestión | 1d? | 2018-07-10 | 2018-07-11 | 61 | 0d | Omar Santiago/Fernando Nava [37.5%] | 3h |
| 93 | 1.4.1.5 | **TD - Termina Desarrollo** | 5.5d? | 2018-07-11 | 2018-07-18 |  | 0d |  | 38h |
| 94 | 1.4.1.5.1 | **TD - Instalacion en Ambiente QA o TEST** | 5.5d? | 2018-07-11 | 2018-07-18 |  | 0d |  | 38h |
| 95 | 1.4.1.5.1.1 | Instalacion y Configuracion de Java 7 u 8 | 1d? | 2018-07-11 | 2018-07-12 | 92 | 0d | Omar Santiago [75%] | 6h |
| 96 | 1.4.1.5.1.2 | Instalacion y Configuracion de Mysql y complementos | 1d? | 2018-07-12 | 2018-07-13 | 95 | 0d | Omar Santiago [75%] | 6h |
| 97 | 1.4.1.5.1.3 | Instalacion y Configuracion de Apacte Tomcat | 1d? | 2018-07-13 | 2018-07-16 | 96 | 0d | Omar Santiago [75%] | 6h |
| 98 | 1.4.1.5.1.4 | Instalacion y Configuracion AppWeb v1 | 2.5d? | 2018-07-16 | 2018-07-18 | 97 | 0d | Omar Santiago | 20h |
| 99 | 1.4.1.6 | **PI - Pruebas Integrales** | 7d? | 2018-07-18 | 2018-07-27 |  | 0d |  | 34h |
| 100 | 1.4.1.6.1 | **PI - Modulo Catalogos Maestros** | 2d? | 2018-07-18 | 2018-07-20 |  | 0d |  | 15h |
| 101 | 1.4.1.6.1.1 | PI - Catalogo Rol | 1d? | 2018-07-18 | 2018-07-19 | 94 | 8d | Omar Santiago/Fernando Nava/ITSC [12.5%] | 1h |
| 102 | 1.4.1.6.1.2 | PI - Catalogo Actores | 1d? | 2018-07-18 | 2018-07-19 | 94 | 8d | Omar Santiago/Fernando Nava/ITSC [12.5%] | 1h |
| 103 | 1.4.1.6.1.3 | PI - Catalogo Actores-Roles | 1d? | 2018-07-18 | 2018-07-19 | 94 | 8d | Omar Santiago/Fernando Nava/ITSC [12.5%] | 1h |
| 104 | 1.4.1.6.1.4 | PI - Catalogo Contratos | 1d? | 2018-07-18 | 2018-07-19 | 94 | 8d | Omar Santiago/Fernando Nava/ITSC [12.5%] | 1h |
| 105 | 1.4.1.6.1.5 | PI - Catalogo Tipos de Tarifa | 1d? | 2018-07-18 | 2018-07-19 | 94 | 8d | Omar Santiago/Fernando Nava/ITSC [12.5%] | 1h |
| 106 | 1.4.1.6.1.6 | PI - Catalogo Tarifa | 1d? | 2018-07-18 | 2018-07-19 | 94 | 8d | Omar Santiago/Fernando Nava/ITSC [12.5%] | 1h |
| 107 | 1.4.1.6.1.7 | PI - Catalogo Conceptos de Tarifa | 1d? | 2018-07-18 | 2018-07-19 | 94 | 8d | Omar Santiago/Fernando Nava/ITSC [12.5%] | 1h |
| 108 | 1.4.1.6.1.8 | PI - Catalogo Choferes | 1d? | 2018-07-18 | 2018-07-19 | 94 | 8d | Omar Santiago/Fernando Nava/ITSC [12.5%] | 1h |
| 109 | 1.4.1.6.1.9 | PI - Catalogo Camiones | 1d? | 2018-07-18 | 2018-07-19 | 94 | 8d | Omar Santiago/Fernando Nava/ITSC [12.5%] | 1h |
| 110 | 1.4.1.6.1.10 | PI - Catalogo Responsables de Incidencias | 1d? | 2018-07-18 | 2018-07-19 | 94 | 0d | Omar Santiago/Fernando Nava/ITSC [12.5%] | 1h |
| 111 | 1.4.1.6.1.11 | PI - Catalogo Tipos de Incidencias | 1d? | 2018-07-19 | 2018-07-20 | 110 | 7d | Omar Santiago/Fernando Nava/ITSC [12.5%] | 1h |
| 112 | 1.4.1.6.1.12 | PI - Catalogo Tipos de Viaje | 1d? | 2018-07-19 | 2018-07-20 | 110 | 7d | Omar Santiago/Fernando Nava/ITSC [12.5%] | 1h |
| 113 | 1.4.1.6.1.13 | PI - Catalogo Tipos de Carga/Descarga | 1d? | 2018-07-19 | 2018-07-20 | 110 | 7d | Omar Santiago/Fernando Nava/ITSC [12.5%] | 1h |
| 114 | 1.4.1.6.1.14 | PI - Catalogo Clientes de Entrega | 1d? | 2018-07-19 | 2018-07-20 | 110 | 7d | Omar Santiago/Fernando Nava/ITSC [12.5%] | 1h |
| 115 | 1.4.1.6.1.15 | PI - Catalogo Clientes Solicidates | 1d? | 2018-07-19 | 2018-07-20 | 110 | 0d | Omar Santiago/Fernando Nava/ITSC [12.5%] | 1h |

| ID | WBS | Task | Duration | Start | Finish | Predecessors | Total slack | Resources | Work |
| --- | --- | --- | --- | --- | --- | --- | --- | --- | --- |
| 116 | 1.4.1.6.2 | **PI - Modulo Seguridad** | 1d? | 2018-07-20 | 2018-07-23 |  | 0d |  | 3h |
| 117 | 1.4.1.6.2.1 | PI - Roles | 1d? | 2018-07-20 | 2018-07-23 | 115 | 6d | Omar Santiago/Fernando Nava/ITSC [12.5%] | 1h |
| 118 | 1.4.1.6.2.2 | PI - Configuracion | 1d? | 2018-07-20 | 2018-07-23 | 115 | 6d | Omar Santiago/Fernando Nava/ITSC [12.5%] | 1h |
| 119 | 1.4.1.6.2.3 | PI - Permisos | 1d? | 2018-07-20 | 2018-07-23 | 115 | 0d | Omar Santiago/Fernando Nava/ITSC [12.5%] | 1h |
| 120 | 1.4.1.6.3 | **PI - Modulo Solicitudes** | 2d? | 2018-07-23 | 2018-07-25 |  | 0d |  | 10h |
| 121 | 1.4.1.6.3.1 | PI - Cliente - Solicitud de Transporte | 1d? | 2018-07-23 | 2018-07-24 | 119 | 5d | Omar Santiago/Fernando Nava/ITSC [25%] | 2h |
| 122 | 1.4.1.6.3.2 | PI - Trafico - Valoracion del Viaje | 1d? | 2018-07-23 | 2018-07-24 | 119 | 5d | Omar Santiago/Fernando Nava/ITSC [25%] | 2h |
| 123 | 1.4.1.6.3.3 | PI - Distribucion - Asugnacion de Unidad y Carga | 1d? | 2018-07-23 | 2018-07-24 | 119 | 0d | Omar Santiago/Fernando Nava/ITSC [25%] | 2h |
| 124 | 1.4.1.6.3.4 | PI - Operador CL - Operación y Descarga | 1d? | 2018-07-24 | 2018-07-25 | 123 | 4d | Omar Santiago/Fernando Nava/ITSC [25%] | 2h |
| 125 | 1.4.1.6.3.5 | PI - Distribucion - Cierre del Viaje y Facturacion | 1d? | 2018-07-24 | 2018-07-25 | 123 | 0d | Omar Santiago/Fernando Nava/ITSC [25%] | 2h |
| 126 | 1.4.1.6.4 | **PI - Modulo Alarmas/Reportes/Indicadores de gestión** | 2d? | 2018-07-25 | 2018-07-27 |  | 0d |  | 6h |
| 127 | 1.4.1.6.4.1 | PI - Alarmas | 1d? | 2018-07-25 | 2018-07-26 | 125 | 3d | Omar Santiago/Fernando Nava/ITSC [25%] | 2h |
| 128 | 1.4.1.6.4.2 | PI - Reportes | 1d? | 2018-07-25 | 2018-07-26 | 125 | 0d | Omar Santiago/Fernando Nava/ITSC [25%] | 2h |
| 129 | 1.4.1.6.4.3 | PI - Indicadores de gestión | 1d? | 2018-07-26 | 2018-07-27 | 128 | 0d | Omar Santiago/Fernando Nava/ITSC [25%] | 2h |
| 130 | 1.4.2 | PI - Cierre Pruebas Integrales | 1d? | 2018-07-27 | 2018-07-30 | 129 | 0d | Omar Santiago/Fernando Nava/ITSC [25%] | 2h |
| 131 | 2 | **LB - Liberacion a Produccion** | 1d? | 2018-07-30 | 2018-07-31 |  | 0d |  | 8h |
| 132 | 2.1 | LB - Liberacion y Cierre | 1d? | 2018-07-30 | 2018-07-31 | 130 | 0d | Omar Santiago/Fernando Nava/ITSC | 8h |
| 133 | 3 | Monitoreo y Control | 1d? | 2018-05-24 | 2018-05-24 |  | 47.54d |  |  |
